# Araya 26 edificios

Schedule from MS Project, 2025-12-18 to 2027-06-07, A marks actual dates.

## Calendars

- Araya26: Mon-Fri 09:00-13:00, 15:00-19:00; Sat-Sun off. Exceptions (off unless hours are given): 2025-12-24 to 2025-12-25 (FERIADO), 2025-12-31 to 2026-01-02 (FERIADO), 2026-01-05 to 2026-01-06 (FERIADO), 2026-01-21 (FERIADO), 2026-01-26 (FERIADO), 2026-02-27 (FERIADO), 2026-04-02 to 2026-04-03 (FERIADO), 2026-05-04 (FERIADO), 2026-06-04 (FERIADO), 2026-09-24 (FERIADO), 2026-11-09 (FERIADO), 2026-12-24 to 2026-12-25 (FERIADO), 2026-12-31 to 2027-01-06 (FERIADO), 2027-01-21 (FERIADO), 2027-01-26 (FERIADO).

## Schedule

| ID | WBS | Task | Duration | Start | Finish | Predecessors | Complete | Remaining | Baseline start | Baseline finish | Baseline duration | Total slack | Constraint |
| --- | --- | --- | --- | --- | --- | --- | --- | --- | --- | --- | --- | --- | --- |
| 1 | 1 | **ARAYA-PTA CANA (CONSTRUCCION 26 EDIFICIOS)** | 358d | 2025-12-18 A | 2027-06-07 |  | 17% | 297.38d | 2026-01-12 | 2027-05-31 | 343d | 0d |  |
| 2 | 1.1 | **EDIFICACIONES** | 358d | 2025-12-18 A | 2027-06-07 |  | 17% | 297.38d | 2026-01-12 | 2027-05-31 | 343d | 0d |  |
| 3 | 1.1.1 | **INFRAESTRUCTURA** | 195d | 2025-12-18 A | 2026-10-07 |  | 55% | 88.01d | 2026-01-12 | 2026-08-10 | 144d | 163d |  |
| 4 | 1.1.1.1 | **EDIFCIO 3** | 14d | 2025-12-18 A | 2026-01-15 A |  | 100% |  | 2026-01-12 | 2026-02-02 | 14d |  |  |
| 5 | 1.1.1.1.1 | **PLATEA** | 14d | 2025-12-18 A | 2026-01-15 A |  | 100% |  | 2026-01-12 | 2026-02-02 | 14d |  |  |
| 6 | 1.1.1.1.1.1 | Replanteo y acondicionamiento de losa | 2d | 2025-12-18 A | 2025-12-19 A |  | 100% |  | 2026-01-12 | 2026-01-13 | 2d |  | start no earlier than 2025-12-18 |
| 7 | 1.1.1.1.1.2 | Excavación a mano para tubería | 5d | 2025-12-22 A | 2025-12-30 A | 6 | 100% |  | 2026-01-14 | 2026-01-20 | 5d |  |  |
| 8 | 1.1.1.1.1.3 | Fumigacion de losa de fundacion | 1d | 2026-01-07 A | 2026-01-07 A | 7 | 100% |  | 2026-01-22 | 2026-01-22 | 1d |  |  |
| 9 | 1.1.1.1.1.4 | Colocacion de concreto pobre | 1d | 2026-01-07 A | 2026-01-07 A | 8SS | 100% |  | 2026-01-22 | 2026-01-22 | 1d |  |  |
| 10 | 1.1.1.1.1.5 | Preparación y colocación de acero de refuerzo | 4d | 2026-01-08 A | 2026-01-13 A | 9 | 100% |  | 2026-01-23 | 2026-01-29 | 4d |  |  |
| 11 | 1.1.1.1.1.6 | Colocación de tubería de eléctricidad, A.B, A.N., A.LL.,GAS | 3d | 2026-01-09 A | 2026-01-13 A | 10SS+1d | 100% |  | 2026-01-27 | 2026-01-29 | 3d |  |  |
| 12 | 1.1.1.1.1.7 | Encofrado de losa | 1d | 2026-01-14 A | 2026-01-14 A | 11 | 100% |  | 2026-01-30 | 2026-01-30 | 1d |  |  |
| 13 | 1.1.1.1.1.8 | Vaciado de losa | 1d | 2026-01-15 A | 2026-01-15 A | 12 | 100% |  | 2026-02-02 | 2026-02-02 | 1d |  |  |
| 14 | 1.1.1.2 | **EDIFCIO 2** | 18d | 2026-01-07 A | 2026-02-03 A |  | 100% |  | 2026-01-22 | 2026-02-12 | 15d |  |  |
| 15 | 1.1.1.2.1 | **PLATEA** | 18d | 2026-01-07 A | 2026-02-03 A |  | 100% |  | 2026-01-22 | 2026-02-12 | 15d |  |  |
| 16 | 1.1.1.2.1.1 | Replanteo y acondicionamiento de losa | 3d | 2026-01-07 A | 2026-01-09 A | 7 | 100% |  | 2026-01-22 | 2026-01-27 | 3d |  |  |
| 17 | 1.1.1.2.1.2 | Excavación a mano para tubería | 6d | 2026-01-12 A | 2026-01-19 A | 16 | 100% |  | 2026-01-28 | 2026-02-04 | 6d |  |  |
| 18 | 1.1.1.2.1.3 | Fumigacion de losa de fundacion | 1d | 2026-01-20 A | 2026-01-20 A | 17 | 100% |  | 2026-02-05 | 2026-02-05 | 1d |  |  |
| 19 | 1.1.1.2.1.4 | Colocacion de concreto pobre | 1d | 2026-01-20 A | 2026-01-20 A | 18SS | 100% |  | 2026-02-05 | 2026-02-05 | 1d |  |  |
| 20 | 1.1.1.2.1.5 | Preparación y colocación de acero de refuerzo | 3d | 2026-01-22 A | 2026-01-27 A | 19 | 100% |  | 2026-02-06 | 2026-02-10 | 3d |  |  |
| 21 | 1.1.1.2.1.6 | Colocación de tubería de eléctricidad, A.B, A.N., A.LL.,GAS | 1d | 2026-01-27 A | 2026-01-27 A | 20SS+2d | 100% |  | 2026-02-10 | 2026-02-10 | 1d |  |  |
| 22 | 1.1.1.2.1.7 | Encofrado de losa | 1d | 2026-01-28 A | 2026-01-28 A | 21 | 100% |  | 2026-02-11 | 2026-02-11 | 1d |  |  |
| 23 | 1.1.1.2.1.8 | Vaciado de losa | 4d | 2026-01-29 A | 2026-02-03 A | 22 | 100% |  | 2026-02-12 | 2026-02-12 | 1d |  |  |
| 24 | 1.1.1.3 | **EDIFCIO 4** | 21d | 2026-01-20 A | 2026-02-19 A |  | 100% |  | 2026-02-05 | 2026-02-25 | 15d |  |  |
| 25 | 1.1.1.3.1 | **PLATEA** | 21d | 2026-01-20 A | 2026-02-19 A |  | 100% |  | 2026-02-05 | 2026-02-25 | 15d |  |  |
| 26 | 1.1.1.3.1.1 | Replanteo y acondicionamiento de losa | 3d | 2026-01-20 A | 2026-01-23 A | 17 | 100% |  | 2026-02-05 | 2026-02-09 | 3d |  |  |
| 27 | 1.1.1.3.1.2 | Excavación a mano para tubería | 6d | 2026-01-27 A | 2026-02-03 A | 26 | 100% |  | 2026-02-10 | 2026-02-17 | 6d |  |  |
| 28 | 1.1.1.3.1.3 | Fumigacion de losa de fundacion | 1d | 2026-02-04 A | 2026-02-04 A | 27 | 100% |  | 2026-02-18 | 2026-02-18 | 1d |  |  |
| 29 | 1.1.1.3.1.4 | Colocacion de concreto pobre | 1d | 2026-02-04 A | 2026-02-04 A | 28SS | 100% |  | 2026-02-18 | 2026-02-18 | 1d |  |  |
| 30 | 1.1.1.3.1.5 | Preparación y colocación de acero de refuerzo | 3d | 2026-02-05 A | 2026-02-09 A | 29 | 100% |  | 2026-02-19 | 2026-02-23 | 3d |  |  |
| 31 | 1.1.1.3.1.6 | Colocación de tubería de eléctricidad, A.B, A.N., A.LL.,GAS | 1d | 2026-02-09 A | 2026-02-09 A | 30SS+2d | 100% |  | 2026-02-23 | 2026-02-23 | 1d |  |  |
| 32 | 1.1.1.3.1.7 | Encofrado de losa | 1d | 2026-02-10 A | 2026-02-10 A | 31 | 100% |  | 2026-02-24 | 2026-02-24 | 1d |  |  |
| 33 | 1.1.1.3.1.8 | Vaciado de losa | 7d | 2026-02-11 A | 2026-02-19 A | 32 | 100% |  | 2026-02-25 | 2026-02-25 | 1d |  |  |

| ID | WBS | Task | Duration | Start | Finish | Predecessors | Complete | Baseline start | Baseline finish | Baseline duration | Constraint |
| --- | --- | --- | --- | --- | --- | --- | --- | --- | --- | --- | --- |
| 34 | 1.1.1.4 | **EDIFCIO 6** | 15d | 2026-02-11 A | 2026-03-04 A |  | 100% | 2026-02-10 | 2026-03-03 | 15d |  |
| 35 | 1.1.1.4.1 | **PLATEA** | 15d | 2026-02-11 A | 2026-03-04 A |  | 100% | 2026-02-10 | 2026-03-03 | 15d |  |
| 36 | 1.1.1.4.1.1 | Replanteo y acondicionamiento de losa | 3d | 2026-02-11 A | 2026-02-13 A | 26 | 100% | 2026-02-10 | 2026-02-12 | 3d | start no earlier than 2026-02-11 |
| 37 | 1.1.1.4.1.2 | Excavación a mano para tubería | 6d | 2026-02-16 A | 2026-02-23 A | 36 | 100% | 2026-02-13 | 2026-02-20 | 6d |  |
| 38 | 1.1.1.4.1.3 | Fumigacion de losa de fundacion | 1d | 2026-02-24 A | 2026-02-24 A | 37 | 100% | 2026-02-23 | 2026-02-23 | 1d |  |
| 39 | 1.1.1.4.1.4 | Colocacion de concreto pobre | 1d | 2026-02-24 A | 2026-02-24 A | 38SS | 100% | 2026-02-23 | 2026-02-23 | 1d |  |
| 40 | 1.1.1.4.1.5 | Preparación y colocación de acero de refuerzo | 3d | 2026-02-25 A | 2026-03-02 A | 39 | 100% | 2026-02-24 | 2026-02-26 | 3d |  |
| 41 | 1.1.1.4.1.6 | Colocación de tubería de eléctricidad, A.B, A.N., A.LL.,GAS | 1d | 2026-03-02 A | 2026-03-02 A | 40SS+2d | 100% | 2026-02-26 | 2026-02-26 | 1d |  |
| 42 | 1.1.1.4.1.7 | Encofrado de losa | 1d | 2026-03-03 A | 2026-03-03 A | 41 | 100% | 2026-03-02 | 2026-03-02 | 1d |  |
| 43 | 1.1.1.4.1.8 | Vaciado de losa | 1d | 2026-03-04 A | 2026-03-04 A | 42 | 100% | 2026-03-03 | 2026-03-03 | 1d |  |
| 44 | 1.1.1.5 | **EDIFCIO 1** | 15d | 2026-02-25 A | 2026-03-18 A |  | 100% | 2026-02-17 | 2026-03-10 | 15d |  |
| 45 | 1.1.1.5.1 | **PLATEA** | 15d | 2026-02-25 A | 2026-03-18 A |  | 100% | 2026-02-17 | 2026-03-10 | 15d |  |
| 46 | 1.1.1.5.1.1 | Replanteo y acondicionamiento de losa | 3d | 2026-02-25 A | 2026-03-02 A | 36FS+2d | 100% | 2026-02-17 | 2026-02-19 | 3d | start no earlier than 2026-02-25 |
| 47 | 1.1.1.5.1.2 | Excavación a mano para tubería | 6d | 2026-03-03 A | 2026-03-10 A | 46 | 100% | 2026-02-20 | 2026-03-02 | 6d |  |
| 48 | 1.1.1.5.1.3 | Fumigacion de losa de fundacion | 1d | 2026-03-11 A | 2026-03-11 A | 47 | 100% | 2026-03-03 | 2026-03-03 | 1d |  |
| 49 | 1.1.1.5.1.4 | Colocacion de concreto pobre | 1d | 2026-03-11 A | 2026-03-11 A | 48SS | 100% | 2026-03-03 | 2026-03-03 | 1d |  |
| 50 | 1.1.1.5.1.5 | Preparación y colocación de acero de refuerzo | 3d | 2026-03-12 A | 2026-03-16 A | 49 | 100% | 2026-03-04 | 2026-03-06 | 3d |  |
| 51 | 1.1.1.5.1.6 | Colocación de tubería de eléctricidad, A.B, A.N., A.LL.,GAS | 1d | 2026-03-16 A | 2026-03-16 A | 50SS+2d | 100% | 2026-03-06 | 2026-03-06 | 1d |  |
| 52 | 1.1.1.5.1.7 | Encofrado de losa | 1d | 2026-03-17 A | 2026-03-17 A | 51 | 100% | 2026-03-09 | 2026-03-09 | 1d |  |
| 53 | 1.1.1.5.1.8 | Vaciado de losa | 1d | 2026-03-18 A | 2026-03-18 A | 52 | 100% | 2026-03-10 | 2026-03-10 | 1d |  |
| 54 | 1.1.1.6 | **EDIFCIO 5** | 15d | 2026-03-05 A | 2026-03-25 A |  | 100% | 2026-02-24 | 2026-03-17 | 15d |  |
| 55 | 1.1.1.6.1 | **PLATEA** | 15d | 2026-03-05 A | 2026-03-25 A |  | 100% | 2026-02-24 | 2026-03-17 | 15d |  |
| 56 | 1.1.1.6.1.1 | Replanteo y acondicionamiento de losa | 3d | 2026-03-05 A | 2026-03-09 A | 46FS+2d | 100% | 2026-02-24 | 2026-02-26 | 3d | start no earlier than 2026-03-05 |
| 57 | 1.1.1.6.1.2 | Excavación a mano para tubería | 6d | 2026-03-10 A | 2026-03-17 A | 56 | 100% | 2026-03-02 | 2026-03-09 | 6d |  |
| 58 | 1.1.1.6.1.3 | Fumigacion de losa de fundacion | 1d | 2026-03-18 A | 2026-03-18 A | 57 | 100% | 2026-03-10 | 2026-03-10 | 1d |  |
| 59 | 1.1.1.6.1.4 | Colocacion de concreto pobre | 1d | 2026-03-18 A | 2026-03-18 A | 58SS | 100% | 2026-03-10 | 2026-03-10 | 1d |  |
| 60 | 1.1.1.6.1.5 | Preparación y colocación de acero de refuerzo | 3d | 2026-03-19 A | 2026-03-23 A | 59 | 100% | 2026-03-11 | 2026-03-13 | 3d |  |
| 61 | 1.1.1.6.1.6 | Colocación de tubería de eléctricidad, A.B, A.N., A.LL.,GAS | 1d | 2026-03-23 A | 2026-03-23 A | 60SS+2d | 100% | 2026-03-13 | 2026-03-13 | 1d |  |
| 62 | 1.1.1.6.1.7 | Encofrado de losa | 1d | 2026-03-24 A | 2026-03-24 A | 61 | 100% | 2026-03-16 | 2026-03-16 | 1d |  |
| 63 | 1.1.1.6.1.8 | Vaciado de losa | 1d | 2026-03-25 A | 2026-03-25 A | 62 | 100% | 2026-03-17 | 2026-03-17 | 1d |  |

| ID | WBS | Task | Duration | Start | Finish | Predecessors | Complete | Baseline start | Baseline finish | Baseline duration | Constraint |
| --- | --- | --- | --- | --- | --- | --- | --- | --- | --- | --- | --- |
| 64 | 1.1.1.7 | **EDIFCIO 9** | 15d | 2026-03-12 A | 2026-04-01 A |  | 100% | 2026-03-04 | 2026-03-24 | 15d |  |
| 65 | 1.1.1.7.1 | **PLATEA** | 15d | 2026-03-12 A | 2026-04-01 A |  | 100% | 2026-03-04 | 2026-03-24 | 15d |  |
| 66 | 1.1.1.7.1.1 | Replanteo y acondicionamiento de losa | 3d | 2026-03-12 A | 2026-03-16 A | 56FS+2d | 100% | 2026-03-04 | 2026-03-06 | 3d |  |
| 67 | 1.1.1.7.1.2 | Excavación a mano para tubería | 6d | 2026-03-17 A | 2026-03-24 A | 66 | 100% | 2026-03-09 | 2026-03-16 | 6d |  |
| 68 | 1.1.1.7.1.3 | Fumigacion de losa de fundacion | 1d | 2026-03-25 A | 2026-03-25 A | 67 | 100% | 2026-03-17 | 2026-03-17 | 1d |  |
| 69 | 1.1.1.7.1.4 | Colocacion de concreto pobre | 1d | 2026-03-25 A | 2026-03-25 A | 68SS | 100% | 2026-03-17 | 2026-03-17 | 1d |  |
| 70 | 1.1.1.7.1.5 | Preparación y colocación de acero de refuerzo | 3d | 2026-03-26 A | 2026-03-30 A | 69 | 100% | 2026-03-18 | 2026-03-20 | 3d |  |
| 71 | 1.1.1.7.1.6 | Colocación de tubería de eléctricidad, A.B, A.N., A.LL.,GAS | 1d | 2026-03-30 A | 2026-03-30 A | 70SS+2d | 100% | 2026-03-20 | 2026-03-20 | 1d |  |
| 72 | 1.1.1.7.1.7 | Encofrado de losa | 1d | 2026-03-31 A | 2026-03-31 A | 71 | 100% | 2026-03-23 | 2026-03-23 | 1d |  |
| 73 | 1.1.1.7.1.8 | Vaciado de losa | 1d | 2026-04-01 A | 2026-04-01 A | 72 | 100% | 2026-03-24 | 2026-03-24 | 1d |  |
| 74 | 1.1.1.8 | **EDIFCIO 8** | 14d | 2026-03-19 A | 2026-04-09 A |  | 100% | 2026-03-11 | 2026-03-31 | 15d |  |
| 75 | 1.1.1.8.1 | **PLATEA** | 14d | 2026-03-19 A | 2026-04-09 A |  | 100% | 2026-03-11 | 2026-03-31 | 15d |  |
| 76 | 1.1.1.8.1.1 | Replanteo y acondicionamiento de losa | 3d | 2026-03-19 A | 2026-03-23 A | 66FS+2d | 100% | 2026-03-11 | 2026-03-13 | 3d |  |
| 77 | 1.1.1.8.1.2 | Excavación a mano para tubería | 6d | 2026-03-24 A | 2026-03-31 A | 76 | 100% | 2026-03-16 | 2026-03-23 | 6d |  |
| 78 | 1.1.1.8.1.3 | Fumigacion de losa de fundacion | 1d | 2026-03-31 A | 2026-03-31 A |  | 100% | 2026-03-24 | 2026-03-24 | 1d | start no earlier than 2026-03-31 |
| 79 | 1.1.1.8.1.4 | Colocacion de concreto pobre | 1d | 2026-03-31 A | 2026-03-31 A | 78SS | 100% | 2026-03-24 | 2026-03-24 | 1d |  |
| 80 | 1.1.1.8.1.5 | Preparación y colocación de acero de refuerzo | 3d | 2026-04-01 A | 2026-04-07 A | 79 | 100% | 2026-03-25 | 2026-03-27 | 3d |  |
| 81 | 1.1.1.8.1.6 | Colocación de tubería de eléctricidad, A.B, A.N., A.LL.,GAS | 1d | 2026-04-07 A | 2026-04-07 A | 80SS+2d | 100% | 2026-03-27 | 2026-03-27 | 1d |  |
| 82 | 1.1.1.8.1.7 | Encofrado de losa | 1d | 2026-04-08 A | 2026-04-08 A | 81 | 100% | 2026-03-30 | 2026-03-30 | 1d |  |
| 83 | 1.1.1.8.1.8 | Vaciado de losa | 1d | 2026-04-09 A | 2026-04-09 A | 82 | 100% | 2026-03-31 | 2026-03-31 | 1d |  |
| 84 | 1.1.1.9 | **EDIFCIO 7** | 15d | 2026-03-26 A | 2026-04-17 A |  | 100% | 2026-03-18 | 2026-04-09 | 15d |  |
| 85 | 1.1.1.9.1 | **PLATEA** | 15d | 2026-03-26 A | 2026-04-17 A |  | 100% | 2026-03-18 | 2026-04-09 | 15d |  |
| 86 | 1.1.1.9.1.1 | Replanteo y acondicionamiento de losa | 3d | 2026-03-26 A | 2026-03-30 A | 76FS+2d | 100% | 2026-03-18 | 2026-03-20 | 3d |  |
| 87 | 1.1.1.9.1.2 | Excavación a mano para tubería | 6d | 2026-03-31 A | 2026-04-09 A | 86 | 100% | 2026-03-23 | 2026-03-30 | 6d |  |
| 88 | 1.1.1.9.1.3 | Fumigacion de losa de fundacion | 1d | 2026-04-10 A | 2026-04-10 A | 87 | 100% | 2026-03-31 | 2026-03-31 | 1d |  |
| 89 | 1.1.1.9.1.4 | Colocacion de concreto pobre | 1d | 2026-04-10 A | 2026-04-10 A | 88SS | 100% | 2026-03-31 | 2026-03-31 | 1d |  |
| 90 | 1.1.1.9.1.5 | Preparación y colocación de acero de refuerzo | 3d | 2026-04-13 A | 2026-04-15 A | 89 | 100% | 2026-04-01 | 2026-04-07 | 3d |  |
| 91 | 1.1.1.9.1.6 | Colocación de tubería de eléctricidad, A.B, A.N., A.LL.,GAS | 1d | 2026-04-15 A | 2026-04-15 A | 90SS+2d | 100% | 2026-04-07 | 2026-04-07 | 1d |  |
| 92 | 1.1.1.9.1.7 | Encofrado de losa | 1d | 2026-04-16 A | 2026-04-16 A | 91 | 100% | 2026-04-08 | 2026-04-08 | 1d |  |
| 93 | 1.1.1.9.1.8 | Vaciado de losa | 1d | 2026-04-17 A | 2026-04-17 A | 92 | 100% | 2026-04-09 | 2026-04-09 | 1d |  |

| ID | WBS | Task | Duration | Start | Finish | Predecessors | Complete | Baseline start | Baseline finish | Baseline duration | Constraint |
| --- | --- | --- | --- | --- | --- | --- | --- | --- | --- | --- | --- |
| 94 | 1.1.1.10 | **EDIFCIO 12** | 24d | 2026-04-06 A | 2026-05-08 A |  | 100% | 2026-03-25 | 2026-04-16 | 15d |  |
| 95 | 1.1.1.10.1 | **PLATEA** | 24d | 2026-04-06 A | 2026-05-08 A |  | 100% | 2026-03-25 | 2026-04-16 | 15d |  |
| 96 | 1.1.1.10.1.1 | Replanteo y acondicionamiento de losa | 3d | 2026-04-06 A | 2026-04-08 A | 86FS+2d | 100% | 2026-03-25 | 2026-03-27 | 3d |  |
| 97 | 1.1.1.10.1.2 | Excavación a mano para tubería | 6d | 2026-04-09 A | 2026-04-16 A | 96 | 100% | 2026-03-30 | 2026-04-08 | 6d |  |
| 98 | 1.1.1.10.1.3 | Fumigacion de losa de fundacion | 1d | 2026-04-30 A | 2026-04-30 A | 97 | 100% | 2026-04-09 | 2026-04-09 | 1d | start no earlier than 2026-04-30 |
| 99 | 1.1.1.10.1.4 | Colocacion de concreto pobre | 1d | 2026-04-30 A | 2026-04-30 A | 98SS | 100% | 2026-04-09 | 2026-04-09 | 1d |  |
| 100 | 1.1.1.10.1.5 | Preparación y colocación de acero de refuerzo | 3d | 2026-05-01 A | 2026-05-06 A | 99 | 100% | 2026-04-10 | 2026-04-14 | 3d |  |
| 101 | 1.1.1.10.1.6 | Colocación de tubería de eléctricidad, A.B, A.N., A.LL.,GAS | 1d | 2026-05-06 A | 2026-05-06 A | 100SS+2d | 100% | 2026-04-14 | 2026-04-14 | 1d |  |
| 102 | 1.1.1.10.1.7 | Encofrado de losa | 1d | 2026-05-07 A | 2026-05-07 A | 101 | 100% | 2026-04-15 | 2026-04-15 | 1d |  |
| 103 | 1.1.1.10.1.8 | Vaciado de losa | 1d | 2026-05-08 A | 2026-05-08 A | 102 | 100% | 2026-04-16 | 2026-04-16 | 1d |  |
| 104 | 1.1.1.11 | **EDIFCIO 11** | 15d | 2026-04-27 A | 2026-05-18 A |  | 100% | 2026-04-01 | 2026-04-23 | 15d |  |
| 105 | 1.1.1.11.1 | **PLATEA** | 15d | 2026-04-27 A | 2026-05-18 A |  | 100% | 2026-04-01 | 2026-04-23 | 15d |  |
| 106 | 1.1.1.11.1.1 | Replanteo y acondicionamiento de losa | 3d | 2026-04-27 A | 2026-04-29 A | 96FS+2d | 100% | 2026-04-01 | 2026-04-07 | 3d | start no earlier than 2026-04-27 |
| 107 | 1.1.1.11.1.2 | Excavación a mano para tubería | 6d | 2026-04-30 A | 2026-05-08 A | 106 | 100% | 2026-04-08 | 2026-04-15 | 6d |  |
| 108 | 1.1.1.11.1.3 | Fumigacion de losa de fundacion | 1d | 2026-05-11 A | 2026-05-11 A | 107 | 100% | 2026-04-16 | 2026-04-16 | 1d | start no earlier than 2026-04-30 |
| 109 | 1.1.1.11.1.4 | Colocacion de concreto pobre | 1d | 2026-05-11 A | 2026-05-11 A | 108SS | 100% | 2026-04-16 | 2026-04-16 | 1d |  |
| 110 | 1.1.1.11.1.5 | Preparación y colocación de acero de refuerzo | 3d | 2026-05-12 A | 2026-05-14 A | 109 | 100% | 2026-04-17 | 2026-04-21 | 3d |  |
| 111 | 1.1.1.11.1.6 | Colocación de tubería de eléctricidad, A.B, A.N., A.LL.,GAS | 1d | 2026-05-14 A | 2026-05-14 A | 110SS+2d | 100% | 2026-04-21 | 2026-04-21 | 1d |  |
| 112 | 1.1.1.11.1.7 | Encofrado de losa | 1d | 2026-05-15 A | 2026-05-15 A | 111 | 100% | 2026-04-22 | 2026-04-22 | 1d |  |
| 113 | 1.1.1.11.1.8 | Vaciado de losa | 1d | 2026-05-18 A | 2026-05-18 A | 112 | 100% | 2026-04-23 | 2026-04-23 | 1d |  |
| 114 | 1.1.1.12 | **EDIFCIO 10** | 19d | 2026-05-05 A | 2026-05-29 A |  | 100% | 2026-04-10 | 2026-04-30 | 15d |  |
| 115 | 1.1.1.12.1 | **PLATEA** | 19d | 2026-05-05 A | 2026-05-29 A |  | 100% | 2026-04-10 | 2026-04-30 | 15d |  |
| 116 | 1.1.1.12.1.1 | Replanteo y acondicionamiento de losa | 3d | 2026-05-05 A | 2026-05-07 A | 106FS+2d | 100% | 2026-04-10 | 2026-04-14 | 3d |  |
| 117 | 1.1.1.12.1.2 | Excavación a mano para tubería | 6d | 2026-05-08 A | 2026-05-15 A | 116 | 100% | 2026-04-15 | 2026-04-22 | 6d |  |
| 118 | 1.1.1.12.1.3 | Fumigacion de losa de fundacion | 1d | 2026-05-18 A | 2026-05-18 A | 117 | 100% | 2026-04-23 | 2026-04-23 | 1d |  |
| 119 | 1.1.1.12.1.4 | Colocacion de concreto pobre | 1d | 2026-05-18 A | 2026-05-18 A | 118SS | 100% | 2026-04-23 | 2026-04-23 | 1d |  |
| 120 | 1.1.1.12.1.5 | Preparación y colocación de acero de refuerzo | 3d | 2026-05-19 A | 2026-05-21 A | 119 | 100% | 2026-04-24 | 2026-04-28 | 3d |  |
| 121 | 1.1.1.12.1.6 | Colocación de tubería de eléctricidad, A.B, A.N., A.LL.,GAS | 1d | 2026-05-21 A | 2026-05-21 A | 120SS+2d | 100% | 2026-04-28 | 2026-04-28 | 1d |  |
| 122 | 1.1.1.12.1.7 | Encofrado de losa | 1d | 2026-05-22 A | 2026-05-22 A | 121 | 100% | 2026-04-29 | 2026-04-29 | 1d |  |
| 123 | 1.1.1.12.1.8 | Vaciado de losa | 1d | 2026-05-29 A | 2026-05-29 A | 122 | 100% | 2026-04-30 | 2026-04-30 | 1d | start no earlier than 2026-05-29 |

| ID | WBS | Task | Duration | Start | Finish | Predecessors | Complete | Baseline start | Baseline finish | Baseline duration | Total slack | Free slack | Constraint |
| --- | --- | --- | --- | --- | --- | --- | --- | --- | --- | --- | --- | --- | --- |
| 124 | 1.1.1.13 | **EDIFCIO 15** | 15d | 2026-05-18 A | 2026-06-08 A |  | 100% | 2026-04-17 | 2026-05-08 | 15d |  |  |  |
| 125 | 1.1.1.13.1 | **PLATEA** | 15d | 2026-05-18 A | 2026-06-08 A |  | 100% | 2026-04-17 | 2026-05-08 | 15d |  |  |  |
| 126 | 1.1.1.13.1.1 | Replanteo y acondicionamiento de losa | 3d | 2026-05-18 A | 2026-05-20 A | 116FS+2d | 100% | 2026-04-17 | 2026-04-21 | 3d |  |  | start no earlier than 2026-05-18 |
| 127 | 1.1.1.13.1.2 | Excavación a mano para tubería | 6d | 2026-05-21 A | 2026-05-28 A | 126 | 100% | 2026-04-22 | 2026-04-29 | 6d |  |  |  |
| 128 | 1.1.1.13.1.3 | Fumigacion de losa de fundacion | 1d | 2026-05-29 A | 2026-05-29 A | 127 | 100% | 2026-04-30 | 2026-04-30 | 1d |  |  |  |
| 129 | 1.1.1.13.1.4 | Colocacion de concreto pobre | 1d | 2026-05-29 A | 2026-05-29 A | 128SS | 100% | 2026-04-30 | 2026-04-30 | 1d |  |  |  |
| 130 | 1.1.1.13.1.5 | Preparación y colocación de acero de refuerzo | 3d | 2026-06-01 A | 2026-06-03 A | 129 | 100% | 2026-05-01 | 2026-05-06 | 3d |  |  |  |
| 131 | 1.1.1.13.1.6 | Colocación de tubería de eléctricidad, A.B, A.N., A.LL.,GAS | 1d | 2026-06-03 A | 2026-06-03 A | 130SS+2d | 100% | 2026-05-06 | 2026-05-06 | 1d |  |  |  |
| 132 | 1.1.1.13.1.7 | Encofrado de losa | 1d | 2026-06-05 A | 2026-06-05 A | 131 | 100% | 2026-05-07 | 2026-05-07 | 1d |  |  |  |
| 133 | 1.1.1.13.1.8 | Vaciado de losa | 1d | 2026-06-08 A | 2026-06-08 A | 132 | 100% | 2026-05-08 | 2026-05-08 | 1d |  |  |  |
| 134 | 1.1.1.14 | **EDIFCIO 14** | 15d | 2026-05-25 A | 2026-06-15 A |  | 100% | 2026-04-24 | 2026-05-15 | 15d |  |  |  |
| 135 | 1.1.1.14.1 | **PLATEA** | 15d | 2026-05-25 A | 2026-06-15 A |  | 100% | 2026-04-24 | 2026-05-15 | 15d |  |  |  |
| 136 | 1.1.1.14.1.1 | Replanteo y acondicionamiento de losa | 3d | 2026-05-25 A | 2026-05-27 A | 126FS+2d | 100% | 2026-04-24 | 2026-04-28 | 3d |  |  |  |
| 137 | 1.1.1.14.1.2 | Excavación a mano para tubería | 6d | 2026-05-28 A | 2026-06-05 A | 136 | 100% | 2026-04-29 | 2026-05-07 | 6d |  |  |  |
| 138 | 1.1.1.14.1.3 | Fumigacion de losa de fundacion | 1d | 2026-06-08 A | 2026-06-08 A | 137 | 100% | 2026-05-08 | 2026-05-08 | 1d |  |  |  |
| 139 | 1.1.1.14.1.4 | Colocacion de concreto pobre | 1d | 2026-06-08 A | 2026-06-08 A | 138SS | 100% | 2026-05-08 | 2026-05-08 | 1d |  |  |  |
| 140 | 1.1.1.14.1.5 | Preparación y colocación de acero de refuerzo | 3d | 2026-06-09 A | 2026-06-11 A | 139 | 100% | 2026-05-11 | 2026-05-13 | 3d |  |  |  |
| 141 | 1.1.1.14.1.6 | Colocación de tubería de eléctricidad, A.B, A.N., A.LL.,GAS | 1d | 2026-06-11 A | 2026-06-11 A | 140SS+2d | 100% | 2026-05-13 | 2026-05-13 | 1d |  |  |  |
| 142 | 1.1.1.14.1.7 | Encofrado de losa | 1d | 2026-06-12 A | 2026-06-12 A | 141 | 100% | 2026-05-14 | 2026-05-14 | 1d |  |  |  |
| 143 | 1.1.1.14.1.8 | Vaciado de losa | 1d | 2026-06-15 A | 2026-06-15 A | 142 | 100% | 2026-05-15 | 2026-05-15 | 1d |  |  |  |
| 144 | 1.1.1.15 | **EDIFCIO 13** | 15d | 2026-07-01 | 2026-07-21 |  |  | 2026-05-01 | 2026-05-22 | 15d | 163d |  |  |
| 145 | 1.1.1.15.1 | **PLATEA** | 15d | 2026-07-01 | 2026-07-21 |  |  | 2026-05-01 | 2026-05-22 | 15d | 163d |  |  |
| 146 | 1.1.1.15.1.1 | Replanteo y acondicionamiento de losa | 3d | 2026-07-01 | 2026-07-03 | 136FS+2d |  | 2026-05-01 | 2026-05-06 | 3d | 163d | 0d | start no earlier than 2026-07-01 |
| 147 | 1.1.1.15.1.2 | Excavación a mano para tubería | 6d | 2026-07-06 | 2026-07-13 | 146 |  | 2026-05-07 | 2026-05-14 | 6d | 218d | 0d |  |
| 148 | 1.1.1.15.1.3 | Fumigacion de losa de fundacion | 1d | 2026-07-14 | 2026-07-14 | 147 |  | 2026-05-15 | 2026-05-15 | 1d | 218d | 0d |  |
| 149 | 1.1.1.15.1.4 | Colocacion de concreto pobre | 1d | 2026-07-14 | 2026-07-14 | 148SS |  | 2026-05-15 | 2026-05-15 | 1d | 218d | 0d |  |
| 150 | 1.1.1.15.1.5 | Preparación y colocación de acero de refuerzo | 3d | 2026-07-15 | 2026-07-17 | 149 |  | 2026-05-18 | 2026-05-20 | 3d | 218d | 0d |  |
| 151 | 1.1.1.15.1.6 | Colocación de tubería de eléctricidad, A.B, A.N., A.LL.,GAS | 1d | 2026-07-17 | 2026-07-17 | 150SS+2d |  | 2026-05-20 | 2026-05-20 | 1d | 218d | 0d |  |
| 152 | 1.1.1.15.1.7 | Encofrado de losa | 1d | 2026-07-20 | 2026-07-20 | 151 |  | 2026-05-21 | 2026-05-21 | 1d | 218d | 0d |  |
| 153 | 1.1.1.15.1.8 | Vaciado de losa | 1d | 2026-07-21 | 2026-07-21 | 152 |  | 2026-05-22 | 2026-05-22 | 1d | 218d |  |  |

| ID | WBS | Task | Duration | Start | Finish | Predecessors | Baseline start | Baseline finish | Baseline duration | Total slack | Free slack |
| --- | --- | --- | --- | --- | --- | --- | --- | --- | --- | --- | --- |
| 154 | 1.1.1.16 | **EDIFCIO 18** | 15d | 2026-07-08 | 2026-07-28 |  | 2026-05-11 | 2026-05-29 | 15d | 163d |  |
| 155 | 1.1.1.16.1 | **PLATEA** | 15d | 2026-07-08 | 2026-07-28 |  | 2026-05-11 | 2026-05-29 | 15d | 163d |  |
| 156 | 1.1.1.16.1.1 | Replanteo y acondicionamiento de losa | 3d | 2026-07-08 | 2026-07-10 | 146FS+2d | 2026-05-11 | 2026-05-13 | 3d | 163d | 0d |
| 157 | 1.1.1.16.1.2 | Excavación a mano para tubería | 6d | 2026-07-13 | 2026-07-20 | 156 | 2026-05-14 | 2026-05-21 | 6d | 213d | 0d |
| 158 | 1.1.1.16.1.3 | Fumigacion de losa de fundacion | 1d | 2026-07-21 | 2026-07-21 | 157 | 2026-05-22 | 2026-05-22 | 1d | 213d | 0d |
| 159 | 1.1.1.16.1.4 | Colocacion de concreto pobre | 1d | 2026-07-21 | 2026-07-21 | 158SS | 2026-05-22 | 2026-05-22 | 1d | 213d | 0d |
| 160 | 1.1.1.16.1.5 | Preparación y colocación de acero de refuerzo | 3d | 2026-07-22 | 2026-07-24 | 159 | 2026-05-25 | 2026-05-27 | 3d | 213d | 0d |
| 161 | 1.1.1.16.1.6 | Colocación de tubería de eléctricidad, A.B, A.N., A.LL.,GAS | 1d | 2026-07-24 | 2026-07-24 | 160SS+2d | 2026-05-27 | 2026-05-27 | 1d | 213d | 0d |
| 162 | 1.1.1.16.1.7 | Encofrado de losa | 1d | 2026-07-27 | 2026-07-27 | 161 | 2026-05-28 | 2026-05-28 | 1d | 213d | 0d |
| 163 | 1.1.1.16.1.8 | Vaciado de losa | 1d | 2026-07-28 | 2026-07-28 | 162 | 2026-05-29 | 2026-05-29 | 1d | 213d |  |
| 164 | 1.1.1.17 | **EDIFCIO 17** | 15d | 2026-07-15 | 2026-08-04 |  | 2026-05-18 | 2026-06-08 | 15d | 163d |  |
| 165 | 1.1.1.17.1 | **PLATEA** | 15d | 2026-07-15 | 2026-08-04 |  | 2026-05-18 | 2026-06-08 | 15d | 163d |  |
| 166 | 1.1.1.17.1.1 | Replanteo y acondicionamiento de losa | 3d | 2026-07-15 | 2026-07-17 | 156FS+2d | 2026-05-18 | 2026-05-20 | 3d | 163d | 0d |
| 167 | 1.1.1.17.1.2 | Excavación a mano para tubería | 6d | 2026-07-20 | 2026-07-27 | 166 | 2026-05-21 | 2026-05-28 | 6d | 208d | 0d |
| 168 | 1.1.1.17.1.3 | Fumigacion de losa de fundacion | 1d | 2026-07-28 | 2026-07-28 | 167 | 2026-05-29 | 2026-05-29 | 1d | 208d | 0d |
| 169 | 1.1.1.17.1.4 | Colocacion de concreto pobre | 1d | 2026-07-28 | 2026-07-28 | 168SS | 2026-05-29 | 2026-05-29 | 1d | 208d | 0d |
| 170 | 1.1.1.17.1.5 | Preparación y colocación de acero de refuerzo | 3d | 2026-07-29 | 2026-07-31 | 169 | 2026-06-01 | 2026-06-03 | 3d | 208d | 0d |
| 171 | 1.1.1.17.1.6 | Colocación de tubería de eléctricidad, A.B, A.N., A.LL.,GAS | 1d | 2026-07-31 | 2026-07-31 | 170SS+2d | 2026-06-03 | 2026-06-03 | 1d | 208d | 0d |
| 172 | 1.1.1.17.1.7 | Encofrado de losa | 1d | 2026-08-03 | 2026-08-03 | 171 | 2026-06-05 | 2026-06-05 | 1d | 208d | 0d |
| 173 | 1.1.1.17.1.8 | Vaciado de losa | 1d | 2026-08-04 | 2026-08-04 | 172 | 2026-06-08 | 2026-06-08 | 1d | 208d |  |
| 174 | 1.1.1.18 | **EDIFCIO 16** | 15d | 2026-07-22 | 2026-08-11 |  | 2026-05-25 | 2026-06-15 | 15d | 163d |  |
| 175 | 1.1.1.18.1 | **PLATEA** | 15d | 2026-07-22 | 2026-08-11 |  | 2026-05-25 | 2026-06-15 | 15d | 163d |  |
| 176 | 1.1.1.18.1.1 | Replanteo y acondicionamiento de losa | 3d | 2026-07-22 | 2026-07-24 | 166FS+2d | 2026-05-25 | 2026-05-27 | 3d | 158d | 0d |
| 177 | 1.1.1.18.1.2 | Excavación a mano para tubería | 6d | 2026-07-27 | 2026-08-03 | 176 | 2026-05-28 | 2026-06-05 | 6d | 198d | 0d |
| 178 | 1.1.1.18.1.3 | Fumigacion de losa de fundacion | 1d | 2026-08-04 | 2026-08-04 | 177 | 2026-06-08 | 2026-06-08 | 1d | 198d | 0d |
| 179 | 1.1.1.18.1.4 | Colocacion de concreto pobre | 1d | 2026-08-04 | 2026-08-04 | 178SS | 2026-06-08 | 2026-06-08 | 1d | 198d | 0d |
| 180 | 1.1.1.18.1.5 | Preparación y colocación de acero de refuerzo | 3d | 2026-08-05 | 2026-08-07 | 179 | 2026-06-09 | 2026-06-11 | 3d | 198d | 0d |
| 181 | 1.1.1.18.1.6 | Colocación de tubería de eléctricidad, A.B, A.N., A.LL.,GAS | 1d | 2026-08-07 | 2026-08-07 | 180SS+2d | 2026-06-11 | 2026-06-11 | 1d | 198d | 0d |
| 182 | 1.1.1.18.1.7 | Encofrado de losa | 1d | 2026-08-10 | 2026-08-10 | 181 | 2026-06-12 | 2026-06-12 | 1d | 198d | 0d |
| 183 | 1.1.1.18.1.8 | Vaciado de losa | 1d | 2026-08-11 | 2026-08-11 | 182 | 2026-06-15 | 2026-06-15 | 1d | 198d |  |

| ID | WBS | Task | Duration | Start | Finish | Predecessors | Baseline start | Baseline finish | Baseline duration | Total slack | Free slack |
| --- | --- | --- | --- | --- | --- | --- | --- | --- | --- | --- | --- |
| 184 | 1.1.1.19 | **EDIFCIO 71** | 15d | 2026-07-29 | 2026-08-18 |  | 2026-06-01 | 2026-06-22 | 15d | 163d |  |
| 185 | 1.1.1.19.1 | **PLATEA** | 15d | 2026-07-29 | 2026-08-18 |  | 2026-06-01 | 2026-06-22 | 15d | 163d |  |
| 186 | 1.1.1.19.1.1 | Replanteo y acondicionamiento de losa | 3d | 2026-07-29 | 2026-07-31 | 176FS+2d | 2026-06-01 | 2026-06-03 | 3d | 158d | 0d |
| 187 | 1.1.1.19.1.2 | Excavación a mano para tubería | 6d | 2026-08-03 | 2026-08-10 | 186 | 2026-06-05 | 2026-06-12 | 6d | 193d | 0d |
| 188 | 1.1.1.19.1.3 | Fumigacion de losa de fundacion | 1d | 2026-08-11 | 2026-08-11 | 187 | 2026-06-15 | 2026-06-15 | 1d | 193d | 0d |
| 189 | 1.1.1.19.1.4 | Colocacion de concreto pobre | 1d | 2026-08-11 | 2026-08-11 | 188SS | 2026-06-15 | 2026-06-15 | 1d | 193d | 0d |
| 190 | 1.1.1.19.1.5 | Preparación y colocación de acero de refuerzo | 3d | 2026-08-12 | 2026-08-14 | 189 | 2026-06-16 | 2026-06-18 | 3d | 193d | 0d |
| 191 | 1.1.1.19.1.6 | Colocación de tubería de eléctricidad, A.B, A.N., A.LL.,GAS | 1d | 2026-08-14 | 2026-08-14 | 190SS+2d | 2026-06-18 | 2026-06-18 | 1d | 193d | 0d |
| 192 | 1.1.1.19.1.7 | Encofrado de losa | 1d | 2026-08-17 | 2026-08-17 | 191 | 2026-06-19 | 2026-06-19 | 1d | 193d | 0d |
| 193 | 1.1.1.19.1.8 | Vaciado de losa | 1d | 2026-08-18 | 2026-08-18 | 192 | 2026-06-22 | 2026-06-22 | 1d | 193d |  |
| 194 | 1.1.1.20 | **EDIFCIO 70** | 15d | 2026-08-05 | 2026-08-25 |  | 2026-06-09 | 2026-06-29 | 15d | 163d |  |
| 195 | 1.1.1.20.1 | **PLATEA** | 15d | 2026-08-05 | 2026-08-25 |  | 2026-06-09 | 2026-06-29 | 15d | 163d |  |
| 196 | 1.1.1.20.1.1 | Replanteo y acondicionamiento de losa | 3d | 2026-08-05 | 2026-08-07 | 186FS+2d | 2026-06-09 | 2026-06-11 | 3d | 158d | 0d |
| 197 | 1.1.1.20.1.2 | Excavación a mano para tubería | 6d | 2026-08-10 | 2026-08-17 | 196 | 2026-06-12 | 2026-06-19 | 6d | 188d | 0d |
| 198 | 1.1.1.20.1.3 | Fumigacion de losa de fundacion | 1d | 2026-08-18 | 2026-08-18 | 197 | 2026-06-22 | 2026-06-22 | 1d | 188d | 0d |
| 199 | 1.1.1.20.1.4 | Colocacion de concreto pobre | 1d | 2026-08-18 | 2026-08-18 | 198SS | 2026-06-22 | 2026-06-22 | 1d | 188d | 0d |
| 200 | 1.1.1.20.1.5 | Preparación y colocación de acero de refuerzo | 3d | 2026-08-19 | 2026-08-21 | 199 | 2026-06-23 | 2026-06-25 | 3d | 188d | 0d |
| 201 | 1.1.1.20.1.6 | Colocación de tubería de eléctricidad, A.B, A.N., A.LL.,GAS | 1d | 2026-08-21 | 2026-08-21 | 200SS+2d | 2026-06-25 | 2026-06-25 | 1d | 188d | 0d |
| 202 | 1.1.1.20.1.7 | Encofrado de losa | 1d | 2026-08-24 | 2026-08-24 | 201 | 2026-06-26 | 2026-06-26 | 1d | 188d | 0d |
| 203 | 1.1.1.20.1.8 | Vaciado de losa | 1d | 2026-08-25 | 2026-08-25 | 202 | 2026-06-29 | 2026-06-29 | 1d | 188d |  |
| 204 | 1.1.1.21 | **EDIFCIO 73** | 15d | 2026-08-12 | 2026-09-01 |  | 2026-06-16 | 2026-07-06 | 15d | 163d |  |
| 205 | 1.1.1.21.1 | **PLATEA** | 15d | 2026-08-12 | 2026-09-01 |  | 2026-06-16 | 2026-07-06 | 15d | 163d |  |
| 206 | 1.1.1.21.1.1 | Replanteo y acondicionamiento de losa | 3d | 2026-08-12 | 2026-08-14 | 196FS+2d | 2026-06-16 | 2026-06-18 | 3d | 158d | 0d |
| 207 | 1.1.1.21.1.2 | Excavación a mano para tubería | 6d | 2026-08-17 | 2026-08-24 | 206 | 2026-06-19 | 2026-06-26 | 6d | 183d | 0d |
| 208 | 1.1.1.21.1.3 | Fumigacion de losa de fundacion | 1d | 2026-08-25 | 2026-08-25 | 207 | 2026-06-29 | 2026-06-29 | 1d | 183d | 0d |
| 209 | 1.1.1.21.1.4 | Colocacion de concreto pobre | 1d | 2026-08-25 | 2026-08-25 | 208SS | 2026-06-29 | 2026-06-29 | 1d | 183d | 0d |
| 210 | 1.1.1.21.1.5 | Preparación y colocación de acero de refuerzo | 3d | 2026-08-26 | 2026-08-28 | 209 | 2026-06-30 | 2026-07-02 | 3d | 183d | 0d |
| 211 | 1.1.1.21.1.6 | Colocación de tubería de eléctricidad, A.B, A.N., A.LL.,GAS | 1d | 2026-08-28 | 2026-08-28 | 210SS+2d | 2026-07-02 | 2026-07-02 | 1d | 183d | 0d |
| 212 | 1.1.1.21.1.7 | Encofrado de losa | 1d | 2026-08-31 | 2026-08-31 | 211 | 2026-07-03 | 2026-07-03 | 1d | 183d | 0d |
| 213 | 1.1.1.21.1.8 | Vaciado de losa | 1d | 2026-09-01 | 2026-09-01 | 212 | 2026-07-06 | 2026-07-06 | 1d | 183d |  |

| ID | WBS | Task | Duration | Start | Finish | Predecessors | Baseline start | Baseline finish | Baseline duration | Total slack | Free slack |
| --- | --- | --- | --- | --- | --- | --- | --- | --- | --- | --- | --- |
| 214 | 1.1.1.22 | **EDIFCIO 72** | 15d | 2026-08-19 | 2026-09-08 |  | 2026-06-23 | 2026-07-13 | 15d | 163d |  |
| 215 | 1.1.1.22.1 | **PLATEA** | 15d | 2026-08-19 | 2026-09-08 |  | 2026-06-23 | 2026-07-13 | 15d | 163d |  |
| 216 | 1.1.1.22.1.1 | Replanteo y acondicionamiento de losa | 3d | 2026-08-19 | 2026-08-21 | 206FS+2d | 2026-06-23 | 2026-06-25 | 3d | 158d | 0d |
| 217 | 1.1.1.22.1.2 | Excavación a mano para tubería | 6d | 2026-08-24 | 2026-08-31 | 216 | 2026-06-26 | 2026-07-03 | 6d | 178d | 0d |
| 218 | 1.1.1.22.1.3 | Fumigacion de losa de fundacion | 1d | 2026-09-01 | 2026-09-01 | 217 | 2026-07-06 | 2026-07-06 | 1d | 178d | 0d |
| 219 | 1.1.1.22.1.4 | Colocacion de concreto pobre | 1d | 2026-09-01 | 2026-09-01 | 218SS | 2026-07-06 | 2026-07-06 | 1d | 178d | 0d |
| 220 | 1.1.1.22.1.5 | Preparación y colocación de acero de refuerzo | 3d | 2026-09-02 | 2026-09-04 | 219 | 2026-07-07 | 2026-07-09 | 3d | 178d | 0d |
| 221 | 1.1.1.22.1.6 | Colocación de tubería de eléctricidad, A.B, A.N., A.LL.,GAS | 1d | 2026-09-04 | 2026-09-04 | 220SS+2d | 2026-07-09 | 2026-07-09 | 1d | 178d | 0d |
| 222 | 1.1.1.22.1.7 | Encofrado de losa | 1d | 2026-09-07 | 2026-09-07 | 221 | 2026-07-10 | 2026-07-10 | 1d | 178d | 0d |
| 223 | 1.1.1.22.1.8 | Vaciado de losa | 1d | 2026-09-08 | 2026-09-08 | 222 | 2026-07-13 | 2026-07-13 | 1d | 178d |  |
| 224 | 1.1.1.23 | **EDIFCIO 75** | 15d | 2026-08-26 | 2026-09-15 |  | 2026-06-30 | 2026-07-20 | 15d | 163d |  |
| 225 | 1.1.1.23.1 | **PLATEA** | 15d | 2026-08-26 | 2026-09-15 |  | 2026-06-30 | 2026-07-20 | 15d | 163d |  |
| 226 | 1.1.1.23.1.1 | Replanteo y acondicionamiento de losa | 3d | 2026-08-26 | 2026-08-28 | 216FS+2d | 2026-06-30 | 2026-07-02 | 3d | 158d | 0d |
| 227 | 1.1.1.23.1.2 | Excavación a mano para tubería | 6d | 2026-08-31 | 2026-09-07 | 226 | 2026-07-03 | 2026-07-10 | 6d | 173d | 0d |
| 228 | 1.1.1.23.1.3 | Fumigacion de losa de fundacion | 1d | 2026-09-08 | 2026-09-08 | 227 | 2026-07-13 | 2026-07-13 | 1d | 173d | 0d |
| 229 | 1.1.1.23.1.4 | Colocacion de concreto pobre | 1d | 2026-09-08 | 2026-09-08 | 228SS | 2026-07-13 | 2026-07-13 | 1d | 173d | 0d |
| 230 | 1.1.1.23.1.5 | Preparación y colocación de acero de refuerzo | 3d | 2026-09-09 | 2026-09-11 | 229 | 2026-07-14 | 2026-07-16 | 3d | 173d | 0d |
| 231 | 1.1.1.23.1.6 | Colocación de tubería de eléctricidad, A.B, A.N., A.LL.,GAS | 1d | 2026-09-11 | 2026-09-11 | 230SS+2d | 2026-07-16 | 2026-07-16 | 1d | 173d | 0d |
| 232 | 1.1.1.23.1.7 | Encofrado de losa | 1d | 2026-09-14 | 2026-09-14 | 231 | 2026-07-17 | 2026-07-17 | 1d | 173d | 0d |
| 233 | 1.1.1.23.1.8 | Vaciado de losa | 1d | 2026-09-15 | 2026-09-15 | 232 | 2026-07-20 | 2026-07-20 | 1d | 173d |  |
| 234 | 1.1.1.24 | **EDIFCIO 74** | 15d | 2026-09-02 | 2026-09-22 |  | 2026-07-07 | 2026-07-27 | 15d | 163d |  |
| 235 | 1.1.1.24.1 | **PLATEA** | 15d | 2026-09-02 | 2026-09-22 |  | 2026-07-07 | 2026-07-27 | 15d | 163d |  |
| 236 | 1.1.1.24.1.1 | Replanteo y acondicionamiento de losa | 3d | 2026-09-02 | 2026-09-04 | 226FS+2d | 2026-07-07 | 2026-07-09 | 3d | 158d | 0d |
| 237 | 1.1.1.24.1.2 | Excavación a mano para tubería | 6d | 2026-09-07 | 2026-09-14 | 236 | 2026-07-10 | 2026-07-17 | 6d | 168d | 0d |
| 238 | 1.1.1.24.1.3 | Fumigacion de losa de fundacion | 1d | 2026-09-15 | 2026-09-15 | 237 | 2026-07-20 | 2026-07-20 | 1d | 168d | 0d |
| 239 | 1.1.1.24.1.4 | Colocacion de concreto pobre | 1d | 2026-09-15 | 2026-09-15 | 238SS | 2026-07-20 | 2026-07-20 | 1d | 168d | 0d |
| 240 | 1.1.1.24.1.5 | Preparación y colocación de acero de refuerzo | 3d | 2026-09-16 | 2026-09-18 | 239 | 2026-07-21 | 2026-07-23 | 3d | 168d | 0d |
| 241 | 1.1.1.24.1.6 | Colocación de tubería de eléctricidad, A.B, A.N., A.LL.,GAS | 1d | 2026-09-18 | 2026-09-18 | 240SS+2d | 2026-07-23 | 2026-07-23 | 1d | 168d | 0d |
| 242 | 1.1.1.24.1.7 | Encofrado de losa | 1d | 2026-09-21 | 2026-09-21 | 241 | 2026-07-24 | 2026-07-24 | 1d | 168d | 0d |
| 243 | 1.1.1.24.1.8 | Vaciado de losa | 1d | 2026-09-22 | 2026-09-22 | 242 | 2026-07-27 | 2026-07-27 | 1d | 168d |  |

| ID | WBS | Task | Duration | Start | Finish | Predecessors | Complete | Remaining | Baseline start | Baseline finish | Baseline duration | Total slack | Free slack | Constraint |
| --- | --- | --- | --- | --- | --- | --- | --- | --- | --- | --- | --- | --- | --- | --- |
| 244 | 1.1.1.25 | **EDIFCIO 77** | 15d | 2026-09-09 | 2026-09-30 |  |  |  | 2026-07-14 | 2026-08-03 | 15d | 163d |  |  |
| 245 | 1.1.1.25.1 | **PLATEA** | 15d | 2026-09-09 | 2026-09-30 |  |  |  | 2026-07-14 | 2026-08-03 | 15d | 163d |  |  |
| 246 | 1.1.1.25.1.1 | Replanteo y acondicionamiento de losa | 3d | 2026-09-09 | 2026-09-11 | 236FS+2d |  |  | 2026-07-14 | 2026-07-16 | 3d | 158d | 0d |  |
| 247 | 1.1.1.25.1.2 | Excavación a mano para tubería | 6d | 2026-09-14 | 2026-09-21 | 246 |  |  | 2026-07-17 | 2026-07-24 | 6d | 163d | 0d |  |
| 248 | 1.1.1.25.1.3 | Fumigacion de losa de fundacion | 1d | 2026-09-22 | 2026-09-22 | 247 |  |  | 2026-07-27 | 2026-07-27 | 1d | 163d | 0d |  |
| 249 | 1.1.1.25.1.4 | Colocacion de concreto pobre | 1d | 2026-09-22 | 2026-09-22 | 248SS |  |  | 2026-07-27 | 2026-07-27 | 1d | 163d | 0d |  |
| 250 | 1.1.1.25.1.5 | Preparación y colocación de acero de refuerzo | 3d | 2026-09-23 | 2026-09-28 | 249 |  |  | 2026-07-28 | 2026-07-30 | 3d | 163d | 0d |  |
| 251 | 1.1.1.25.1.6 | Colocación de tubería de eléctricidad, A.B, A.N., A.LL.,GAS | 1d | 2026-09-28 | 2026-09-28 | 250SS+2d |  |  | 2026-07-30 | 2026-07-30 | 1d | 163d | 0d |  |
| 252 | 1.1.1.25.1.7 | Encofrado de losa | 1d | 2026-09-29 | 2026-09-29 | 251 |  |  | 2026-07-31 | 2026-07-31 | 1d | 163d | 0d |  |
| 253 | 1.1.1.25.1.8 | Vaciado de losa | 1d | 2026-09-30 | 2026-09-30 | 252 |  |  | 2026-08-03 | 2026-08-03 | 1d | 163d |  |  |
| 254 | 1.1.1.26 | **EDIFCIO 76** | 15d | 2026-09-16 | 2026-10-07 |  |  |  | 2026-07-21 | 2026-08-10 | 15d | 163d |  |  |
| 255 | 1.1.1.26.1 | **PLATEA** | 15d | 2026-09-16 | 2026-10-07 |  |  |  | 2026-07-21 | 2026-08-10 | 15d | 163d |  |  |
| 256 | 1.1.1.26.1.1 | Replanteo y acondicionamiento de losa | 3d | 2026-09-16 | 2026-09-18 | 246FS+2d |  |  | 2026-07-21 | 2026-07-23 | 3d | 158d | 0d |  |
| 257 | 1.1.1.26.1.2 | Excavación a mano para tubería | 6d | 2026-09-21 | 2026-09-29 | 256 |  |  | 2026-07-24 | 2026-07-31 | 6d | 158d | 0d |  |
| 258 | 1.1.1.26.1.3 | Fumigacion de losa de fundacion | 1d | 2026-09-30 | 2026-09-30 | 257 |  |  | 2026-08-03 | 2026-08-03 | 1d | 158d | 0d |  |
| 259 | 1.1.1.26.1.4 | Colocacion de concreto pobre | 1d | 2026-09-30 | 2026-09-30 | 258SS |  |  | 2026-08-03 | 2026-08-03 | 1d | 158d | 0d |  |
| 260 | 1.1.1.26.1.5 | Preparación y colocación de acero de refuerzo | 3d | 2026-10-01 | 2026-10-05 | 259 |  |  | 2026-08-04 | 2026-08-06 | 3d | 158d | 0d |  |
| 261 | 1.1.1.26.1.6 | Colocación de tubería de eléctricidad, A.B, A.N., A.LL.,GAS | 1d | 2026-10-05 | 2026-10-05 | 260SS+2d |  |  | 2026-08-06 | 2026-08-06 | 1d | 158d | 0d |  |
| 262 | 1.1.1.26.1.7 | Encofrado de losa | 1d | 2026-10-06 | 2026-10-06 | 261 |  |  | 2026-08-07 | 2026-08-07 | 1d | 158d | 0d |  |
| 263 | 1.1.1.26.1.8 | Vaciado de losa | 1d | 2026-10-07 | 2026-10-07 | 262 |  |  | 2026-08-10 | 2026-08-10 | 1d | 158d |  |  |
| 264 | 1.1.2 | **SUPERESTRUCTURA** | 210d | 2026-01-28 A | 2026-11-26 |  | 45% | 115.65d | 2026-02-03 | 2026-11-19 | 201d | 88d |  |  |
| 265 | 1.1.2.1 | **EDIFICIO 3** | 27d | 2026-01-28 A | 2026-03-06 A |  | 100% |  | 2026-02-03 | 2026-03-10 | 25d |  |  |  |
| 266 | 1.1.2.1.1 | **NIVEL 1 APTO 101** | 13d | 2026-01-28 A | 2026-02-13 A |  | 100% |  | 2026-02-03 | 2026-02-19 | 13d |  |  |  |
| 267 | 1.1.2.1.1.1 | Colocación de malla en muros | 2d | 2026-01-28 A | 2026-01-29 A | 4 | 100% |  | 2026-02-03 | 2026-02-04 | 2d |  |  | start no earlier than 2026-01-28 |
| 268 | 1.1.2.1.1.2 | Instalaciones eléctricas,sanitarias | 2d | 2026-01-30 A | 2026-02-02 A | 267 | 100% |  | 2026-02-05 | 2026-02-06 | 2d |  |  |  |
| 269 | 1.1.2.1.1.3 | Encofrado de muros | 7d | 2026-02-03 A | 2026-02-11 A | 268 | 100% |  | 2026-02-09 | 2026-02-17 | 7d |  |  |  |
| 270 | 1.1.2.1.1.4 | Encofrado de losa | 7d | 2026-02-03 A | 2026-02-11 A | 269SS | 100% |  | 2026-02-09 | 2026-02-17 | 7d |  |  |  |
| 271 | 1.1.2.1.1.5 | Colocacion de malla en losa de entrepiso | 2d | 2026-02-12 A | 2026-02-13 A | 270 | 100% |  | 2026-02-18 | 2026-02-19 | 2d |  |  |  |
| 272 | 1.1.2.1.1.6 | Vaciado de muros y losa | 1d | 2026-02-13 A | 2026-02-13 A | 271SS+1d | 100% |  | 2026-02-19 | 2026-02-19 | 1d |  |  |  |

| ID | WBS | Task | Duration | Start | Finish | Predecessors | Complete | Baseline start | Baseline finish | Baseline duration | Constraint |
| --- | --- | --- | --- | --- | --- | --- | --- | --- | --- | --- | --- |
| 273 | 1.1.2.1.2 | **NIVEL 1 APTO 102** | 3d | 2026-02-12 A | 2026-02-16 A |  | 100% | 2026-02-18 | 2026-02-23 | 4d |  |
| 274 | 1.1.2.1.2.1 | Colocación de malla en muros | 1d | 2026-02-12 A | 2026-02-12 A | 266FS-2d | 100% | 2026-02-18 | 2026-02-18 | 1d |  |
| 275 | 1.1.2.1.2.2 | Instalaciones eléctricas y sanitarias | 1d | 2026-02-13 A | 2026-02-13 A | 274 | 100% | 2026-02-19 | 2026-02-19 | 1d |  |
| 276 | 1.1.2.1.2.3 | Encofrado de muros | 1d | 2026-02-16 A | 2026-02-16 A | 275 | 100% | 2026-02-20 | 2026-02-20 | 1d |  |
| 277 | 1.1.2.1.2.4 | Encofrado de losa | 1d | 2026-02-16 A | 2026-02-16 A | 276SS | 100% | 2026-02-20 | 2026-02-20 | 1d |  |
| 278 | 1.1.2.1.2.5 | Colocacion de malla en losa de entrepiso | 1d | 2026-02-16 A | 2026-02-16 A |  | 100% | 2026-02-23 | 2026-02-23 | 1d | start no earlier than 2026-02-16 |
| 279 | 1.1.2.1.2.6 | Vaciado de muros y losa | 1d | 2026-02-16 A | 2026-02-16 A | 278SS | 100% | 2026-02-23 | 2026-02-23 | 1d |  |
| 280 | 1.1.2.1.3 | **NIVEL 2 APTO 201** | 3d | 2026-02-17 A | 2026-02-19 A |  | 100% | 2026-02-24 | 2026-02-25 | 2d |  |
| 281 | 1.1.2.1.3.1 | Colocación de malla en muros | 1d | 2026-02-17 A | 2026-02-17 A | 273 | 100% | 2026-02-24 | 2026-02-24 | 1d |  |
| 282 | 1.1.2.1.3.2 | Instalaciones eléctricas y sanitarias | 1d | 2026-02-17 A | 2026-02-17 A | 281SS | 100% | 2026-02-24 | 2026-02-24 | 1d |  |
| 283 | 1.1.2.1.3.3 | Encofrado de muros | 1d | 2026-02-18 A | 2026-02-18 A | 282 | 100% | 2026-02-25 | 2026-02-25 | 1d |  |
| 284 | 1.1.2.1.3.4 | Encofrado de losa | 1d | 2026-02-18 A | 2026-02-18 A | 283SS | 100% | 2026-02-25 | 2026-02-25 | 1d |  |
| 285 | 1.1.2.1.3.5 | Colocacion de malla en losa de entrepiso | 1d | 2026-02-19 A | 2026-02-19 A | 284SS | 100% | 2026-02-25 | 2026-02-25 | 1d | start no earlier than 2026-02-19 |
| 286 | 1.1.2.1.3.6 | Vaciado de muros y losa | 1d | 2026-02-19 A | 2026-02-19 A | 285SS | 100% | 2026-02-25 | 2026-02-25 | 1d |  |
| 287 | 1.1.2.1.4 | **NIVEL 2 APTO 202** | 2d | 2026-02-19 A | 2026-02-20 A |  | 100% | 2026-02-25 | 2026-02-26 | 2d |  |
| 288 | 1.1.2.1.4.1 | Colocación de malla en muros | 1d | 2026-02-19 A | 2026-02-19 A | 280FS-1d | 100% | 2026-02-25 | 2026-02-25 | 1d |  |
| 289 | 1.1.2.1.4.2 | Instalaciones eléctricas y sanitarias | 1d | 2026-02-19 A | 2026-02-19 A | 288SS | 100% | 2026-02-25 | 2026-02-25 | 1d |  |
| 290 | 1.1.2.1.4.3 | Encofrado de muros | 1d | 2026-02-20 A | 2026-02-20 A | 289 | 100% | 2026-02-26 | 2026-02-26 | 1d |  |
| 291 | 1.1.2.1.4.4 | Encofrado de losa | 1d | 2026-02-20 A | 2026-02-20 A | 290SS | 100% | 2026-02-26 | 2026-02-26 | 1d |  |
| 292 | 1.1.2.1.4.5 | Colocacion de malla en losa de entrepiso | 1d | 2026-02-20 A | 2026-02-20 A | 291SS | 100% | 2026-02-26 | 2026-02-26 | 1d |  |
| 293 | 1.1.2.1.4.6 | Vaciado de muros y losa | 1d | 2026-02-20 A | 2026-02-20 A | 292SS | 100% | 2026-02-26 | 2026-02-26 | 1d |  |
| 294 | 1.1.2.1.5 | **NIVEL 3 APTO 301** | 2d | 2026-02-24 A | 2026-02-25 A |  | 100% | 2026-02-26 | 2026-03-02 | 2d |  |
| 295 | 1.1.2.1.5.1 | Colocación de malla en muros | 1d | 2026-02-24 A | 2026-02-24 A | 287FS-1d | 100% | 2026-02-26 | 2026-02-26 | 1d | start no earlier than 2026-02-24 |
| 296 | 1.1.2.1.5.2 | Instalaciones eléctricas y sanitarias | 1d | 2026-02-24 A | 2026-02-24 A | 295SS | 100% | 2026-02-26 | 2026-02-26 | 1d |  |
| 297 | 1.1.2.1.5.3 | Encofrado de muros | 1d | 2026-02-25 A | 2026-02-25 A | 296 | 100% | 2026-03-02 | 2026-03-02 | 1d |  |
| 298 | 1.1.2.1.5.4 | Encofrado de losa | 1d | 2026-02-25 A | 2026-02-25 A | 297SS | 100% | 2026-03-02 | 2026-03-02 | 1d |  |
| 299 | 1.1.2.1.5.5 | Colocacion de malla en losa de entrepiso | 1d | 2026-02-25 A | 2026-02-25 A | 298SS | 100% | 2026-03-02 | 2026-03-02 | 1d |  |
| 300 | 1.1.2.1.5.6 | Vaciado de muros y losa | 1d | 2026-02-25 A | 2026-02-25 A | 299SS | 100% | 2026-03-02 | 2026-03-02 | 1d |  |

| ID | WBS | Task | Duration | Start | Finish | Predecessors | Complete | Baseline start | Baseline finish | Baseline duration | Constraint |
| --- | --- | --- | --- | --- | --- | --- | --- | --- | --- | --- | --- |
| 301 | 1.1.2.1.6 | **NIVEL 3 APTO 302** | 2d | 2026-02-25 A | 2026-02-26 A |  | 100% | 2026-03-02 | 2026-03-03 | 2d |  |
| 302 | 1.1.2.1.6.1 | Colocación de malla en muros | 1d | 2026-02-25 A | 2026-02-25 A | 294FS-1d | 100% | 2026-03-02 | 2026-03-02 | 1d |  |
| 303 | 1.1.2.1.6.2 | Instalaciones eléctricas y sanitarias | 1d | 2026-02-25 A | 2026-02-25 A | 302SS | 100% | 2026-03-02 | 2026-03-02 | 1d |  |
| 304 | 1.1.2.1.6.3 | Encofrado de muros | 1d | 2026-02-26 A | 2026-02-26 A | 303 | 100% | 2026-03-03 | 2026-03-03 | 1d |  |
| 305 | 1.1.2.1.6.4 | Encofrado de losa | 1d | 2026-02-26 A | 2026-02-26 A | 304SS | 100% | 2026-03-03 | 2026-03-03 | 1d |  |
| 306 | 1.1.2.1.6.5 | Colocacion de malla en losa de entrepiso | 1d | 2026-02-26 A | 2026-02-26 A | 305SS | 100% | 2026-03-03 | 2026-03-03 | 1d |  |
| 307 | 1.1.2.1.6.6 | Vaciado de muros y losa | 1d | 2026-02-26 A | 2026-02-26 A | 306SS | 100% | 2026-03-03 | 2026-03-03 | 1d |  |
| 308 | 1.1.2.1.7 | ANTEPECHOS y TECHO ESCALERA EDIF 3 | 4d | 2026-03-03 A | 2026-03-06 A | 307FS+1d | 100% | 2026-03-05 | 2026-03-10 | 4d |  |
| 309 | 1.1.2.2 | **EDIFICIO 2** | 19d | 2026-02-11 A | 2026-03-10 A |  | 100% | 2026-02-26 | 2026-03-19 | 15d |  |
| 310 | 1.1.2.2.1 | **NIVEL 1 APTO 101** | 5d | 2026-02-11 A | 2026-02-17 A |  | 100% | 2026-02-26 | 2026-03-05 | 5d |  |
| 311 | 1.1.2.2.1.1 | Colocación de malla en muros | 1d | 2026-02-11 A | 2026-02-11 A |  | 100% | 2026-02-26 | 2026-02-26 | 1d | start no earlier than 2026-02-11 |
| 312 | 1.1.2.2.1.2 | Instalaciones eléctricas,sanitarias | 1d | 2026-02-12 A | 2026-02-12 A | 311 | 100% | 2026-03-02 | 2026-03-02 | 1d |  |
| 313 | 1.1.2.2.1.3 | Encofrado de muros | 2d | 2026-02-16 A | 2026-02-17 A | 312FS+1d | 100% | 2026-03-04 | 2026-03-05 | 2d |  |
| 314 | 1.1.2.2.1.4 | Encofrado de losa | 2d | 2026-02-16 A | 2026-02-17 A | 313SS | 100% | 2026-03-04 | 2026-03-05 | 2d |  |
| 315 | 1.1.2.2.1.5 | Colocacion de malla en losa de entrepiso | 1d | 2026-02-17 A | 2026-02-17 A | 314SS+1d | 100% | 2026-03-05 | 2026-03-05 | 1d |  |
| 316 | 1.1.2.2.1.6 | Vaciado de muros y losa | 1d | 2026-02-17 A | 2026-02-17 A | 315SS | 100% | 2026-03-05 | 2026-03-05 | 1d |  |
| 317 | 1.1.2.2.2 | **NIVEL 1 APTO 102** | 3d | 2026-02-16 A | 2026-02-18 A |  | 100% | 2026-03-04 | 2026-03-06 | 3d |  |
| 318 | 1.1.2.2.2.1 | Colocación de malla en muros | 1d | 2026-02-16 A | 2026-02-16 A | 310FS-2d | 100% | 2026-03-04 | 2026-03-04 | 1d |  |
| 319 | 1.1.2.2.2.2 | Instalaciones eléctricas y sanitarias | 1d | 2026-02-17 A | 2026-02-17 A | 318 | 100% | 2026-03-05 | 2026-03-05 | 1d |  |
| 320 | 1.1.2.2.2.3 | Encofrado de muros | 1d | 2026-02-18 A | 2026-02-18 A | 319 | 100% | 2026-03-06 | 2026-03-06 | 1d |  |
| 321 | 1.1.2.2.2.4 | Encofrado de losa | 1d | 2026-02-18 A | 2026-02-18 A | 320SS | 100% | 2026-03-06 | 2026-03-06 | 1d |  |
| 322 | 1.1.2.2.2.5 | Colocacion de malla en losa de entrepiso | 1d | 2026-02-18 A | 2026-02-18 A | 321SS | 100% | 2026-03-06 | 2026-03-06 | 1d |  |
| 323 | 1.1.2.2.2.6 | Vaciado de muros y losa | 1d | 2026-02-18 A | 2026-02-18 A | 322SS | 100% | 2026-03-06 | 2026-03-06 | 1d |  |
| 324 | 1.1.2.2.3 | **NIVEL 2 APTO 201** | 3d | 2026-02-19 A | 2026-02-23 A |  | 100% | 2026-03-05 | 2026-03-09 | 3d |  |
| 325 | 1.1.2.2.3.1 | Colocación de malla en muros | 1d | 2026-02-19 A | 2026-02-19 A | 317FS-2d | 100% | 2026-03-05 | 2026-03-05 | 1d | start no earlier than 2026-02-19 |
| 326 | 1.1.2.2.3.2 | Instalaciones eléctricas y sanitarias | 1d | 2026-02-20 A | 2026-02-20 A | 325 | 100% | 2026-03-06 | 2026-03-06 | 1d |  |
| 327 | 1.1.2.2.3.3 | Encofrado de muros | 1d | 2026-02-23 A | 2026-02-23 A | 326 | 100% | 2026-03-09 | 2026-03-09 | 1d |  |
| 328 | 1.1.2.2.3.4 | Encofrado de losa | 1d | 2026-02-23 A | 2026-02-23 A | 327SS | 100% | 2026-03-09 | 2026-03-09 | 1d |  |
| 329 | 1.1.2.2.3.5 | Colocacion de malla en losa de entrepiso | 1d | 2026-02-23 A | 2026-02-23 A | 328SS | 100% | 2026-03-09 | 2026-03-09 | 1d |  |
| 330 | 1.1.2.2.3.6 | Vaciado de muros y losa | 1d | 2026-02-23 A | 2026-02-23 A | 329SS | 100% | 2026-03-09 | 2026-03-09 | 1d |  |

| ID | WBS | Task | Duration | Start | Finish | Predecessors | Complete | Baseline start | Baseline finish | Baseline duration | Constraint |
| --- | --- | --- | --- | --- | --- | --- | --- | --- | --- | --- | --- |
| 331 | 1.1.2.2.4 | **NIVEL 2 APTO 202** | 2d | 2026-02-23 A | 2026-02-24 A |  | 100% | 2026-03-09 | 2026-03-10 | 2d |  |
| 332 | 1.1.2.2.4.1 | Colocación de malla en muros | 1d | 2026-02-23 A | 2026-02-23 A | 324FS-1d | 100% | 2026-03-09 | 2026-03-09 | 1d |  |
| 333 | 1.1.2.2.4.2 | Instalaciones eléctricas y sanitarias | 1d | 2026-02-23 A | 2026-02-23 A | 332SS | 100% | 2026-03-09 | 2026-03-09 | 1d |  |
| 334 | 1.1.2.2.4.3 | Encofrado de muros | 1d | 2026-02-24 A | 2026-02-24 A | 333 | 100% | 2026-03-10 | 2026-03-10 | 1d |  |
| 335 | 1.1.2.2.4.4 | Encofrado de losa | 1d | 2026-02-24 A | 2026-02-24 A | 334SS | 100% | 2026-03-10 | 2026-03-10 | 1d |  |
| 336 | 1.1.2.2.4.5 | Colocacion de malla en losa de entrepiso | 1d | 2026-02-24 A | 2026-02-24 A | 335SS | 100% | 2026-03-10 | 2026-03-10 | 1d |  |
| 337 | 1.1.2.2.4.6 | Vaciado de muros y losa | 1d | 2026-02-24 A | 2026-02-24 A | 336SS | 100% | 2026-03-10 | 2026-03-10 | 1d |  |
| 338 | 1.1.2.2.5 | **NIVEL 3 APTO 301** | 2d | 2026-02-26 A | 2026-03-02 A |  | 100% | 2026-03-10 | 2026-03-11 | 2d |  |
| 339 | 1.1.2.2.5.1 | Colocación de malla en muros | 1d | 2026-02-26 A | 2026-02-26 A | 331FS-1d | 100% | 2026-03-10 | 2026-03-10 | 1d | start no earlier than 2026-02-26 |
| 340 | 1.1.2.2.5.2 | Instalaciones eléctricas y sanitarias | 1d | 2026-02-26 A | 2026-02-26 A | 339SS | 100% | 2026-03-10 | 2026-03-10 | 1d |  |
| 341 | 1.1.2.2.5.3 | Encofrado de muros | 1d | 2026-03-02 A | 2026-03-02 A | 340 | 100% | 2026-03-11 | 2026-03-11 | 1d |  |
| 342 | 1.1.2.2.5.4 | Encofrado de losa | 1d | 2026-03-02 A | 2026-03-02 A | 341SS | 100% | 2026-03-11 | 2026-03-11 | 1d |  |
| 343 | 1.1.2.2.5.5 | Colocacion de malla en losa de entrepiso | 1d | 2026-03-02 A | 2026-03-02 A | 342SS | 100% | 2026-03-11 | 2026-03-11 | 1d |  |
| 344 | 1.1.2.2.5.6 | Vaciado de muros y losa | 1d | 2026-03-02 A | 2026-03-02 A | 343SS | 100% | 2026-03-11 | 2026-03-11 | 1d |  |
| 345 | 1.1.2.2.6 | **NIVEL 3 APTO 302** | 2d | 2026-03-02 A | 2026-03-03 A |  | 100% | 2026-03-11 | 2026-03-12 | 2d |  |
| 346 | 1.1.2.2.6.1 | Colocación de malla en muros | 1d | 2026-03-02 A | 2026-03-02 A | 338FS-1d | 100% | 2026-03-11 | 2026-03-11 | 1d |  |
| 347 | 1.1.2.2.6.2 | Instalaciones eléctricas y sanitarias | 1d | 2026-03-02 A | 2026-03-02 A | 346SS | 100% | 2026-03-11 | 2026-03-11 | 1d |  |
| 348 | 1.1.2.2.6.3 | Encofrado de muros | 1d | 2026-03-03 A | 2026-03-03 A | 347 | 100% | 2026-03-12 | 2026-03-12 | 1d |  |
| 349 | 1.1.2.2.6.4 | Encofrado de losa | 1d | 2026-03-03 A | 2026-03-03 A | 348SS | 100% | 2026-03-12 | 2026-03-12 | 1d |  |
| 350 | 1.1.2.2.6.5 | Colocacion de malla en losa de entrepiso | 1d | 2026-03-03 A | 2026-03-03 A | 349SS | 100% | 2026-03-12 | 2026-03-12 | 1d |  |
| 351 | 1.1.2.2.6.6 | Vaciado de muros y losa | 1d | 2026-03-03 A | 2026-03-03 A | 350SS | 100% | 2026-03-12 | 2026-03-12 | 1d |  |
| 352 | 1.1.2.2.7 | ANTEPECHOS y TECHO ESCALERA EDIF 3 | 4d | 2026-03-05 A | 2026-03-10 A | 351FS+1d | 100% | 2026-03-16 | 2026-03-19 | 4d |  |
| 353 | 1.1.2.3 | **EDIFICIO 4** | 24d | 2026-03-03 A | 2026-04-07 A |  | 100% | 2026-03-12 | 2026-03-30 | 13d |  |
| 354 | 1.1.2.3.1 | **NIVEL 1 APTO 101** | 3d | 2026-03-03 A | 2026-03-05 A |  | 100% | 2026-03-12 | 2026-03-16 | 3d |  |
| 355 | 1.1.2.3.1.1 | Colocación de malla en muros | 1d | 2026-03-03 A | 2026-03-03 A |  | 100% | 2026-03-12 | 2026-03-12 | 1d | start no earlier than 2026-03-03 |
| 356 | 1.1.2.3.1.2 | Instalaciones eléctricas,sanitarias | 1d | 2026-03-03 A | 2026-03-03 A | 355SS | 100% | 2026-03-12 | 2026-03-12 | 1d |  |
| 357 | 1.1.2.3.1.3 | Encofrado de muros | 2d | 2026-03-04 A | 2026-03-05 A | 356 | 100% | 2026-03-13 | 2026-03-16 | 2d |  |
| 358 | 1.1.2.3.1.4 | Encofrado de losa | 2d | 2026-03-04 A | 2026-03-05 A | 357SS | 100% | 2026-03-13 | 2026-03-16 | 2d |  |
| 359 | 1.1.2.3.1.5 | Colocacion de malla en losa de entrepiso | 1d | 2026-03-05 A | 2026-03-05 A | 358SS+1d | 100% | 2026-03-16 | 2026-03-16 | 1d |  |
| 360 | 1.1.2.3.1.6 | Vaciado de muros y losa | 1d | 2026-03-05 A | 2026-03-05 A | 359SS | 100% | 2026-03-16 | 2026-03-16 | 1d |  |

| ID | WBS | Task | Duration | Start | Finish | Predecessors | Complete | Baseline start | Baseline finish | Baseline duration |
| --- | --- | --- | --- | --- | --- | --- | --- | --- | --- | --- |
| 361 | 1.1.2.3.2 | **NIVEL 1 APTO 102** | 2d | 2026-03-05 A | 2026-03-06 A |  | 100% | 2026-03-16 | 2026-03-17 | 2d |
| 362 | 1.1.2.3.2.1 | Colocación de malla en muros | 1d | 2026-03-05 A | 2026-03-05 A | 354FS-1d | 100% | 2026-03-16 | 2026-03-16 | 1d |
| 363 | 1.1.2.3.2.2 | Instalaciones eléctricas y sanitarias | 1d | 2026-03-05 A | 2026-03-05 A | 362SS | 100% | 2026-03-16 | 2026-03-16 | 1d |
| 364 | 1.1.2.3.2.3 | Encofrado de muros | 1d | 2026-03-06 A | 2026-03-06 A | 363 | 100% | 2026-03-17 | 2026-03-17 | 1d |
| 365 | 1.1.2.3.2.4 | Encofrado de losa | 1d | 2026-03-06 A | 2026-03-06 A | 364SS | 100% | 2026-03-17 | 2026-03-17 | 1d |
| 366 | 1.1.2.3.2.5 | Colocacion de malla en losa de entrepiso | 1d | 2026-03-06 A | 2026-03-06 A | 365SS | 100% | 2026-03-17 | 2026-03-17 | 1d |
| 367 | 1.1.2.3.2.6 | Vaciado de muros y losa | 1d | 2026-03-06 A | 2026-03-06 A | 366SS | 100% | 2026-03-17 | 2026-03-17 | 1d |
| 368 | 1.1.2.3.3 | **NIVEL 2 APTO 201** | 2d | 2026-03-06 A | 2026-03-09 A |  | 100% | 2026-03-17 | 2026-03-18 | 2d |
| 369 | 1.1.2.3.3.1 | Colocación de malla en muros | 1d | 2026-03-06 A | 2026-03-06 A | 361FS-1d | 100% | 2026-03-17 | 2026-03-17 | 1d |
| 370 | 1.1.2.3.3.2 | Instalaciones eléctricas y sanitarias | 1d | 2026-03-06 A | 2026-03-06 A | 369SS | 100% | 2026-03-17 | 2026-03-17 | 1d |
| 371 | 1.1.2.3.3.3 | Encofrado de muros | 1d | 2026-03-09 A | 2026-03-09 A | 370 | 100% | 2026-03-18 | 2026-03-18 | 1d |
| 372 | 1.1.2.3.3.4 | Encofrado de losa | 1d | 2026-03-09 A | 2026-03-09 A | 371SS | 100% | 2026-03-18 | 2026-03-18 | 1d |
| 373 | 1.1.2.3.3.5 | Colocacion de malla en losa de entrepiso | 1d | 2026-03-09 A | 2026-03-09 A | 372SS | 100% | 2026-03-18 | 2026-03-18 | 1d |
| 374 | 1.1.2.3.3.6 | Vaciado de muros y losa | 1d | 2026-03-09 A | 2026-03-09 A | 373SS | 100% | 2026-03-18 | 2026-03-18 | 1d |
| 375 | 1.1.2.3.4 | **NIVEL 2 APTO 202** | 2d | 2026-03-09 A | 2026-03-10 A |  | 100% | 2026-03-18 | 2026-03-19 | 2d |
| 376 | 1.1.2.3.4.1 | Colocaciónde malla en muros | 1d | 2026-03-09 A | 2026-03-09 A | 368FS-1d | 100% | 2026-03-18 | 2026-03-18 | 1d |
| 377 | 1.1.2.3.4.2 | Instalaciones eléctricas y sanitarias | 1d | 2026-03-09 A | 2026-03-09 A | 376SS | 100% | 2026-03-18 | 2026-03-18 | 1d |
| 378 | 1.1.2.3.4.3 | Encofrado de muros | 1d | 2026-03-10 A | 2026-03-10 A | 377 | 100% | 2026-03-19 | 2026-03-19 | 1d |
| 379 | 1.1.2.3.4.4 | Encofrado de losa | 1d | 2026-03-10 A | 2026-03-10 A | 378SS | 100% | 2026-03-19 | 2026-03-19 | 1d |
| 380 | 1.1.2.3.4.5 | Colocacion de malla en losa de entrepiso | 1d | 2026-03-10 A | 2026-03-10 A | 379SS | 100% | 2026-03-19 | 2026-03-19 | 1d |
| 381 | 1.1.2.3.4.6 | Vaciado de muros y losa | 1d | 2026-03-10 A | 2026-03-10 A | 380SS | 100% | 2026-03-19 | 2026-03-19 | 1d |
| 382 | 1.1.2.3.5 | **NIVEL 3 APTO 301** | 2d | 2026-03-10 A | 2026-03-11 A |  | 100% | 2026-03-19 | 2026-03-20 | 2d |
| 383 | 1.1.2.3.5.1 | Colocación de malla en muros | 1d | 2026-03-10 A | 2026-03-10 A | 375FS-1d | 100% | 2026-03-19 | 2026-03-19 | 1d |
| 384 | 1.1.2.3.5.2 | Instalaciones eléctricas y sanitarias | 1d | 2026-03-10 A | 2026-03-10 A | 383SS | 100% | 2026-03-19 | 2026-03-19 | 1d |
| 385 | 1.1.2.3.5.3 | Encofrado de muros | 1d | 2026-03-11 A | 2026-03-11 A | 384 | 100% | 2026-03-20 | 2026-03-20 | 1d |
| 386 | 1.1.2.3.5.4 | Encofrado de losa | 1d | 2026-03-11 A | 2026-03-11 A | 385SS | 100% | 2026-03-20 | 2026-03-20 | 1d |
| 387 | 1.1.2.3.5.5 | Colocacion de malla en losa de entrepiso | 1d | 2026-03-11 A | 2026-03-11 A | 386SS | 100% | 2026-03-20 | 2026-03-20 | 1d |
| 388 | 1.1.2.3.5.6 | Vaciado de muros y losa | 1d | 2026-03-11 A | 2026-03-11 A | 387SS | 100% | 2026-03-20 | 2026-03-20 | 1d |

| ID | WBS | Task | Duration | Start | Finish | Predecessors | Complete | Baseline start | Baseline finish | Baseline duration | Constraint |
| --- | --- | --- | --- | --- | --- | --- | --- | --- | --- | --- | --- |
| 389 | 1.1.2.3.6 | **NIVEL 3 APTO 302** | 2d | 2026-03-11 A | 2026-03-12 A |  | 100% | 2026-03-20 | 2026-03-23 | 2d |  |
| 390 | 1.1.2.3.6.1 | Colocación de malla en muros | 1d | 2026-03-11 A | 2026-03-11 A | 382FS-1d | 100% | 2026-03-20 | 2026-03-20 | 1d |  |
| 391 | 1.1.2.3.6.2 | Instalaciones eléctricas y sanitarias | 1d | 2026-03-11 A | 2026-03-11 A | 390SS | 100% | 2026-03-20 | 2026-03-20 | 1d |  |
| 392 | 1.1.2.3.6.3 | Encofrado de muros | 1d | 2026-03-12 A | 2026-03-12 A | 391 | 100% | 2026-03-23 | 2026-03-23 | 1d |  |
| 393 | 1.1.2.3.6.4 | Encofrado de losa | 1d | 2026-03-12 A | 2026-03-12 A | 392SS | 100% | 2026-03-23 | 2026-03-23 | 1d |  |
| 394 | 1.1.2.3.6.5 | Colocacion de malla en losa de entrepiso | 1d | 2026-03-12 A | 2026-03-12 A | 393SS | 100% | 2026-03-23 | 2026-03-23 | 1d |  |
| 395 | 1.1.2.3.6.6 | Vaciado de muros y losa | 1d | 2026-03-12 A | 2026-03-12 A | 394SS | 100% | 2026-03-23 | 2026-03-23 | 1d |  |
| 396 | 1.1.2.3.7 | ANTEPECHOS y TECHO ESCALERA EDIF 1 | 4d | 2026-03-31 A | 2026-04-07 A | 395FS+1d | 100% | 2026-03-25 | 2026-03-30 | 4d | start no earlier than 2026-03-31 |
| 397 | 1.1.2.4 | **EDIFICIO 6** | 20d | 2026-03-09 A | 2026-04-07 A |  | 100% | 2026-03-20 | 2026-04-13 | 15d |  |
| 398 | 1.1.2.4.1 | **NIVEL 1 APTO 101** | 5d | 2026-03-09 A | 2026-03-13 A |  | 100% | 2026-03-20 | 2026-03-26 | 5d |  |
| 399 | 1.1.2.4.1.1 | Colocación de malla en muros | 1d | 2026-03-09 A | 2026-03-09 A |  | 100% | 2026-03-20 | 2026-03-20 | 1d | start no earlier than 2026-03-09 |
| 400 | 1.1.2.4.1.2 | Instalaciones eléctricas,sanitarias | 1d | 2026-03-09 A | 2026-03-09 A | 399SS | 100% | 2026-03-20 | 2026-03-20 | 1d |  |
| 401 | 1.1.2.4.1.3 | Encofrado de muros | 2d | 2026-03-10 A | 2026-03-11 A | 400 | 100% | 2026-03-23 | 2026-03-24 | 2d |  |
| 402 | 1.1.2.4.1.4 | Encofrado de losa | 2d | 2026-03-10 A | 2026-03-11 A | 401SS | 100% | 2026-03-23 | 2026-03-24 | 2d |  |
| 403 | 1.1.2.4.1.5 | Colocacion de malla en losa de entrepiso | 1d | 2026-03-13 A | 2026-03-13 A | 402FS+1d | 100% | 2026-03-26 | 2026-03-26 | 1d |  |
| 404 | 1.1.2.4.1.6 | Vaciado de muros y losa | 1d | 2026-03-13 A | 2026-03-13 A | 403SS | 100% | 2026-03-26 | 2026-03-26 | 1d |  |
| 405 | 1.1.2.4.2 | **NIVEL 1 APTO 102** | 3d | 2026-03-13 A | 2026-03-17 A |  | 100% | 2026-03-26 | 2026-03-27 | 2d |  |
| 406 | 1.1.2.4.2.1 | Colocación de malla en muros | 1d | 2026-03-13 A | 2026-03-13 A | 398FS-1d | 100% | 2026-03-26 | 2026-03-26 | 1d |  |
| 407 | 1.1.2.4.2.2 | Instalaciones eléctricas y sanitarias | 1d | 2026-03-13 A | 2026-03-13 A | 406SS | 100% | 2026-03-26 | 2026-03-26 | 1d |  |
| 408 | 1.1.2.4.2.3 | Encofrado de muros | 1d | 2026-03-16 A | 2026-03-16 A | 407 | 100% | 2026-03-27 | 2026-03-27 | 1d |  |
| 409 | 1.1.2.4.2.4 | Encofrado de losa | 1d | 2026-03-16 A | 2026-03-16 A | 408SS | 100% | 2026-03-27 | 2026-03-27 | 1d |  |
| 410 | 1.1.2.4.2.5 | Colocacion de malla en losa de entrepiso | 1d | 2026-03-17 A | 2026-03-17 A | 409SS | 100% | 2026-03-27 | 2026-03-27 | 1d | start no earlier than 2026-03-17 |
| 411 | 1.1.2.4.2.6 | Vaciado de muros y losa | 1d | 2026-03-17 A | 2026-03-17 A | 410SS | 100% | 2026-03-27 | 2026-03-27 | 1d |  |
| 412 | 1.1.2.4.3 | **NIVEL 2 APTO 201** | 2d | 2026-03-17 A | 2026-03-18 A |  | 100% | 2026-03-27 | 2026-03-30 | 2d |  |
| 413 | 1.1.2.4.3.1 | Colocación de malla en muros | 1d | 2026-03-17 A | 2026-03-17 A | 405FS-1d | 100% | 2026-03-27 | 2026-03-27 | 1d |  |
| 414 | 1.1.2.4.3.2 | Instalaciones eléctricas y sanitarias | 1d | 2026-03-17 A | 2026-03-17 A | 413SS | 100% | 2026-03-27 | 2026-03-27 | 1d |  |
| 415 | 1.1.2.4.3.3 | Encofrado de muros | 1d | 2026-03-18 A | 2026-03-18 A | 414 | 100% | 2026-03-30 | 2026-03-30 | 1d |  |
| 416 | 1.1.2.4.3.4 | Encofrado de losa | 1d | 2026-03-18 A | 2026-03-18 A | 415SS | 100% | 2026-03-30 | 2026-03-30 | 1d |  |
| 417 | 1.1.2.4.3.5 | Colocacion de malla en losa de entrepiso | 1d | 2026-03-18 A | 2026-03-18 A | 416SS | 100% | 2026-03-30 | 2026-03-30 | 1d |  |
| 418 | 1.1.2.4.3.6 | Vaciado de muros y losa | 1d | 2026-03-18 A | 2026-03-18 A | 417SS | 100% | 2026-03-30 | 2026-03-30 | 1d |  |

| ID | WBS | Task | Duration | Start | Finish | Predecessors | Complete | Baseline start | Baseline finish | Baseline duration | Constraint |
| --- | --- | --- | --- | --- | --- | --- | --- | --- | --- | --- | --- |
| 419 | 1.1.2.4.4 | **NIVEL 2 APTO 202** | 2d | 2026-03-18 A | 2026-03-19 A |  | 100% | 2026-03-30 | 2026-03-31 | 2d |  |
| 420 | 1.1.2.4.4.1 | Colocaciónde malla en muros | 1d | 2026-03-18 A | 2026-03-18 A | 412FS-1d | 100% | 2026-03-30 | 2026-03-30 | 1d |  |
| 421 | 1.1.2.4.4.2 | Instalaciones eléctricas y sanitarias | 1d | 2026-03-18 A | 2026-03-18 A | 420SS | 100% | 2026-03-30 | 2026-03-30 | 1d |  |
| 422 | 1.1.2.4.4.3 | Encofrado de muros | 1d | 2026-03-19 A | 2026-03-19 A | 421 | 100% | 2026-03-31 | 2026-03-31 | 1d |  |
| 423 | 1.1.2.4.4.4 | Encofrado de losa | 1d | 2026-03-19 A | 2026-03-19 A | 422SS | 100% | 2026-03-31 | 2026-03-31 | 1d |  |
| 424 | 1.1.2.4.4.5 | Colocacion de malla en losa de entrepiso | 1d | 2026-03-19 A | 2026-03-19 A | 423SS | 100% | 2026-03-31 | 2026-03-31 | 1d |  |
| 425 | 1.1.2.4.4.6 | Vaciado de muros y losa | 1d | 2026-03-19 A | 2026-03-19 A | 424SS | 100% | 2026-03-31 | 2026-03-31 | 1d |  |
| 426 | 1.1.2.4.5 | **NIVEL 3 APTO 301** | 2d | 2026-03-19 A | 2026-03-20 A |  | 100% | 2026-03-31 | 2026-04-01 | 2d |  |
| 427 | 1.1.2.4.5.1 | Colocación de malla en muros | 1d | 2026-03-19 A | 2026-03-19 A | 419FS-1d | 100% | 2026-03-31 | 2026-03-31 | 1d |  |
| 428 | 1.1.2.4.5.2 | Instalaciones eléctricas y sanitarias | 1d | 2026-03-19 A | 2026-03-19 A | 427SS | 100% | 2026-03-31 | 2026-03-31 | 1d |  |
| 429 | 1.1.2.4.5.3 | Encofrado de muros | 1d | 2026-03-20 A | 2026-03-20 A | 428 | 100% | 2026-04-01 | 2026-04-01 | 1d |  |
| 430 | 1.1.2.4.5.4 | Encofrado de losa | 1d | 2026-03-20 A | 2026-03-20 A | 429SS | 100% | 2026-04-01 | 2026-04-01 | 1d |  |
| 431 | 1.1.2.4.5.5 | Colocacion de malla en losa de entrepiso | 1d | 2026-03-20 A | 2026-03-20 A | 430SS | 100% | 2026-04-01 | 2026-04-01 | 1d |  |
| 432 | 1.1.2.4.5.6 | Vaciado de muros y losa | 1d | 2026-03-20 A | 2026-03-20 A | 431SS | 100% | 2026-04-01 | 2026-04-01 | 1d |  |
| 433 | 1.1.2.4.6 | **NIVEL 3 APTO 302** | 2d | 2026-03-20 A | 2026-03-23 A |  | 100% | 2026-04-01 | 2026-04-06 | 2d |  |
| 434 | 1.1.2.4.6.1 | Colocación de malla en muros | 1d | 2026-03-20 A | 2026-03-20 A | 426FS-1d | 100% | 2026-04-01 | 2026-04-01 | 1d |  |
| 435 | 1.1.2.4.6.2 | Instalaciones eléctricas y sanitarias | 1d | 2026-03-20 A | 2026-03-20 A | 434SS | 100% | 2026-04-01 | 2026-04-01 | 1d |  |
| 436 | 1.1.2.4.6.3 | Encofrado de muros | 1d | 2026-03-23 A | 2026-03-23 A | 435 | 100% | 2026-04-06 | 2026-04-06 | 1d |  |
| 437 | 1.1.2.4.6.4 | Encofrado de losa | 1d | 2026-03-23 A | 2026-03-23 A | 436SS | 100% | 2026-04-06 | 2026-04-06 | 1d |  |
| 438 | 1.1.2.4.6.5 | Colocacion de malla en losa de entrepiso | 1d | 2026-03-23 A | 2026-03-23 A | 437SS | 100% | 2026-04-06 | 2026-04-06 | 1d |  |
| 439 | 1.1.2.4.6.6 | Vaciado de muros y losa | 1d | 2026-03-23 A | 2026-03-23 A | 438SS | 100% | 2026-04-06 | 2026-04-06 | 1d |  |
| 440 | 1.1.2.4.7 | ANTEPECHOS y TECHO ESCALERA EDIF 6 | 4d | 2026-03-31 A | 2026-04-07 A | 439FS+1d | 100% | 2026-04-08 | 2026-04-13 | 4d | start no earlier than 2026-03-31 |
| 441 | 1.1.2.5 | **EDIFICIO 1** | 16d | 2026-03-19 A | 2026-04-13 A |  | 100% | 2026-03-31 | 2026-04-22 | 15d |  |
| 442 | 1.1.2.5.1 | **NIVEL 1 APTO 101** | 5d | 2026-03-19 A | 2026-03-25 A |  | 100% | 2026-03-31 | 2026-04-08 | 5d |  |
| 443 | 1.1.2.5.1.1 | Colocación de malla en muros | 1d | 2026-03-19 A | 2026-03-19 A | 433FS-3d | 100% | 2026-03-31 | 2026-03-31 | 1d |  |
| 444 | 1.1.2.5.1.2 | Instalaciones eléctricas,sanitarias | 1d | 2026-03-20 A | 2026-03-20 A | 443 | 100% | 2026-04-01 | 2026-04-01 | 1d |  |
| 445 | 1.1.2.5.1.3 | Encofrado de muros | 2d | 2026-03-23 A | 2026-03-24 A | 444 | 100% | 2026-04-06 | 2026-04-07 | 2d |  |
| 446 | 1.1.2.5.1.4 | Encofrado de losa | 2d | 2026-03-23 A | 2026-03-24 A | 445SS | 100% | 2026-04-06 | 2026-04-07 | 2d |  |
| 447 | 1.1.2.5.1.5 | Colocacion de malla en losa de entrepiso | 1d | 2026-03-25 A | 2026-03-25 A | 446 | 100% | 2026-04-08 | 2026-04-08 | 1d |  |
| 448 | 1.1.2.5.1.6 | Vaciado de muros y losa | 1d | 2026-03-25 A | 2026-03-25 A | 447SS | 100% | 2026-04-08 | 2026-04-08 | 1d |  |

| ID | WBS | Task | Duration | Start | Finish | Predecessors | Complete | Baseline start | Baseline finish | Baseline duration |
| --- | --- | --- | --- | --- | --- | --- | --- | --- | --- | --- |
| 449 | 1.1.2.5.2 | **NIVEL 1 APTO 102** | 2d | 2026-03-25 A | 2026-03-26 A |  | 100% | 2026-04-08 | 2026-04-09 | 2d |
| 450 | 1.1.2.5.2.1 | Colocación de malla en muros | 1d | 2026-03-25 A | 2026-03-25 A | 442FS-1d | 100% | 2026-04-08 | 2026-04-08 | 1d |
| 451 | 1.1.2.5.2.2 | Instalaciones eléctricas y sanitarias | 1d | 2026-03-25 A | 2026-03-25 A | 450SS | 100% | 2026-04-08 | 2026-04-08 | 1d |
| 452 | 1.1.2.5.2.3 | Encofrado de muros | 1d | 2026-03-26 A | 2026-03-26 A | 451 | 100% | 2026-04-09 | 2026-04-09 | 1d |
| 453 | 1.1.2.5.2.4 | Encofrado de losa | 1d | 2026-03-26 A | 2026-03-26 A | 452SS | 100% | 2026-04-09 | 2026-04-09 | 1d |
| 454 | 1.1.2.5.2.5 | Colocacion de malla en losa de entrepiso | 1d | 2026-03-26 A | 2026-03-26 A | 453SS | 100% | 2026-04-09 | 2026-04-09 | 1d |
| 455 | 1.1.2.5.2.6 | Vaciado de muros y losa | 1d | 2026-03-26 A | 2026-03-26 A | 454SS | 100% | 2026-04-09 | 2026-04-09 | 1d |
| 456 | 1.1.2.5.3 | **NIVEL 2 APTO 201** | 2d | 2026-03-26 A | 2026-03-27 A |  | 100% | 2026-04-09 | 2026-04-10 | 2d |
| 457 | 1.1.2.5.3.1 | Colocación de malla en muros | 1d | 2026-03-26 A | 2026-03-26 A | 449FS-1d | 100% | 2026-04-09 | 2026-04-09 | 1d |
| 458 | 1.1.2.5.3.2 | Instalaciones eléctricas y sanitarias | 1d | 2026-03-26 A | 2026-03-26 A | 457SS | 100% | 2026-04-09 | 2026-04-09 | 1d |
| 459 | 1.1.2.5.3.3 | Encofrado de muros | 1d | 2026-03-27 A | 2026-03-27 A | 458 | 100% | 2026-04-10 | 2026-04-10 | 1d |
| 460 | 1.1.2.5.3.4 | Encofrado de losa | 1d | 2026-03-27 A | 2026-03-27 A | 459SS | 100% | 2026-04-10 | 2026-04-10 | 1d |
| 461 | 1.1.2.5.3.5 | Colocacion de malla en losa de entrepiso | 1d | 2026-03-27 A | 2026-03-27 A | 460SS | 100% | 2026-04-10 | 2026-04-10 | 1d |
| 462 | 1.1.2.5.3.6 | Vaciado de muros y losa | 1d | 2026-03-27 A | 2026-03-27 A | 461SS | 100% | 2026-04-10 | 2026-04-10 | 1d |
| 463 | 1.1.2.5.4 | **NIVEL 2 APTO 202** | 2d | 2026-03-27 A | 2026-03-30 A |  | 100% | 2026-04-10 | 2026-04-13 | 2d |
| 464 | 1.1.2.5.4.1 | Colocaciónde malla en muros | 1d | 2026-03-27 A | 2026-03-27 A | 456FS-1d | 100% | 2026-04-10 | 2026-04-10 | 1d |
| 465 | 1.1.2.5.4.2 | Instalaciones eléctricas y sanitarias | 1d | 2026-03-27 A | 2026-03-27 A | 464SS | 100% | 2026-04-10 | 2026-04-10 | 1d |
| 466 | 1.1.2.5.4.3 | Encofrado de muros | 1d | 2026-03-30 A | 2026-03-30 A | 465 | 100% | 2026-04-13 | 2026-04-13 | 1d |
| 467 | 1.1.2.5.4.4 | Encofrado de losa | 1d | 2026-03-30 A | 2026-03-30 A | 466SS | 100% | 2026-04-13 | 2026-04-13 | 1d |
| 468 | 1.1.2.5.4.5 | Colocacion de malla en losa de entrepiso | 1d | 2026-03-30 A | 2026-03-30 A | 467SS | 100% | 2026-04-13 | 2026-04-13 | 1d |
| 469 | 1.1.2.5.4.6 | Vaciado de muros y losa | 1d | 2026-03-30 A | 2026-03-30 A | 468SS | 100% | 2026-04-13 | 2026-04-13 | 1d |
| 470 | 1.1.2.5.5 | **NIVEL 3 APTO 301** | 2d | 2026-03-30 A | 2026-03-31 A |  | 100% | 2026-04-13 | 2026-04-14 | 2d |
| 471 | 1.1.2.5.5.1 | Colocación de malla en muros | 1d | 2026-03-30 A | 2026-03-30 A | 463FS-1d | 100% | 2026-04-13 | 2026-04-13 | 1d |
| 472 | 1.1.2.5.5.2 | Instalaciones eléctricas y sanitarias | 1d | 2026-03-30 A | 2026-03-30 A | 471SS | 100% | 2026-04-13 | 2026-04-13 | 1d |
| 473 | 1.1.2.5.5.3 | Encofrado de muros | 1d | 2026-03-31 A | 2026-03-31 A | 472 | 100% | 2026-04-14 | 2026-04-14 | 1d |
| 474 | 1.1.2.5.5.4 | Encofrado de losa | 1d | 2026-03-31 A | 2026-03-31 A | 473SS | 100% | 2026-04-14 | 2026-04-14 | 1d |
| 475 | 1.1.2.5.5.5 | Colocacion de malla en losa de entrepiso | 1d | 2026-03-31 A | 2026-03-31 A | 474SS | 100% | 2026-04-14 | 2026-04-14 | 1d |
| 476 | 1.1.2.5.5.6 | Vaciado de muros y losa | 1d | 2026-03-31 A | 2026-03-31 A | 475SS | 100% | 2026-04-14 | 2026-04-14 | 1d |

| ID | WBS | Task | Duration | Start | Finish | Predecessors | Complete | Baseline start | Baseline finish | Baseline duration | Constraint |
| --- | --- | --- | --- | --- | --- | --- | --- | --- | --- | --- | --- |
| 477 | 1.1.2.5.6 | **NIVEL 3 APTO 302** | 3d | 2026-03-31 A | 2026-04-06 A |  | 100% | 2026-04-14 | 2026-04-15 | 2d |  |
| 478 | 1.1.2.5.6.1 | Colocación de malla en muros | 1d | 2026-03-31 A | 2026-03-31 A | 470FS-1d | 100% | 2026-04-14 | 2026-04-14 | 1d |  |
| 479 | 1.1.2.5.6.2 | Instalaciones eléctricas y sanitarias | 1d | 2026-03-31 A | 2026-03-31 A | 478SS | 100% | 2026-04-14 | 2026-04-14 | 1d |  |
| 480 | 1.1.2.5.6.3 | Encofrado de muros | 1d | 2026-04-01 A | 2026-04-01 A | 479 | 100% | 2026-04-15 | 2026-04-15 | 1d |  |
| 481 | 1.1.2.5.6.4 | Encofrado de losa | 1d | 2026-04-01 A | 2026-04-01 A | 480SS | 100% | 2026-04-15 | 2026-04-15 | 1d |  |
| 482 | 1.1.2.5.6.5 | Colocacion de malla en losa de entrepiso | 1d | 2026-04-01 A | 2026-04-01 A | 481SS | 100% | 2026-04-15 | 2026-04-15 | 1d |  |
| 483 | 1.1.2.5.6.6 | Vaciado de muros y losa | 2d | 2026-04-01 A | 2026-04-06 A | 482SS | 100% | 2026-04-15 | 2026-04-15 | 1d |  |
| 484 | 1.1.2.5.7 | ANTEPECHOS y TECHO ESCALERA EDIF 5 | 4d | 2026-04-08 A | 2026-04-13 A | 483FS+1d | 100% | 2026-04-17 | 2026-04-22 | 4d |  |
| 485 | 1.1.2.6 | **EDIFICIO 5** | 19d | 2026-04-06 A | 2026-04-30 A |  | 100% | 2026-04-15 | 2026-05-01 | 13d |  |
| 486 | 1.1.2.6.1 | **NIVEL 1 APTO 101** | 2d | 2026-04-06 A | 2026-04-07 A |  | 100% | 2026-04-15 | 2026-04-17 | 3d |  |
| 487 | 1.1.2.6.1.1 | Colocación de malla en muros | 1d | 2026-04-06 A | 2026-04-06 A | 477FS-1d | 100% | 2026-04-15 | 2026-04-15 | 1d |  |
| 488 | 1.1.2.6.1.2 | Instalaciones eléctricas,sanitarias | 1d | 2026-04-06 A | 2026-04-06 A | 487SS | 100% | 2026-04-15 | 2026-04-15 | 1d |  |
| 489 | 1.1.2.6.1.3 | Encofrado de muros | 2d | 2026-04-06 A | 2026-04-07 A |  | 100% | 2026-04-16 | 2026-04-17 | 2d | start no earlier than 2026-04-06 |
| 490 | 1.1.2.6.1.4 | Encofrado de losa | 2d | 2026-04-06 A | 2026-04-07 A | 489SS | 100% | 2026-04-16 | 2026-04-17 | 2d |  |
| 491 | 1.1.2.6.1.5 | Colocacion de malla en losa de entrepiso | 1d | 2026-04-07 A | 2026-04-07 A | 490SS+1d | 100% | 2026-04-17 | 2026-04-17 | 1d | start no earlier than 2026-04-06 |
| 492 | 1.1.2.6.1.6 | Vaciado de muros y losa | 1d | 2026-04-07 A | 2026-04-07 A | 491SS | 100% | 2026-04-17 | 2026-04-17 | 1d | start no earlier than 2026-04-06 |
| 493 | 1.1.2.6.2 | **NIVEL 1 APTO 102** | 2d | 2026-04-07 A | 2026-04-08 A |  | 100% | 2026-04-17 | 2026-04-20 | 2d |  |
| 494 | 1.1.2.6.2.1 | Colocación de malla en muros | 1d | 2026-04-07 A | 2026-04-07 A | 486FS-1d | 100% | 2026-04-17 | 2026-04-17 | 1d |  |
| 495 | 1.1.2.6.2.2 | Instalaciones eléctricas y sanitarias | 1d | 2026-04-07 A | 2026-04-07 A | 494SS | 100% | 2026-04-17 | 2026-04-17 | 1d |  |
| 496 | 1.1.2.6.2.3 | Encofrado de muros | 1d | 2026-04-08 A | 2026-04-08 A | 495 | 100% | 2026-04-20 | 2026-04-20 | 1d |  |
| 497 | 1.1.2.6.2.4 | Encofrado de losa | 1d | 2026-04-08 A | 2026-04-08 A | 496SS | 100% | 2026-04-20 | 2026-04-20 | 1d |  |
| 498 | 1.1.2.6.2.5 | Colocacion de malla en losa de entrepiso | 1d | 2026-04-08 A | 2026-04-08 A | 497SS | 100% | 2026-04-20 | 2026-04-20 | 1d |  |
| 499 | 1.1.2.6.2.6 | Vaciado de muros y losa | 1d | 2026-04-08 A | 2026-04-08 A | 498SS | 100% | 2026-04-20 | 2026-04-20 | 1d |  |
| 500 | 1.1.2.6.3 | **NIVEL 2 APTO 201** | 2d | 2026-04-08 A | 2026-04-09 A |  | 100% | 2026-04-20 | 2026-04-21 | 2d |  |
| 501 | 1.1.2.6.3.1 | Colocación de malla en muros | 1d | 2026-04-08 A | 2026-04-08 A | 493FS-1d | 100% | 2026-04-20 | 2026-04-20 | 1d |  |
| 502 | 1.1.2.6.3.2 | Instalaciones eléctricas y sanitarias | 1d | 2026-04-08 A | 2026-04-08 A | 501SS | 100% | 2026-04-20 | 2026-04-20 | 1d |  |
| 503 | 1.1.2.6.3.3 | Encofrado de muros | 1d | 2026-04-09 A | 2026-04-09 A | 502 | 100% | 2026-04-21 | 2026-04-21 | 1d |  |
| 504 | 1.1.2.6.3.4 | Encofrado de losa | 1d | 2026-04-09 A | 2026-04-09 A | 503SS | 100% | 2026-04-21 | 2026-04-21 | 1d |  |
| 505 | 1.1.2.6.3.5 | Colocacion de malla en losa de entrepiso | 1d | 2026-04-09 A | 2026-04-09 A | 504SS | 100% | 2026-04-21 | 2026-04-21 | 1d |  |
| 506 | 1.1.2.6.3.6 | Vaciado de muros y losa | 1d | 2026-04-09 A | 2026-04-09 A | 505SS | 100% | 2026-04-21 | 2026-04-21 | 1d |  |

| ID | WBS | Task | Duration | Start | Finish | Predecessors | Complete | Baseline start | Baseline finish | Baseline duration | Constraint |
| --- | --- | --- | --- | --- | --- | --- | --- | --- | --- | --- | --- |
| 507 | 1.1.2.6.4 | **NIVEL 2 APTO 202** | 2d | 2026-04-09 A | 2026-04-10 A |  | 100% | 2026-04-21 | 2026-04-22 | 2d |  |
| 508 | 1.1.2.6.4.1 | Colocaciónde malla en muros | 1d | 2026-04-09 A | 2026-04-09 A | 500FS-1d | 100% | 2026-04-21 | 2026-04-21 | 1d |  |
| 509 | 1.1.2.6.4.2 | Instalaciones eléctricas y sanitarias | 1d | 2026-04-09 A | 2026-04-09 A | 508SS | 100% | 2026-04-21 | 2026-04-21 | 1d |  |
| 510 | 1.1.2.6.4.3 | Encofrado de muros | 1d | 2026-04-10 A | 2026-04-10 A | 509 | 100% | 2026-04-22 | 2026-04-22 | 1d |  |
| 511 | 1.1.2.6.4.4 | Encofrado de losa | 1d | 2026-04-10 A | 2026-04-10 A | 510SS | 100% | 2026-04-22 | 2026-04-22 | 1d |  |
| 512 | 1.1.2.6.4.5 | Colocacion de malla en losa de entrepiso | 1d | 2026-04-10 A | 2026-04-10 A | 511SS | 100% | 2026-04-22 | 2026-04-22 | 1d |  |
| 513 | 1.1.2.6.4.6 | Vaciado de muros y losa | 1d | 2026-04-10 A | 2026-04-10 A | 512SS | 100% | 2026-04-22 | 2026-04-22 | 1d |  |
| 514 | 1.1.2.6.5 | **NIVEL 3 APTO 301** | 2d | 2026-04-10 A | 2026-04-13 A |  | 100% | 2026-04-22 | 2026-04-23 | 2d |  |
| 515 | 1.1.2.6.5.1 | Colocación de malla en muros | 1d | 2026-04-10 A | 2026-04-10 A | 507FS-1d | 100% | 2026-04-22 | 2026-04-22 | 1d |  |
| 516 | 1.1.2.6.5.2 | Instalaciones eléctricas y sanitarias | 1d | 2026-04-10 A | 2026-04-10 A | 515SS | 100% | 2026-04-22 | 2026-04-22 | 1d |  |
| 517 | 1.1.2.6.5.3 | Encofrado de muros | 1d | 2026-04-13 A | 2026-04-13 A | 516 | 100% | 2026-04-23 | 2026-04-23 | 1d |  |
| 518 | 1.1.2.6.5.4 | Encofrado de losa | 1d | 2026-04-13 A | 2026-04-13 A | 517SS | 100% | 2026-04-23 | 2026-04-23 | 1d |  |
| 519 | 1.1.2.6.5.5 | Colocacion de malla en losa de entrepiso | 1d | 2026-04-13 A | 2026-04-13 A | 518SS | 100% | 2026-04-23 | 2026-04-23 | 1d |  |
| 520 | 1.1.2.6.5.6 | Vaciado de muros y losa | 1d | 2026-04-13 A | 2026-04-13 A | 519SS | 100% | 2026-04-23 | 2026-04-23 | 1d |  |
| 521 | 1.1.2.6.6 | **NIVEL 3 APTO 302** | 2d | 2026-04-13 A | 2026-04-14 A |  | 100% | 2026-04-23 | 2026-04-24 | 2d |  |
| 522 | 1.1.2.6.6.1 | Colocación de malla en muros | 1d | 2026-04-13 A | 2026-04-13 A | 514FS-1d | 100% | 2026-04-23 | 2026-04-23 | 1d |  |
| 523 | 1.1.2.6.6.2 | Instalaciones eléctricas y sanitarias | 1d | 2026-04-13 A | 2026-04-13 A | 522SS | 100% | 2026-04-23 | 2026-04-23 | 1d |  |
| 524 | 1.1.2.6.6.3 | Encofrado de muros | 1d | 2026-04-14 A | 2026-04-14 A | 523 | 100% | 2026-04-24 | 2026-04-24 | 1d |  |
| 525 | 1.1.2.6.6.4 | Encofrado de losa | 1d | 2026-04-14 A | 2026-04-14 A | 524SS | 100% | 2026-04-24 | 2026-04-24 | 1d |  |
| 526 | 1.1.2.6.6.5 | Colocacion de malla en losa de entrepiso | 1d | 2026-04-14 A | 2026-04-14 A | 525SS | 100% | 2026-04-24 | 2026-04-24 | 1d |  |
| 527 | 1.1.2.6.6.6 | Vaciado de muros y losa | 1d | 2026-04-14 A | 2026-04-14 A | 526SS | 100% | 2026-04-24 | 2026-04-24 | 1d |  |
| 528 | 1.1.2.6.7 | ANTEPECHOS y TECHO ESCALERA EDIF 4 | 4d | 2026-04-27 A | 2026-04-30 A | 527FS+1d | 100% | 2026-04-28 | 2026-05-01 | 4d | start no earlier than 2026-04-27 |
| 529 | 1.1.2.7 | **EDIFICIO 9** | 17d | 2026-04-13 A | 2026-05-06 A |  | 100% | 2026-04-23 | 2026-05-13 | 14d |  |
| 530 | 1.1.2.7.1 | **NIVEL 1 APTO 101** | 4d | 2026-04-13 A | 2026-04-16 A |  | 100% | 2026-04-23 | 2026-04-28 | 4d |  |
| 531 | 1.1.2.7.1.1 | Colocación de malla en muros | 1d | 2026-04-13 A | 2026-04-13 A | 521FS-2d | 100% | 2026-04-23 | 2026-04-23 | 1d |  |
| 532 | 1.1.2.7.1.2 | Instalaciones eléctricas,sanitarias | 1d | 2026-04-14 A | 2026-04-14 A | 531 | 100% | 2026-04-24 | 2026-04-24 | 1d |  |
| 533 | 1.1.2.7.1.3 | Encofrado de muros | 2d | 2026-04-15 A | 2026-04-16 A | 532 | 100% | 2026-04-27 | 2026-04-28 | 2d |  |
| 534 | 1.1.2.7.1.4 | Encofrado de losa | 2d | 2026-04-15 A | 2026-04-16 A | 533SS | 100% | 2026-04-27 | 2026-04-28 | 2d |  |
| 535 | 1.1.2.7.1.5 | Colocacion de malla en losa de entrepiso | 1d | 2026-04-16 A | 2026-04-16 A | 534SS+1d | 100% | 2026-04-28 | 2026-04-28 | 1d |  |
| 536 | 1.1.2.7.1.6 | Vaciado de muros y losa | 1d | 2026-04-16 A | 2026-04-16 A | 535SS | 100% | 2026-04-28 | 2026-04-28 | 1d |  |

| ID | WBS | Task | Duration | Start | Finish | Predecessors | Complete | Baseline start | Baseline finish | Baseline duration |
| --- | --- | --- | --- | --- | --- | --- | --- | --- | --- | --- |
| 537 | 1.1.2.7.2 | **NIVEL 1 APTO 102** | 2d | 2026-04-16 A | 2026-04-17 A |  | 100% | 2026-04-28 | 2026-04-29 | 2d |
| 538 | 1.1.2.7.2.1 | Colocación de malla en muros | 1d | 2026-04-16 A | 2026-04-16 A | 530FS-1d | 100% | 2026-04-28 | 2026-04-28 | 1d |
| 539 | 1.1.2.7.2.2 | Instalaciones eléctricas y sanitarias | 1d | 2026-04-16 A | 2026-04-16 A | 538SS | 100% | 2026-04-28 | 2026-04-28 | 1d |
| 540 | 1.1.2.7.2.3 | Encofrado de muros | 1d | 2026-04-17 A | 2026-04-17 A | 539 | 100% | 2026-04-29 | 2026-04-29 | 1d |
| 541 | 1.1.2.7.2.4 | Encofrado de losa | 1d | 2026-04-17 A | 2026-04-17 A | 540SS | 100% | 2026-04-29 | 2026-04-29 | 1d |
| 542 | 1.1.2.7.2.5 | Colocacion de malla en losa de entrepiso | 1d | 2026-04-17 A | 2026-04-17 A | 541SS | 100% | 2026-04-29 | 2026-04-29 | 1d |
| 543 | 1.1.2.7.2.6 | Vaciado de muros y losa | 1d | 2026-04-17 A | 2026-04-17 A | 542SS | 100% | 2026-04-29 | 2026-04-29 | 1d |
| 544 | 1.1.2.7.3 | **NIVEL 2 APTO 201** | 2d | 2026-04-17 A | 2026-04-20 A |  | 100% | 2026-04-29 | 2026-04-30 | 2d |
| 545 | 1.1.2.7.3.1 | Colocación de malla en muros | 1d | 2026-04-17 A | 2026-04-17 A | 537FS-1d | 100% | 2026-04-29 | 2026-04-29 | 1d |
| 546 | 1.1.2.7.3.2 | Instalaciones eléctricas y sanitarias | 1d | 2026-04-17 A | 2026-04-17 A | 545SS | 100% | 2026-04-29 | 2026-04-29 | 1d |
| 547 | 1.1.2.7.3.3 | Encofrado de muros | 1d | 2026-04-20 A | 2026-04-20 A | 546 | 100% | 2026-04-30 | 2026-04-30 | 1d |
| 548 | 1.1.2.7.3.4 | Encofrado de losa | 1d | 2026-04-20 A | 2026-04-20 A | 547SS | 100% | 2026-04-30 | 2026-04-30 | 1d |
| 549 | 1.1.2.7.3.5 | Colocacion de malla en losa de entrepiso | 1d | 2026-04-20 A | 2026-04-20 A | 548SS | 100% | 2026-04-30 | 2026-04-30 | 1d |
| 550 | 1.1.2.7.3.6 | Vaciado de muros y losa | 1d | 2026-04-20 A | 2026-04-20 A | 549SS | 100% | 2026-04-30 | 2026-04-30 | 1d |
| 551 | 1.1.2.7.4 | **NIVEL 2 APTO 202** | 2d | 2026-04-20 A | 2026-04-21 A |  | 100% | 2026-04-30 | 2026-05-01 | 2d |
| 552 | 1.1.2.7.4.1 | Colocaciónde malla en muros | 1d | 2026-04-20 A | 2026-04-20 A | 544FS-1d | 100% | 2026-04-30 | 2026-04-30 | 1d |
| 553 | 1.1.2.7.4.2 | Instalaciones eléctricas y sanitarias | 1d | 2026-04-20 A | 2026-04-20 A | 552SS | 100% | 2026-04-30 | 2026-04-30 | 1d |
| 554 | 1.1.2.7.4.3 | Encofrado de muros | 1d | 2026-04-21 A | 2026-04-21 A | 553 | 100% | 2026-05-01 | 2026-05-01 | 1d |
| 555 | 1.1.2.7.4.4 | Encofrado de losa | 1d | 2026-04-21 A | 2026-04-21 A | 554SS | 100% | 2026-05-01 | 2026-05-01 | 1d |
| 556 | 1.1.2.7.4.5 | Colocacion de malla en losa de entrepiso | 1d | 2026-04-21 A | 2026-04-21 A | 555SS | 100% | 2026-05-01 | 2026-05-01 | 1d |
| 557 | 1.1.2.7.4.6 | Vaciado de muros y losa | 1d | 2026-04-21 A | 2026-04-21 A | 556SS | 100% | 2026-05-01 | 2026-05-01 | 1d |
| 558 | 1.1.2.7.5 | **NIVEL 3 APTO 301** | 2d | 2026-04-21 A | 2026-04-22 A |  | 100% | 2026-05-01 | 2026-05-05 | 2d |
| 559 | 1.1.2.7.5.1 | Colocación de malla en muros | 1d | 2026-04-21 A | 2026-04-21 A | 551FS-1d | 100% | 2026-05-01 | 2026-05-01 | 1d |
| 560 | 1.1.2.7.5.2 | Instalaciones eléctricas y sanitarias | 1d | 2026-04-21 A | 2026-04-21 A | 559SS | 100% | 2026-05-01 | 2026-05-01 | 1d |
| 561 | 1.1.2.7.5.3 | Encofrado de muros | 1d | 2026-04-22 A | 2026-04-22 A | 560 | 100% | 2026-05-05 | 2026-05-05 | 1d |
| 562 | 1.1.2.7.5.4 | Encofrado de losa | 1d | 2026-04-22 A | 2026-04-22 A | 561SS | 100% | 2026-05-05 | 2026-05-05 | 1d |
| 563 | 1.1.2.7.5.5 | Colocacion de malla en losa de entrepiso | 1d | 2026-04-22 A | 2026-04-22 A | 562SS | 100% | 2026-05-05 | 2026-05-05 | 1d |
| 564 | 1.1.2.7.5.6 | Vaciado de muros y losa | 1d | 2026-04-22 A | 2026-04-22 A | 563SS | 100% | 2026-05-05 | 2026-05-05 | 1d |

| ID | WBS | Task | Duration | Start | Finish | Predecessors | Complete | Remaining | Baseline start | Baseline finish | Baseline duration | Total slack | Free slack | Constraint |
| --- | --- | --- | --- | --- | --- | --- | --- | --- | --- | --- | --- | --- | --- | --- |
| 565 | 1.1.2.7.6 | **NIVEL 3 APTO 302** | 2d | 2026-04-22 A | 2026-04-23 A |  | 100% |  | 2026-05-05 | 2026-05-06 | 2d |  |  |  |
| 566 | 1.1.2.7.6.1 | Colocación de malla en muros | 1d | 2026-04-22 A | 2026-04-22 A | 558FS-1d | 100% |  | 2026-05-05 | 2026-05-05 | 1d |  |  |  |
| 567 | 1.1.2.7.6.2 | Instalaciones eléctricas y sanitarias | 1d | 2026-04-22 A | 2026-04-22 A | 566SS | 100% |  | 2026-05-05 | 2026-05-05 | 1d |  |  |  |
| 568 | 1.1.2.7.6.3 | Encofrado de muros | 1d | 2026-04-23 A | 2026-04-23 A | 567 | 100% |  | 2026-05-06 | 2026-05-06 | 1d |  |  |  |
| 569 | 1.1.2.7.6.4 | Encofrado de losa | 1d | 2026-04-23 A | 2026-04-23 A | 568SS | 100% |  | 2026-05-06 | 2026-05-06 | 1d |  |  |  |
| 570 | 1.1.2.7.6.5 | Colocacion de malla en losa de entrepiso | 1d | 2026-04-23 A | 2026-04-23 A | 569SS | 100% |  | 2026-05-06 | 2026-05-06 | 1d |  |  |  |
| 571 | 1.1.2.7.6.6 | Vaciado de muros y losa | 1d | 2026-04-23 A | 2026-04-23 A | 570SS | 100% |  | 2026-05-06 | 2026-05-06 | 1d |  |  |  |
| 572 | 1.1.2.7.7 | ANTEPECHOS y TECHO ESCALERA EDIF 9 | 4d | 2026-04-30 A | 2026-05-06 A | 571FS+1d | 100% |  | 2026-05-08 | 2026-05-13 | 4d |  |  | start no earlier than 2026-04-30 |
| 573 | 1.1.2.8 | **EDIFICIO 8** | 51d | 2026-04-23 A | 2026-07-06 |  | 90% | 5.1d | 2026-05-06 | 2026-05-22 | 13d | 189d | 0d |  |
| 574 | 1.1.2.8.1 | **NIVEL 1 APTO 101** | 2d | 2026-04-23 A | 2026-04-24 A |  | 100% |  | 2026-05-06 | 2026-05-08 | 3d |  |  |  |
| 575 | 1.1.2.8.1.1 | Colocación de malla en muros | 1d | 2026-04-23 A | 2026-04-23 A | 565FS-1d | 100% |  | 2026-05-06 | 2026-05-06 | 1d |  |  |  |
| 576 | 1.1.2.8.1.2 | Instalaciones eléctricas,sanitarias | 1d | 2026-04-23 A | 2026-04-23 A | 575SS | 100% |  | 2026-05-06 | 2026-05-06 | 1d |  |  |  |
| 577 | 1.1.2.8.1.3 | Encofrado de muros | 1d | 2026-04-24 A | 2026-04-24 A | 576 | 100% |  | 2026-05-07 | 2026-05-08 | 2d |  |  |  |
| 578 | 1.1.2.8.1.4 | Encofrado de losa | 1d | 2026-04-24 A | 2026-04-24 A | 577SS | 100% |  | 2026-05-07 | 2026-05-08 | 2d |  |  |  |
| 579 | 1.1.2.8.1.5 | Colocacion de malla en losa de entrepiso | 1d | 2026-04-23 A | 2026-04-24 A |  | 100% |  | 2026-05-08 | 2026-05-08 | 1d |  |  | finish no earlier than 2026-04-24 |
| 580 | 1.1.2.8.1.6 | Vaciado de muros y losa | 1d | 2026-04-23 A | 2026-04-24 A | 579SS | 100% |  | 2026-05-08 | 2026-05-08 | 1d |  |  |  |
| 581 | 1.1.2.8.2 | **NIVEL 1 APTO 102** | 2d | 2026-04-24 A | 2026-04-27 A |  | 100% |  | 2026-05-08 | 2026-05-11 | 2d |  |  |  |
| 582 | 1.1.2.8.2.1 | Colocación de malla en muros | 1d | 2026-04-24 A | 2026-04-24 A | 574FS-1d | 100% |  | 2026-05-08 | 2026-05-08 | 1d |  |  |  |
| 583 | 1.1.2.8.2.2 | Instalaciones eléctricas y sanitarias | 1d | 2026-04-24 A | 2026-04-24 A | 582SS | 100% |  | 2026-05-08 | 2026-05-08 | 1d |  |  |  |
| 584 | 1.1.2.8.2.3 | Encofrado de muros | 1d | 2026-04-27 A | 2026-04-27 A | 583 | 100% |  | 2026-05-11 | 2026-05-11 | 1d |  |  |  |
| 585 | 1.1.2.8.2.4 | Encofrado de losa | 1d | 2026-04-27 A | 2026-04-27 A | 584SS | 100% |  | 2026-05-11 | 2026-05-11 | 1d |  |  |  |
| 586 | 1.1.2.8.2.5 | Colocacion de malla en losa de entrepiso | 1d | 2026-04-27 A | 2026-04-27 A | 585SS | 100% |  | 2026-05-11 | 2026-05-11 | 1d |  |  |  |
| 587 | 1.1.2.8.2.6 | Vaciado de muros y losa | 1d | 2026-04-27 A | 2026-04-27 A | 586SS | 100% |  | 2026-05-11 | 2026-05-11 | 1d |  |  |  |
| 588 | 1.1.2.8.3 | **NIVEL 2 APTO 201** | 2d | 2026-04-27 A | 2026-04-28 A |  | 100% |  | 2026-05-11 | 2026-05-12 | 2d |  |  |  |
| 589 | 1.1.2.8.3.1 | Colocación de malla en muros | 1d | 2026-04-27 A | 2026-04-27 A | 581FS-1d | 100% |  | 2026-05-11 | 2026-05-11 | 1d |  |  |  |
| 590 | 1.1.2.8.3.2 | Instalaciones eléctricas y sanitarias | 1d | 2026-04-27 A | 2026-04-27 A | 589SS | 100% |  | 2026-05-11 | 2026-05-11 | 1d |  |  |  |
| 591 | 1.1.2.8.3.3 | Encofrado de muros | 1d | 2026-04-28 A | 2026-04-28 A | 590 | 100% |  | 2026-05-12 | 2026-05-12 | 1d |  |  |  |
| 592 | 1.1.2.8.3.4 | Encofrado de losa | 1d | 2026-04-28 A | 2026-04-28 A | 591SS | 100% |  | 2026-05-12 | 2026-05-12 | 1d |  |  |  |
| 593 | 1.1.2.8.3.5 | Colocacion de malla en losa de entrepiso | 1d | 2026-04-28 A | 2026-04-28 A | 592SS | 100% |  | 2026-05-12 | 2026-05-12 | 1d |  |  |  |
| 594 | 1.1.2.8.3.6 | Vaciado de muros y losa | 1d | 2026-04-28 A | 2026-04-28 A | 593SS | 100% |  | 2026-05-12 | 2026-05-12 | 1d |  |  |  |

| ID | WBS | Task | Duration | Start | Finish | Predecessors | Complete | Remaining | Baseline start | Baseline finish | Baseline duration | Total slack | Free slack | Constraint |
| --- | --- | --- | --- | --- | --- | --- | --- | --- | --- | --- | --- | --- | --- | --- |
| 595 | 1.1.2.8.4 | **NIVEL 2 APTO 202** | 2d | 2026-04-28 A | 2026-04-29 A |  | 100% |  | 2026-05-12 | 2026-05-13 | 2d |  |  |  |
| 596 | 1.1.2.8.4.1 | Colocaciónde malla en muros | 1d | 2026-04-28 A | 2026-04-28 A | 588FS-1d | 100% |  | 2026-05-12 | 2026-05-12 | 1d |  |  |  |
| 597 | 1.1.2.8.4.2 | Instalaciones eléctricas y sanitarias | 1d | 2026-04-28 A | 2026-04-28 A | 596SS | 100% |  | 2026-05-12 | 2026-05-12 | 1d |  |  |  |
| 598 | 1.1.2.8.4.3 | Encofrado de muros | 1d | 2026-04-29 A | 2026-04-29 A | 597 | 100% |  | 2026-05-13 | 2026-05-13 | 1d |  |  |  |
| 599 | 1.1.2.8.4.4 | Encofrado de losa | 1d | 2026-04-29 A | 2026-04-29 A | 598SS | 100% |  | 2026-05-13 | 2026-05-13 | 1d |  |  |  |
| 600 | 1.1.2.8.4.5 | Colocacion de malla en losa de entrepiso | 1d | 2026-04-29 A | 2026-04-29 A | 599SS | 100% |  | 2026-05-13 | 2026-05-13 | 1d |  |  |  |
| 601 | 1.1.2.8.4.6 | Vaciado de muros y losa | 1d | 2026-04-29 A | 2026-04-29 A | 600SS | 100% |  | 2026-05-13 | 2026-05-13 | 1d |  |  |  |
| 602 | 1.1.2.8.5 | **NIVEL 3 APTO 301** | 2d | 2026-04-29 A | 2026-04-30 A |  | 100% |  | 2026-05-13 | 2026-05-14 | 2d |  |  |  |
| 603 | 1.1.2.8.5.1 | Colocación de malla en muros | 1d | 2026-04-29 A | 2026-04-29 A | 595FS-1d | 100% |  | 2026-05-13 | 2026-05-13 | 1d |  |  |  |
| 604 | 1.1.2.8.5.2 | Instalaciones eléctricas y sanitarias | 1d | 2026-04-29 A | 2026-04-29 A | 603SS | 100% |  | 2026-05-13 | 2026-05-13 | 1d |  |  |  |
| 605 | 1.1.2.8.5.3 | Encofrado de muros | 1d | 2026-04-30 A | 2026-04-30 A | 604 | 100% |  | 2026-05-14 | 2026-05-14 | 1d |  |  |  |
| 606 | 1.1.2.8.5.4 | Encofrado de losa | 1d | 2026-04-30 A | 2026-04-30 A | 605SS | 100% |  | 2026-05-14 | 2026-05-14 | 1d |  |  |  |
| 607 | 1.1.2.8.5.5 | Colocacion de malla en losa de entrepiso | 1d | 2026-04-30 A | 2026-04-30 A | 606SS | 100% |  | 2026-05-14 | 2026-05-14 | 1d |  |  |  |
| 608 | 1.1.2.8.5.6 | Vaciado de muros y losa | 1d | 2026-04-30 A | 2026-04-30 A | 607SS | 100% |  | 2026-05-14 | 2026-05-14 | 1d |  |  |  |
| 609 | 1.1.2.8.6 | **NIVEL 3 APTO 302** | 2d | 2026-04-30 A | 2026-05-01 A |  | 100% |  | 2026-05-14 | 2026-05-15 | 2d |  |  |  |
| 610 | 1.1.2.8.6.1 | Colocación de malla en muros | 1d | 2026-04-30 A | 2026-04-30 A | 602FS-1d | 100% |  | 2026-05-14 | 2026-05-14 | 1d |  |  |  |
| 611 | 1.1.2.8.6.2 | Instalaciones eléctricas y sanitarias | 1d | 2026-04-30 A | 2026-04-30 A | 610SS | 100% |  | 2026-05-14 | 2026-05-14 | 1d |  |  |  |
| 612 | 1.1.2.8.6.3 | Encofrado de muros | 1d | 2026-05-01 A | 2026-05-01 A | 611 | 100% |  | 2026-05-15 | 2026-05-15 | 1d |  |  |  |
| 613 | 1.1.2.8.6.4 | Encofrado de losa | 1d | 2026-05-01 A | 2026-05-01 A | 612SS | 100% |  | 2026-05-15 | 2026-05-15 | 1d |  |  |  |
| 614 | 1.1.2.8.6.5 | Colocacion de malla en losa de entrepiso | 1d | 2026-05-01 A | 2026-05-01 A | 613SS | 100% |  | 2026-05-15 | 2026-05-15 | 1d |  |  |  |
| 615 | 1.1.2.8.6.6 | Vaciado de muros y losa | 1d | 2026-05-01 A | 2026-05-01 A | 614SS | 100% |  | 2026-05-15 | 2026-05-15 | 1d |  |  |  |
| 616 | 1.1.2.8.7 | ANTEPECHOS y TECHO ESCALERA EDIF 8 | 4d | 2026-07-01 | 2026-07-06 | 615FS+1d |  |  | 2026-05-19 | 2026-05-22 | 4d | 189d |  | start no earlier than 2026-07-01 |
| 617 | 1.1.2.9 | **EDIFICIO 7** | 46d | 2026-04-30 A | 2026-07-06 |  | 90% | 4.38d | 2026-05-15 | 2026-06-02 | 13d | 189d | 0d |  |
| 618 | 1.1.2.9.1 | **NIVEL 1 APTO 101** | 3d | 2026-04-30 A | 2026-05-05 A |  | 100% |  | 2026-05-15 | 2026-05-19 | 3d |  |  |  |
| 619 | 1.1.2.9.1.1 | Colocación de malla en muros | 1d | 2026-04-30 A | 2026-04-30 A | 615FS-2d | 100% |  | 2026-05-15 | 2026-05-15 | 1d |  |  |  |
| 620 | 1.1.2.9.1.2 | Instalaciones eléctricas,sanitarias | 1d | 2026-04-30 A | 2026-04-30 A | 619SS | 100% |  | 2026-05-15 | 2026-05-15 | 1d |  |  | start no earlier than 2026-04-30 |
| 621 | 1.1.2.9.1.3 | Encofrado de muros | 2d | 2026-05-01 A | 2026-05-05 A | 620 | 100% |  | 2026-05-18 | 2026-05-19 | 2d |  |  |  |
| 622 | 1.1.2.9.1.4 | Encofrado de losa | 2d | 2026-05-01 A | 2026-05-05 A | 621SS | 100% |  | 2026-05-18 | 2026-05-19 | 2d |  |  |  |
| 623 | 1.1.2.9.1.5 | Colocacion de malla en losa de entrepiso | 1d | 2026-05-05 A | 2026-05-05 A | 622SS+1d | 100% |  | 2026-05-19 | 2026-05-19 | 1d |  |  |  |
| 624 | 1.1.2.9.1.6 | Vaciado de muros y losa | 1d | 2026-05-05 A | 2026-05-05 A | 623SS | 100% |  | 2026-05-19 | 2026-05-19 | 1d |  |  |  |

| ID | WBS | Task | Duration | Start | Finish | Predecessors | Complete | Baseline start | Baseline finish | Baseline duration |
| --- | --- | --- | --- | --- | --- | --- | --- | --- | --- | --- |
| 625 | 1.1.2.9.2 | **NIVEL 1 APTO 102** | 2d | 2026-05-05 A | 2026-05-06 A |  | 100% | 2026-05-19 | 2026-05-20 | 2d |
| 626 | 1.1.2.9.2.1 | Colocación de malla en muros | 1d | 2026-05-05 A | 2026-05-05 A | 618FS-1d | 100% | 2026-05-19 | 2026-05-19 | 1d |
| 627 | 1.1.2.9.2.2 | Instalaciones eléctricas y sanitarias | 1d | 2026-05-05 A | 2026-05-05 A | 626SS | 100% | 2026-05-19 | 2026-05-19 | 1d |
| 628 | 1.1.2.9.2.3 | Encofrado de muros | 1d | 2026-05-06 A | 2026-05-06 A | 627 | 100% | 2026-05-20 | 2026-05-20 | 1d |
| 629 | 1.1.2.9.2.4 | Encofrado de losa | 1d | 2026-05-06 A | 2026-05-06 A | 628SS | 100% | 2026-05-20 | 2026-05-20 | 1d |
| 630 | 1.1.2.9.2.5 | Colocacion de malla en losa de entrepiso | 1d | 2026-05-06 A | 2026-05-06 A | 629SS | 100% | 2026-05-20 | 2026-05-20 | 1d |
| 631 | 1.1.2.9.2.6 | Vaciado de muros y losa | 1d | 2026-05-06 A | 2026-05-06 A | 630SS | 100% | 2026-05-20 | 2026-05-20 | 1d |
| 632 | 1.1.2.9.3 | **NIVEL 2 APTO 201** | 2d | 2026-05-06 A | 2026-05-07 A |  | 100% | 2026-05-20 | 2026-05-21 | 2d |
| 633 | 1.1.2.9.3.1 | Colocación de malla en muros | 1d | 2026-05-06 A | 2026-05-06 A | 625FS-1d | 100% | 2026-05-20 | 2026-05-20 | 1d |
| 634 | 1.1.2.9.3.2 | Instalaciones eléctricas y sanitarias | 1d | 2026-05-06 A | 2026-05-06 A | 633SS | 100% | 2026-05-20 | 2026-05-20 | 1d |
| 635 | 1.1.2.9.3.3 | Encofrado de muros | 1d | 2026-05-07 A | 2026-05-07 A | 634 | 100% | 2026-05-21 | 2026-05-21 | 1d |
| 636 | 1.1.2.9.3.4 | Encofrado de losa | 1d | 2026-05-07 A | 2026-05-07 A | 635SS | 100% | 2026-05-21 | 2026-05-21 | 1d |
| 637 | 1.1.2.9.3.5 | Colocacion de malla en losa de entrepiso | 1d | 2026-05-07 A | 2026-05-07 A | 636SS | 100% | 2026-05-21 | 2026-05-21 | 1d |
| 638 | 1.1.2.9.3.6 | Vaciado de muros y losa | 1d | 2026-05-07 A | 2026-05-07 A | 637SS | 100% | 2026-05-21 | 2026-05-21 | 1d |
| 639 | 1.1.2.9.4 | **NIVEL 2 APTO 202** | 2d | 2026-05-07 A | 2026-05-08 A |  | 100% | 2026-05-21 | 2026-05-22 | 2d |
| 640 | 1.1.2.9.4.1 | Colocaciónde malla en muros | 1d | 2026-05-07 A | 2026-05-07 A | 632FS-1d | 100% | 2026-05-21 | 2026-05-21 | 1d |
| 641 | 1.1.2.9.4.2 | Instalaciones eléctricas y sanitarias | 1d | 2026-05-07 A | 2026-05-07 A | 640SS | 100% | 2026-05-21 | 2026-05-21 | 1d |
| 642 | 1.1.2.9.4.3 | Encofrado de muros | 1d | 2026-05-08 A | 2026-05-08 A | 641 | 100% | 2026-05-22 | 2026-05-22 | 1d |
| 643 | 1.1.2.9.4.4 | Encofrado de losa | 1d | 2026-05-08 A | 2026-05-08 A | 642SS | 100% | 2026-05-22 | 2026-05-22 | 1d |
| 644 | 1.1.2.9.4.5 | Colocacion de malla en losa de entrepiso | 1d | 2026-05-08 A | 2026-05-08 A | 643SS | 100% | 2026-05-22 | 2026-05-22 | 1d |
| 645 | 1.1.2.9.4.6 | Vaciado de muros y losa | 1d | 2026-05-08 A | 2026-05-08 A | 644SS | 100% | 2026-05-22 | 2026-05-22 | 1d |
| 646 | 1.1.2.9.5 | **NIVEL 3 APTO 301** | 2d | 2026-05-08 A | 2026-05-11 A |  | 100% | 2026-05-22 | 2026-05-25 | 2d |
| 647 | 1.1.2.9.5.1 | Colocación de malla en muros | 1d | 2026-05-08 A | 2026-05-08 A | 639FS-1d | 100% | 2026-05-22 | 2026-05-22 | 1d |
| 648 | 1.1.2.9.5.2 | Instalaciones eléctricas y sanitarias | 1d | 2026-05-08 A | 2026-05-08 A | 647SS | 100% | 2026-05-22 | 2026-05-22 | 1d |
| 649 | 1.1.2.9.5.3 | Encofrado de muros | 1d | 2026-05-11 A | 2026-05-11 A | 648 | 100% | 2026-05-25 | 2026-05-25 | 1d |
| 650 | 1.1.2.9.5.4 | Encofrado de losa | 1d | 2026-05-11 A | 2026-05-11 A | 649SS | 100% | 2026-05-25 | 2026-05-25 | 1d |
| 651 | 1.1.2.9.5.5 | Colocacion de malla en losa de entrepiso | 1d | 2026-05-11 A | 2026-05-11 A | 650SS | 100% | 2026-05-25 | 2026-05-25 | 1d |
| 652 | 1.1.2.9.5.6 | Vaciado de muros y losa | 1d | 2026-05-11 A | 2026-05-11 A | 651SS | 100% | 2026-05-25 | 2026-05-25 | 1d |

| ID | WBS | Task | Duration | Start | Finish | Predecessors | Complete | Remaining | Baseline start | Baseline finish | Baseline duration | Total slack | Free slack | Constraint |
| --- | --- | --- | --- | --- | --- | --- | --- | --- | --- | --- | --- | --- | --- | --- |
| 653 | 1.1.2.9.6 | **NIVEL 3 APTO 302** | 2d | 2026-05-11 A | 2026-05-12 A |  | 100% |  | 2026-05-25 | 2026-05-26 | 2d |  |  |  |
| 654 | 1.1.2.9.6.1 | Colocación de malla en muros | 1d | 2026-05-11 A | 2026-05-11 A | 646FS-1d | 100% |  | 2026-05-25 | 2026-05-25 | 1d |  |  |  |
| 655 | 1.1.2.9.6.2 | Instalaciones eléctricas y sanitarias | 1d | 2026-05-11 A | 2026-05-11 A | 654SS | 100% |  | 2026-05-25 | 2026-05-25 | 1d |  |  |  |
| 656 | 1.1.2.9.6.3 | Encofrado de muros | 1d | 2026-05-12 A | 2026-05-12 A | 655 | 100% |  | 2026-05-26 | 2026-05-26 | 1d |  |  |  |
| 657 | 1.1.2.9.6.4 | Encofrado de losa | 1d | 2026-05-12 A | 2026-05-12 A | 656SS | 100% |  | 2026-05-26 | 2026-05-26 | 1d |  |  |  |
| 658 | 1.1.2.9.6.5 | Colocacion de malla en losa de entrepiso | 1d | 2026-05-12 A | 2026-05-12 A | 657SS | 100% |  | 2026-05-26 | 2026-05-26 | 1d |  |  |  |
| 659 | 1.1.2.9.6.6 | Vaciado de muros y losa | 1d | 2026-05-12 A | 2026-05-12 A | 658SS | 100% |  | 2026-05-26 | 2026-05-26 | 1d |  |  |  |
| 660 | 1.1.2.9.7 | ANTEPECHOS y TECHO ESCALERA EDIF 7 | 4d | 2026-07-01 | 2026-07-06 | 659FS+1d |  |  | 2026-05-28 | 2026-06-02 | 4d | 189d |  | start no earlier than 2026-07-01 |
| 661 | 1.1.2.10 | **EDIFICIO 12** | 39d | 2026-05-12 A | 2026-07-06 |  | 90% | 3.71d | 2026-05-26 | 2026-06-12 | 13d | 189d | 0d |  |
| 662 | 1.1.2.10.1 | **NIVEL 1 APTO 101** | 3d | 2026-05-12 A | 2026-05-14 A |  | 100% |  | 2026-05-26 | 2026-05-28 | 3d |  |  |  |
| 663 | 1.1.2.10.1.1 | Colocación de malla en muros | 1d | 2026-05-12 A | 2026-05-12 A | 653FS-1d | 100% |  | 2026-05-26 | 2026-05-26 | 1d |  |  |  |
| 664 | 1.1.2.10.1.2 | Instalaciones eléctricas,sanitarias | 1d | 2026-05-12 A | 2026-05-12 A | 663SS | 100% |  | 2026-05-26 | 2026-05-26 | 1d |  |  |  |
| 665 | 1.1.2.10.1.3 | Encofrado de muros | 2d | 2026-05-13 A | 2026-05-14 A | 664 | 100% |  | 2026-05-27 | 2026-05-28 | 2d |  |  |  |
| 666 | 1.1.2.10.1.4 | Encofrado de losa | 2d | 2026-05-13 A | 2026-05-14 A | 665SS | 100% |  | 2026-05-27 | 2026-05-28 | 2d |  |  |  |
| 667 | 1.1.2.10.1.5 | Colocacion de malla en losa de entrepiso | 1d | 2026-05-14 A | 2026-05-14 A | 666SS+1d | 100% |  | 2026-05-28 | 2026-05-28 | 1d |  |  |  |
| 668 | 1.1.2.10.1.6 | Vaciado de muros y losa | 1d | 2026-05-14 A | 2026-05-14 A | 667SS | 100% |  | 2026-05-28 | 2026-05-28 | 1d |  |  |  |
| 669 | 1.1.2.10.2 | **NIVEL 1 APTO 102** | 2d | 2026-05-15 A | 2026-05-18 A |  | 100% |  | 2026-05-28 | 2026-05-29 | 2d |  |  |  |
| 670 | 1.1.2.10.2.1 | Colocación de malla en muros | 1d | 2026-05-15 A | 2026-05-15 A | 662FS-1d | 100% |  | 2026-05-28 | 2026-05-28 | 1d |  |  | start no earlier than 2026-05-15 |
| 671 | 1.1.2.10.2.2 | Instalaciones eléctricas y sanitarias | 1d | 2026-05-15 A | 2026-05-15 A | 670SS | 100% |  | 2026-05-28 | 2026-05-28 | 1d |  |  |  |
| 672 | 1.1.2.10.2.3 | Encofrado de muros | 1d | 2026-05-18 A | 2026-05-18 A | 671 | 100% |  | 2026-05-29 | 2026-05-29 | 1d |  |  |  |
| 673 | 1.1.2.10.2.4 | Encofrado de losa | 1d | 2026-05-18 A | 2026-05-18 A | 672SS | 100% |  | 2026-05-29 | 2026-05-29 | 1d |  |  |  |
| 674 | 1.1.2.10.2.5 | Colocacion de malla en losa de entrepiso | 1d | 2026-05-18 A | 2026-05-18 A | 673SS | 100% |  | 2026-05-29 | 2026-05-29 | 1d |  |  |  |
| 675 | 1.1.2.10.2.6 | Vaciado de muros y losa | 1d | 2026-05-18 A | 2026-05-18 A | 674SS | 100% |  | 2026-05-29 | 2026-05-29 | 1d |  |  |  |
| 676 | 1.1.2.10.3 | **NIVEL 2 APTO 201** | 2d | 2026-05-18 A | 2026-05-19 A |  | 100% |  | 2026-05-29 | 2026-06-01 | 2d |  |  |  |
| 677 | 1.1.2.10.3.1 | Colocación de malla en muros | 1d | 2026-05-18 A | 2026-05-18 A | 669FS-1d | 100% |  | 2026-05-29 | 2026-05-29 | 1d |  |  |  |
| 678 | 1.1.2.10.3.2 | Instalaciones eléctricas y sanitarias | 1d | 2026-05-18 A | 2026-05-18 A | 677SS | 100% |  | 2026-05-29 | 2026-05-29 | 1d |  |  |  |
| 679 | 1.1.2.10.3.3 | Encofrado de muros | 1d | 2026-05-19 A | 2026-05-19 A | 678 | 100% |  | 2026-06-01 | 2026-06-01 | 1d |  |  |  |
| 680 | 1.1.2.10.3.4 | Encofrado de losa | 1d | 2026-05-19 A | 2026-05-19 A | 679SS | 100% |  | 2026-06-01 | 2026-06-01 | 1d |  |  |  |
| 681 | 1.1.2.10.3.5 | Colocacion de malla en losa de entrepiso | 1d | 2026-05-19 A | 2026-05-19 A | 680SS | 100% |  | 2026-06-01 | 2026-06-01 | 1d |  |  |  |
| 682 | 1.1.2.10.3.6 | Vaciado de muros y losa | 1d | 2026-05-19 A | 2026-05-19 A | 681SS | 100% |  | 2026-06-01 | 2026-06-01 | 1d |  |  |  |

| ID | WBS | Task | Duration | Start | Finish | Predecessors | Complete | Remaining | Baseline start | Baseline finish | Baseline duration | Total slack | Free slack | Constraint |
| --- | --- | --- | --- | --- | --- | --- | --- | --- | --- | --- | --- | --- | --- | --- |
| 683 | 1.1.2.10.4 | **NIVEL 2 APTO 202** | 2d | 2026-05-19 A | 2026-05-20 A |  | 100% |  | 2026-06-01 | 2026-06-02 | 2d |  |  |  |
| 684 | 1.1.2.10.4.1 | Colocaciónde malla en muros | 1d | 2026-05-19 A | 2026-05-19 A | 676FS-1d | 100% |  | 2026-06-01 | 2026-06-01 | 1d |  |  |  |
| 685 | 1.1.2.10.4.2 | Instalaciones eléctricas y sanitarias | 1d | 2026-05-19 A | 2026-05-19 A | 684SS | 100% |  | 2026-06-01 | 2026-06-01 | 1d |  |  |  |
| 686 | 1.1.2.10.4.3 | Encofrado de muros | 1d | 2026-05-20 A | 2026-05-20 A | 685 | 100% |  | 2026-06-02 | 2026-06-02 | 1d |  |  |  |
| 687 | 1.1.2.10.4.4 | Encofrado de losa | 1d | 2026-05-20 A | 2026-05-20 A | 686SS | 100% |  | 2026-06-02 | 2026-06-02 | 1d |  |  |  |
| 688 | 1.1.2.10.4.5 | Colocacion de malla en losa de entrepiso | 1d | 2026-05-20 A | 2026-05-20 A | 687SS | 100% |  | 2026-06-02 | 2026-06-02 | 1d |  |  |  |
| 689 | 1.1.2.10.4.6 | Vaciado de muros y losa | 1d | 2026-05-20 A | 2026-05-20 A | 688SS | 100% |  | 2026-06-02 | 2026-06-02 | 1d |  |  |  |
| 690 | 1.1.2.10.5 | **NIVEL 3 APTO 301** | 2d | 2026-05-20 A | 2026-05-21 A |  | 100% |  | 2026-06-02 | 2026-06-03 | 2d |  |  |  |
| 691 | 1.1.2.10.5.1 | Colocación de malla en muros | 1d | 2026-05-20 A | 2026-05-20 A | 683FS-1d | 100% |  | 2026-06-02 | 2026-06-02 | 1d |  |  |  |
| 692 | 1.1.2.10.5.2 | Instalaciones eléctricas y sanitarias | 1d | 2026-05-20 A | 2026-05-20 A | 691SS | 100% |  | 2026-06-02 | 2026-06-02 | 1d |  |  |  |
| 693 | 1.1.2.10.5.3 | Encofrado de muros | 1d | 2026-05-21 A | 2026-05-21 A | 692 | 100% |  | 2026-06-03 | 2026-06-03 | 1d |  |  |  |
| 694 | 1.1.2.10.5.4 | Encofrado de losa | 1d | 2026-05-21 A | 2026-05-21 A | 693SS | 100% |  | 2026-06-03 | 2026-06-03 | 1d |  |  |  |
| 695 | 1.1.2.10.5.5 | Colocacion de malla en losa de entrepiso | 1d | 2026-05-21 A | 2026-05-21 A | 694SS | 100% |  | 2026-06-03 | 2026-06-03 | 1d |  |  |  |
| 696 | 1.1.2.10.5.6 | Vaciado de muros y losa | 1d | 2026-05-21 A | 2026-05-21 A | 695SS | 100% |  | 2026-06-03 | 2026-06-03 | 1d |  |  |  |
| 697 | 1.1.2.10.6 | **NIVEL 3 APTO 302** | 2d | 2026-05-21 A | 2026-05-22 A |  | 100% |  | 2026-06-03 | 2026-06-05 | 2d |  |  |  |
| 698 | 1.1.2.10.6.1 | Colocación de malla en muros | 1d | 2026-05-21 A | 2026-05-21 A | 690FS-1d | 100% |  | 2026-06-03 | 2026-06-03 | 1d |  |  |  |
| 699 | 1.1.2.10.6.2 | Instalaciones eléctricas y sanitarias | 1d | 2026-05-21 A | 2026-05-21 A | 698SS | 100% |  | 2026-06-03 | 2026-06-03 | 1d |  |  |  |
| 700 | 1.1.2.10.6.3 | Encofrado de muros | 1d | 2026-05-22 A | 2026-05-22 A | 699 | 100% |  | 2026-06-05 | 2026-06-05 | 1d |  |  |  |
| 701 | 1.1.2.10.6.4 | Encofrado de losa | 1d | 2026-05-22 A | 2026-05-22 A | 700SS | 100% |  | 2026-06-05 | 2026-06-05 | 1d |  |  |  |
| 702 | 1.1.2.10.6.5 | Colocacion de malla en losa de entrepiso | 1d | 2026-05-22 A | 2026-05-22 A | 701SS | 100% |  | 2026-06-05 | 2026-06-05 | 1d |  |  |  |
| 703 | 1.1.2.10.6.6 | Vaciado de muros y losa | 1d | 2026-05-22 A | 2026-05-22 A | 702SS | 100% |  | 2026-06-05 | 2026-06-05 | 1d |  |  |  |
| 704 | 1.1.2.10.7 | ANTEPECHOS y TECHO ESCALERA EDIF 12 | 4d | 2026-07-01 | 2026-07-06 | 703FS+1d |  |  | 2026-06-09 | 2026-06-12 | 4d | 189d |  | start no earlier than 2026-07-01 |
| 705 | 1.1.2.11 | **EDIFICIO 11** | 33d | 2026-05-20 A | 2026-07-06 |  | 90% | 3.14d | 2026-06-03 | 2026-06-23 | 14d | 98d | 0d |  |
| 706 | 1.1.2.11.1 | **NIVEL 1 APTO 101** | 4d | 2026-05-20 A | 2026-05-25 A |  | 100% |  | 2026-06-03 | 2026-06-09 | 4d |  |  |  |
| 707 | 1.1.2.11.1.1 | Colocación de malla en muros | 1d | 2026-05-20 A | 2026-05-20 A | 697FS-3d | 100% |  | 2026-06-03 | 2026-06-03 | 1d |  |  |  |
| 708 | 1.1.2.11.1.2 | Instalaciones eléctricas,sanitarias | 1d | 2026-05-21 A | 2026-05-21 A | 707 | 100% |  | 2026-06-05 | 2026-06-05 | 1d |  |  |  |
| 709 | 1.1.2.11.1.3 | Encofrado de muros | 2d | 2026-05-22 A | 2026-05-25 A | 708 | 100% |  | 2026-06-08 | 2026-06-09 | 2d |  |  |  |
| 710 | 1.1.2.11.1.4 | Encofrado de losa | 2d | 2026-05-22 A | 2026-05-25 A | 709SS | 100% |  | 2026-06-08 | 2026-06-09 | 2d |  |  |  |
| 711 | 1.1.2.11.1.5 | Colocacion de malla en losa de entrepiso | 1d | 2026-05-25 A | 2026-05-25 A | 710SS+1d | 100% |  | 2026-06-09 | 2026-06-09 | 1d |  |  |  |
| 712 | 1.1.2.11.1.6 | Vaciado de muros y losa | 1d | 2026-05-25 A | 2026-05-25 A | 711SS | 100% |  | 2026-06-09 | 2026-06-09 | 1d |  |  |  |

| ID | WBS | Task | Duration | Start | Finish | Predecessors | Complete | Baseline start | Baseline finish | Baseline duration | Constraint |
| --- | --- | --- | --- | --- | --- | --- | --- | --- | --- | --- | --- |
| 713 | 1.1.2.11.2 | **NIVEL 1 APTO 102** | 2d | 2026-05-25 A | 2026-05-26 A |  | 100% | 2026-06-09 | 2026-06-10 | 2d |  |
| 714 | 1.1.2.11.2.1 | Colocación de malla en muros | 1d | 2026-05-25 A | 2026-05-25 A | 706FS-1d | 100% | 2026-06-09 | 2026-06-09 | 1d |  |
| 715 | 1.1.2.11.2.2 | Instalaciones eléctricas y sanitarias | 1d | 2026-05-25 A | 2026-05-25 A | 714SS | 100% | 2026-06-09 | 2026-06-09 | 1d |  |
| 716 | 1.1.2.11.2.3 | Encofrado de muros | 1d | 2026-05-26 A | 2026-05-26 A | 715 | 100% | 2026-06-10 | 2026-06-10 | 1d |  |
| 717 | 1.1.2.11.2.4 | Encofrado de losa | 1d | 2026-05-26 A | 2026-05-26 A | 716SS | 100% | 2026-06-10 | 2026-06-10 | 1d |  |
| 718 | 1.1.2.11.2.5 | Colocacion de malla en losa de entrepiso | 1d | 2026-05-26 A | 2026-05-26 A | 717SS | 100% | 2026-06-10 | 2026-06-10 | 1d |  |
| 719 | 1.1.2.11.2.6 | Vaciado de muros y losa | 1d | 2026-05-26 A | 2026-05-26 A | 718SS | 100% | 2026-06-10 | 2026-06-10 | 1d |  |
| 720 | 1.1.2.11.3 | **NIVEL 2 APTO 201** | 2d | 2026-05-26 A | 2026-05-27 A |  | 100% | 2026-06-10 | 2026-06-11 | 2d |  |
| 721 | 1.1.2.11.3.1 | Colocación de malla en muros | 1d | 2026-05-26 A | 2026-05-26 A | 713FS-1d | 100% | 2026-06-10 | 2026-06-10 | 1d |  |
| 722 | 1.1.2.11.3.2 | Instalaciones eléctricas y sanitarias | 1d | 2026-05-26 A | 2026-05-26 A | 721SS | 100% | 2026-06-10 | 2026-06-10 | 1d |  |
| 723 | 1.1.2.11.3.3 | Encofrado de muros | 1d | 2026-05-27 A | 2026-05-27 A | 722 | 100% | 2026-06-11 | 2026-06-11 | 1d |  |
| 724 | 1.1.2.11.3.4 | Encofrado de losa | 1d | 2026-05-27 A | 2026-05-27 A | 723SS | 100% | 2026-06-11 | 2026-06-11 | 1d |  |
| 725 | 1.1.2.11.3.5 | Colocacion de malla en losa de entrepiso | 1d | 2026-05-27 A | 2026-05-27 A | 724SS | 100% | 2026-06-11 | 2026-06-11 | 1d |  |
| 726 | 1.1.2.11.3.6 | Vaciado de muros y losa | 1d | 2026-05-27 A | 2026-05-27 A | 725SS | 100% | 2026-06-11 | 2026-06-11 | 1d |  |
| 727 | 1.1.2.11.4 | **NIVEL 2 APTO 202** | 2d | 2026-05-27 A | 2026-05-28 A |  | 100% | 2026-06-11 | 2026-06-12 | 2d |  |
| 728 | 1.1.2.11.4.1 | Colocaciónde malla en muros | 1d | 2026-05-27 A | 2026-05-27 A | 720FS-1d | 100% | 2026-06-11 | 2026-06-11 | 1d |  |
| 729 | 1.1.2.11.4.2 | Instalaciones eléctricas y sanitarias | 1d | 2026-05-27 A | 2026-05-27 A | 728SS | 100% | 2026-06-11 | 2026-06-11 | 1d |  |
| 730 | 1.1.2.11.4.3 | Encofrado de muros | 1d | 2026-05-28 A | 2026-05-28 A | 729 | 100% | 2026-06-12 | 2026-06-12 | 1d |  |
| 731 | 1.1.2.11.4.4 | Encofrado de losa | 1d | 2026-05-28 A | 2026-05-28 A | 730SS | 100% | 2026-06-12 | 2026-06-12 | 1d |  |
| 732 | 1.1.2.11.4.5 | Colocacion de malla en losa de entrepiso | 1d | 2026-05-28 A | 2026-05-28 A | 731SS | 100% | 2026-06-12 | 2026-06-12 | 1d |  |
| 733 | 1.1.2.11.4.6 | Vaciado de muros y losa | 1d | 2026-05-28 A | 2026-05-28 A | 732SS | 100% | 2026-06-12 | 2026-06-12 | 1d |  |
| 734 | 1.1.2.11.5 | **NIVEL 3 APTO 301** | 2d | 2026-05-29 A | 2026-06-01 A |  | 100% | 2026-06-12 | 2026-06-15 | 2d |  |
| 735 | 1.1.2.11.5.1 | Colocación de malla en muros | 1d | 2026-05-29 A | 2026-05-29 A | 727FS-1d | 100% | 2026-06-12 | 2026-06-12 | 1d | start no earlier than 2026-05-29 |
| 736 | 1.1.2.11.5.2 | Instalaciones eléctricas y sanitarias | 1d | 2026-05-29 A | 2026-05-29 A | 735SS | 100% | 2026-06-12 | 2026-06-12 | 1d |  |
| 737 | 1.1.2.11.5.3 | Encofrado de muros | 1d | 2026-06-01 A | 2026-06-01 A | 736 | 100% | 2026-06-15 | 2026-06-15 | 1d |  |
| 738 | 1.1.2.11.5.4 | Encofrado de losa | 1d | 2026-06-01 A | 2026-06-01 A | 737SS | 100% | 2026-06-15 | 2026-06-15 | 1d |  |
| 739 | 1.1.2.11.5.5 | Colocacion de malla en losa de entrepiso | 1d | 2026-06-01 A | 2026-06-01 A | 738SS | 100% | 2026-06-15 | 2026-06-15 | 1d |  |
| 740 | 1.1.2.11.5.6 | Vaciado de muros y losa | 1d | 2026-06-01 A | 2026-06-01 A | 739SS | 100% | 2026-06-15 | 2026-06-15 | 1d |  |

| ID | WBS | Task | Duration | Start | Finish | Predecessors | Complete | Remaining | Baseline start | Baseline finish | Baseline duration | Total slack | Free slack | Constraint |
| --- | --- | --- | --- | --- | --- | --- | --- | --- | --- | --- | --- | --- | --- | --- |
| 741 | 1.1.2.11.6 | **NIVEL 3 APTO 302** | 2d | 2026-06-01 A | 2026-06-02 A |  | 100% |  | 2026-06-15 | 2026-06-16 | 2d |  |  |  |
| 742 | 1.1.2.11.6.1 | Colocación de malla en muros | 1d | 2026-06-01 A | 2026-06-01 A | 734FS-1d | 100% |  | 2026-06-15 | 2026-06-15 | 1d |  |  |  |
| 743 | 1.1.2.11.6.2 | Instalaciones eléctricas y sanitarias | 1d | 2026-06-01 A | 2026-06-01 A | 742SS | 100% |  | 2026-06-15 | 2026-06-15 | 1d |  |  |  |
| 744 | 1.1.2.11.6.3 | Encofrado de muros | 1d | 2026-06-02 A | 2026-06-02 A | 743 | 100% |  | 2026-06-16 | 2026-06-16 | 1d |  |  |  |
| 745 | 1.1.2.11.6.4 | Encofrado de losa | 1d | 2026-06-02 A | 2026-06-02 A | 744SS | 100% |  | 2026-06-16 | 2026-06-16 | 1d |  |  |  |
| 746 | 1.1.2.11.6.5 | Colocacion de malla en losa de entrepiso | 1d | 2026-06-02 A | 2026-06-02 A | 745SS | 100% |  | 2026-06-16 | 2026-06-16 | 1d |  |  |  |
| 747 | 1.1.2.11.6.6 | Vaciado de muros y losa | 1d | 2026-06-02 A | 2026-06-02 A | 746SS | 100% |  | 2026-06-16 | 2026-06-16 | 1d |  |  |  |
| 748 | 1.1.2.11.7 | ANTEPECHOS y TECHO ESCALERA EDIF 11 | 4d | 2026-07-01 | 2026-07-06 | 747FS+1d |  |  | 2026-06-18 | 2026-06-23 | 4d | 98d |  | start no earlier than 2026-07-01 |
| 749 | 1.1.2.12 | **EDIFICIO 10** | 25d | 2026-06-01 A | 2026-07-06 |  | 90% | 2.38d | 2026-06-15 | 2026-07-02 | 14d | 98d | 0d |  |
| 750 | 1.1.2.12.1 | **NIVEL 1 APTO 101** | 4d | 2026-06-01 A | 2026-06-05 A |  | 100% |  | 2026-06-15 | 2026-06-18 | 4d |  |  |  |
| 751 | 1.1.2.12.1.1 | Colocación de malla en muros | 1d | 2026-06-01 A | 2026-06-01 A | 741FS-2d | 100% |  | 2026-06-15 | 2026-06-15 | 1d |  |  |  |
| 752 | 1.1.2.12.1.2 | Instalaciones eléctricas,sanitarias | 1d | 2026-06-02 A | 2026-06-02 A | 751 | 100% |  | 2026-06-16 | 2026-06-16 | 1d |  |  |  |
| 753 | 1.1.2.12.1.3 | Encofrado de muros | 2d | 2026-06-03 A | 2026-06-05 A | 752 | 100% |  | 2026-06-17 | 2026-06-18 | 2d |  |  |  |
| 754 | 1.1.2.12.1.4 | Encofrado de losa | 2d | 2026-06-03 A | 2026-06-05 A | 753SS | 100% |  | 2026-06-17 | 2026-06-18 | 2d |  |  |  |
| 755 | 1.1.2.12.1.5 | Colocacion de malla en losa de entrepiso | 1d | 2026-06-05 A | 2026-06-05 A | 754SS+1d | 100% |  | 2026-06-18 | 2026-06-18 | 1d |  |  |  |
| 756 | 1.1.2.12.1.6 | Vaciado de muros y losa | 1d | 2026-06-05 A | 2026-06-05 A | 755SS | 100% |  | 2026-06-18 | 2026-06-18 | 1d |  |  |  |
| 757 | 1.1.2.12.2 | **NIVEL 1 APTO 102** | 2d | 2026-06-05 A | 2026-06-08 A |  | 100% |  | 2026-06-18 | 2026-06-19 | 2d |  |  |  |
| 758 | 1.1.2.12.2.1 | Colocación de malla en muros | 1d | 2026-06-05 A | 2026-06-05 A | 750FS-1d | 100% |  | 2026-06-18 | 2026-06-18 | 1d |  |  |  |
| 759 | 1.1.2.12.2.2 | Instalaciones eléctricas y sanitarias | 1d | 2026-06-05 A | 2026-06-05 A | 758SS | 100% |  | 2026-06-18 | 2026-06-18 | 1d |  |  |  |
| 760 | 1.1.2.12.2.3 | Encofrado de muros | 1d | 2026-06-08 A | 2026-06-08 A | 759 | 100% |  | 2026-06-19 | 2026-06-19 | 1d |  |  |  |
| 761 | 1.1.2.12.2.4 | Encofrado de losa | 1d | 2026-06-08 A | 2026-06-08 A | 760SS | 100% |  | 2026-06-19 | 2026-06-19 | 1d |  |  |  |
| 762 | 1.1.2.12.2.5 | Colocacion de malla en losa de entrepiso | 1d | 2026-06-08 A | 2026-06-08 A | 761SS | 100% |  | 2026-06-19 | 2026-06-19 | 1d |  |  |  |
| 763 | 1.1.2.12.2.6 | Vaciado de muros y losa | 1d | 2026-06-08 A | 2026-06-08 A | 762SS | 100% |  | 2026-06-19 | 2026-06-19 | 1d |  |  |  |
| 764 | 1.1.2.12.3 | **NIVEL 2 APTO 201** | 2d | 2026-06-08 A | 2026-06-09 A |  | 100% |  | 2026-06-19 | 2026-06-22 | 2d |  |  |  |
| 765 | 1.1.2.12.3.1 | Colocación de malla en muros | 1d | 2026-06-08 A | 2026-06-08 A | 757FS-1d | 100% |  | 2026-06-19 | 2026-06-19 | 1d |  |  |  |
| 766 | 1.1.2.12.3.2 | Instalaciones eléctricas y sanitarias | 1d | 2026-06-08 A | 2026-06-08 A | 765SS | 100% |  | 2026-06-19 | 2026-06-19 | 1d |  |  |  |
| 767 | 1.1.2.12.3.3 | Encofrado de muros | 1d | 2026-06-09 A | 2026-06-09 A | 766 | 100% |  | 2026-06-22 | 2026-06-22 | 1d |  |  |  |
| 768 | 1.1.2.12.3.4 | Encofrado de losa | 1d | 2026-06-09 A | 2026-06-09 A | 767SS | 100% |  | 2026-06-22 | 2026-06-22 | 1d |  |  |  |
| 769 | 1.1.2.12.3.5 | Colocacion de malla en losa de entrepiso | 1d | 2026-06-09 A | 2026-06-09 A | 768SS | 100% |  | 2026-06-22 | 2026-06-22 | 1d |  |  |  |
| 770 | 1.1.2.12.3.6 | Vaciado de muros y losa | 1d | 2026-06-09 A | 2026-06-09 A | 769SS | 100% |  | 2026-06-22 | 2026-06-22 | 1d |  |  |  |

| ID | WBS | Task | Duration | Start | Finish | Predecessors | Complete | Baseline start | Baseline finish | Baseline duration | Total slack | Constraint |
| --- | --- | --- | --- | --- | --- | --- | --- | --- | --- | --- | --- | --- |
| 771 | 1.1.2.12.4 | **NIVEL 2 APTO 202** | 2d | 2026-06-09 A | 2026-06-10 A |  | 100% | 2026-06-22 | 2026-06-23 | 2d |  |  |
| 772 | 1.1.2.12.4.1 | Colocaciónde malla en muros | 1d | 2026-06-09 A | 2026-06-09 A | 764FS-1d | 100% | 2026-06-22 | 2026-06-22 | 1d |  |  |
| 773 | 1.1.2.12.4.2 | Instalaciones eléctricas y sanitarias | 1d | 2026-06-09 A | 2026-06-09 A | 772SS | 100% | 2026-06-22 | 2026-06-22 | 1d |  |  |
| 774 | 1.1.2.12.4.3 | Encofrado de muros | 1d | 2026-06-10 A | 2026-06-10 A | 773 | 100% | 2026-06-23 | 2026-06-23 | 1d |  |  |
| 775 | 1.1.2.12.4.4 | Encofrado de losa | 1d | 2026-06-10 A | 2026-06-10 A | 774SS | 100% | 2026-06-23 | 2026-06-23 | 1d |  |  |
| 776 | 1.1.2.12.4.5 | Colocacion de malla en losa de entrepiso | 1d | 2026-06-10 A | 2026-06-10 A | 775SS | 100% | 2026-06-23 | 2026-06-23 | 1d |  |  |
| 777 | 1.1.2.12.4.6 | Vaciado de muros y losa | 1d | 2026-06-10 A | 2026-06-10 A | 776SS | 100% | 2026-06-23 | 2026-06-23 | 1d |  |  |
| 778 | 1.1.2.12.5 | **NIVEL 3 APTO 301** | 2d | 2026-06-10 A | 2026-06-11 A |  | 100% | 2026-06-23 | 2026-06-24 | 2d |  |  |
| 779 | 1.1.2.12.5.1 | Colocación de malla en muros | 1d | 2026-06-10 A | 2026-06-10 A | 771FS-1d | 100% | 2026-06-23 | 2026-06-23 | 1d |  |  |
| 780 | 1.1.2.12.5.2 | Instalaciones eléctricas y sanitarias | 1d | 2026-06-10 A | 2026-06-10 A | 779SS | 100% | 2026-06-23 | 2026-06-23 | 1d |  |  |
| 781 | 1.1.2.12.5.3 | Encofrado de muros | 1d | 2026-06-11 A | 2026-06-11 A | 780 | 100% | 2026-06-24 | 2026-06-24 | 1d |  |  |
| 782 | 1.1.2.12.5.4 | Encofrado de losa | 1d | 2026-06-11 A | 2026-06-11 A | 781SS | 100% | 2026-06-24 | 2026-06-24 | 1d |  |  |
| 783 | 1.1.2.12.5.5 | Colocacion de malla en losa de entrepiso | 1d | 2026-06-11 A | 2026-06-11 A | 782SS | 100% | 2026-06-24 | 2026-06-24 | 1d |  |  |
| 784 | 1.1.2.12.5.6 | Vaciado de muros y losa | 1d | 2026-06-11 A | 2026-06-11 A | 783SS | 100% | 2026-06-24 | 2026-06-24 | 1d |  |  |
| 785 | 1.1.2.12.6 | **NIVEL 3 APTO 302** | 2d | 2026-06-11 A | 2026-06-12 A |  | 100% | 2026-06-24 | 2026-06-25 | 2d |  |  |
| 786 | 1.1.2.12.6.1 | Colocación de malla en muros | 1d | 2026-06-11 A | 2026-06-11 A | 778FS-1d | 100% | 2026-06-24 | 2026-06-24 | 1d |  |  |
| 787 | 1.1.2.12.6.2 | Instalaciones eléctricas y sanitarias | 1d | 2026-06-11 A | 2026-06-11 A | 786SS | 100% | 2026-06-24 | 2026-06-24 | 1d |  |  |
| 788 | 1.1.2.12.6.3 | Encofrado de muros | 1d | 2026-06-12 A | 2026-06-12 A | 787 | 100% | 2026-06-25 | 2026-06-25 | 1d |  |  |
| 789 | 1.1.2.12.6.4 | Encofrado de losa | 1d | 2026-06-12 A | 2026-06-12 A | 788SS | 100% | 2026-06-25 | 2026-06-25 | 1d |  |  |
| 790 | 1.1.2.12.6.5 | Colocacion de malla en losa de entrepiso | 1d | 2026-06-12 A | 2026-06-12 A | 789SS | 100% | 2026-06-25 | 2026-06-25 | 1d |  |  |
| 791 | 1.1.2.12.6.6 | Vaciado de muros y losa | 1d | 2026-06-12 A | 2026-06-12 A | 790SS | 100% | 2026-06-25 | 2026-06-25 | 1d |  |  |
| 792 | 1.1.2.12.7 | ANTEPECHOS y TECHO ESCALERA EDIF 10 | 4d | 2026-07-01 | 2026-07-06 | 791FS+1d |  | 2026-06-29 | 2026-07-02 | 4d | 98d | start no earlier than 2026-07-01 |
| 793 | 1.1.2.13 | **EDIFICIO 15** | 14d | 2026-07-08 | 2026-07-27 |  |  | 2026-06-24 | 2026-07-13 | 14d | 0d |  |
| 794 | 1.1.2.13.1 | **NIVEL 1 APTO 101** | 4d | 2026-07-08 | 2026-07-13 |  |  | 2026-06-24 | 2026-06-29 | 4d | 0d |  |
| 795 | 1.1.2.13.1.1 | Colocación de malla en muros | 1d | 2026-07-08 | 2026-07-08 | 785FS-2d |  | 2026-06-24 | 2026-06-24 | 1d | 0d | start no earlier than 2026-07-08 |
| 796 | 1.1.2.13.1.2 | Instalaciones eléctricas,sanitarias | 1d | 2026-07-09 | 2026-07-09 | 795 |  | 2026-06-25 | 2026-06-25 | 1d | 0d |  |
| 797 | 1.1.2.13.1.3 | Encofrado de muros | 2d | 2026-07-10 | 2026-07-13 | 796 |  | 2026-06-26 | 2026-06-29 | 2d | 0d |  |
| 798 | 1.1.2.13.1.4 | Encofrado de losa | 2d | 2026-07-10 | 2026-07-13 | 797SS |  | 2026-06-26 | 2026-06-29 | 2d | 0d |  |
| 799 | 1.1.2.13.1.5 | Colocacion de malla en losa de entrepiso | 1d | 2026-07-13 | 2026-07-13 | 798SS+1d |  | 2026-06-29 | 2026-06-29 | 1d | 0d |  |
| 800 | 1.1.2.13.1.6 | Vaciado de muros y losa | 1d | 2026-07-13 | 2026-07-13 | 799SS |  | 2026-06-29 | 2026-06-29 | 1d | 0d |  |

| ID | WBS | Task | Duration | Start | Finish | Predecessors | Baseline start | Baseline finish | Baseline duration | Total slack |
| --- | --- | --- | --- | --- | --- | --- | --- | --- | --- | --- |
| 801 | 1.1.2.13.2 | **NIVEL 1 APTO 102** | 2d | 2026-07-13 | 2026-07-14 |  | 2026-06-29 | 2026-06-30 | 2d | 0d |
| 802 | 1.1.2.13.2.1 | Colocación de malla en muros | 1d | 2026-07-13 | 2026-07-13 | 794FS-1d | 2026-06-29 | 2026-06-29 | 1d | 0d |
| 803 | 1.1.2.13.2.2 | Instalaciones eléctricas y sanitarias | 1d | 2026-07-13 | 2026-07-13 | 802SS | 2026-06-29 | 2026-06-29 | 1d | 0d |
| 804 | 1.1.2.13.2.3 | Encofrado de muros | 1d | 2026-07-14 | 2026-07-14 | 803 | 2026-06-30 | 2026-06-30 | 1d | 0d |
| 805 | 1.1.2.13.2.4 | Encofrado de losa | 1d | 2026-07-14 | 2026-07-14 | 804SS | 2026-06-30 | 2026-06-30 | 1d | 0d |
| 806 | 1.1.2.13.2.5 | Colocacion de malla en losa de entrepiso | 1d | 2026-07-14 | 2026-07-14 | 805SS | 2026-06-30 | 2026-06-30 | 1d | 0d |
| 807 | 1.1.2.13.2.6 | Vaciado de muros y losa | 1d | 2026-07-14 | 2026-07-14 | 806SS | 2026-06-30 | 2026-06-30 | 1d | 0d |
| 808 | 1.1.2.13.3 | **NIVEL 2 APTO 201** | 2d | 2026-07-14 | 2026-07-15 |  | 2026-06-30 | 2026-07-01 | 2d | 0d |
| 809 | 1.1.2.13.3.1 | Colocación de malla en muros | 1d | 2026-07-14 | 2026-07-14 | 801FS-1d | 2026-06-30 | 2026-06-30 | 1d | 0d |
| 810 | 1.1.2.13.3.2 | Instalaciones eléctricas y sanitarias | 1d | 2026-07-14 | 2026-07-14 | 809SS | 2026-06-30 | 2026-06-30 | 1d | 0d |
| 811 | 1.1.2.13.3.3 | Encofrado de muros | 1d | 2026-07-15 | 2026-07-15 | 810 | 2026-07-01 | 2026-07-01 | 1d | 0d |
| 812 | 1.1.2.13.3.4 | Encofrado de losa | 1d | 2026-07-15 | 2026-07-15 | 811SS | 2026-07-01 | 2026-07-01 | 1d | 0d |
| 813 | 1.1.2.13.3.5 | Colocacion de malla en losa de entrepiso | 1d | 2026-07-15 | 2026-07-15 | 812SS | 2026-07-01 | 2026-07-01 | 1d | 0d |
| 814 | 1.1.2.13.3.6 | Vaciado de muros y losa | 1d | 2026-07-15 | 2026-07-15 | 813SS | 2026-07-01 | 2026-07-01 | 1d | 0d |
| 815 | 1.1.2.13.4 | **NIVEL 2 APTO 202** | 2d | 2026-07-15 | 2026-07-16 |  | 2026-07-01 | 2026-07-02 | 2d | 0d |
| 816 | 1.1.2.13.4.1 | Colocaciónde malla en muros | 1d | 2026-07-15 | 2026-07-15 | 808FS-1d | 2026-07-01 | 2026-07-01 | 1d | 0d |
| 817 | 1.1.2.13.4.2 | Instalaciones eléctricas y sanitarias | 1d | 2026-07-15 | 2026-07-15 | 816SS | 2026-07-01 | 2026-07-01 | 1d | 0d |
| 818 | 1.1.2.13.4.3 | Encofrado de muros | 1d | 2026-07-16 | 2026-07-16 | 817 | 2026-07-02 | 2026-07-02 | 1d | 0d |
| 819 | 1.1.2.13.4.4 | Encofrado de losa | 1d | 2026-07-16 | 2026-07-16 | 818SS | 2026-07-02 | 2026-07-02 | 1d | 0d |
| 820 | 1.1.2.13.4.5 | Colocacion de malla en losa de entrepiso | 1d | 2026-07-16 | 2026-07-16 | 819SS | 2026-07-02 | 2026-07-02 | 1d | 0d |
| 821 | 1.1.2.13.4.6 | Vaciado de muros y losa | 1d | 2026-07-16 | 2026-07-16 | 820SS | 2026-07-02 | 2026-07-02 | 1d | 0d |
| 822 | 1.1.2.13.5 | **NIVEL 3 APTO 301** | 2d | 2026-07-16 | 2026-07-17 |  | 2026-07-02 | 2026-07-03 | 2d | 0d |
| 823 | 1.1.2.13.5.1 | Colocación de malla en muros | 1d | 2026-07-16 | 2026-07-16 | 815FS-1d | 2026-07-02 | 2026-07-02 | 1d | 0d |
| 824 | 1.1.2.13.5.2 | Instalaciones eléctricas y sanitarias | 1d | 2026-07-16 | 2026-07-16 | 823SS | 2026-07-02 | 2026-07-02 | 1d | 0d |
| 825 | 1.1.2.13.5.3 | Encofrado de muros | 1d | 2026-07-17 | 2026-07-17 | 824 | 2026-07-03 | 2026-07-03 | 1d | 0d |
| 826 | 1.1.2.13.5.4 | Encofrado de losa | 1d | 2026-07-17 | 2026-07-17 | 825SS | 2026-07-03 | 2026-07-03 | 1d | 0d |
| 827 | 1.1.2.13.5.5 | Colocacion de malla en losa de entrepiso | 1d | 2026-07-17 | 2026-07-17 | 826SS | 2026-07-03 | 2026-07-03 | 1d | 0d |
| 828 | 1.1.2.13.5.6 | Vaciado de muros y losa | 1d | 2026-07-17 | 2026-07-17 | 827SS | 2026-07-03 | 2026-07-03 | 1d | 0d |

| ID | WBS | Task | Duration | Start | Finish | Predecessors | Baseline start | Baseline finish | Baseline duration | Total slack |
| --- | --- | --- | --- | --- | --- | --- | --- | --- | --- | --- |
| 829 | 1.1.2.13.6 | **NIVEL 3 APTO 302** | 2d | 2026-07-17 | 2026-07-20 |  | 2026-07-03 | 2026-07-06 | 2d | 0d |
| 830 | 1.1.2.13.6.1 | Colocación de malla en muros | 1d | 2026-07-17 | 2026-07-17 | 822FS-1d | 2026-07-03 | 2026-07-03 | 1d | 0d |
| 831 | 1.1.2.13.6.2 | Instalaciones eléctricas y sanitarias | 1d | 2026-07-17 | 2026-07-17 | 830SS | 2026-07-03 | 2026-07-03 | 1d | 0d |
| 832 | 1.1.2.13.6.3 | Encofrado de muros | 1d | 2026-07-20 | 2026-07-20 | 831 | 2026-07-06 | 2026-07-06 | 1d | 0d |
| 833 | 1.1.2.13.6.4 | Encofrado de losa | 1d | 2026-07-20 | 2026-07-20 | 832SS | 2026-07-06 | 2026-07-06 | 1d | 0d |
| 834 | 1.1.2.13.6.5 | Colocacion de malla en losa de entrepiso | 1d | 2026-07-20 | 2026-07-20 | 833SS | 2026-07-06 | 2026-07-06 | 1d | 0d |
| 835 | 1.1.2.13.6.6 | Vaciado de muros y losa | 1d | 2026-07-20 | 2026-07-20 | 834SS | 2026-07-06 | 2026-07-06 | 1d | 0d |
| 836 | 1.1.2.13.7 | ANTEPECHOS y TECHO ESCALERA EDIF 15 | 4d | 2026-07-22 | 2026-07-27 | 835FS+1d | 2026-07-08 | 2026-07-13 | 4d | 83d |
| 837 | 1.1.2.14 | **EDIFICIO 14** | 13d | 2026-07-20 | 2026-08-05 |  | 2026-07-06 | 2026-07-22 | 13d | 0d |
| 838 | 1.1.2.14.1 | **NIVEL 1 APTO 101** | 3d | 2026-07-20 | 2026-07-22 |  | 2026-07-06 | 2026-07-08 | 3d | 0d |
| 839 | 1.1.2.14.1.1 | Colocación de malla en muros | 1d | 2026-07-20 | 2026-07-20 | 829FS-1d | 2026-07-06 | 2026-07-06 | 1d | 0d |
| 840 | 1.1.2.14.1.2 | Instalaciones eléctricas,sanitarias | 1d | 2026-07-20 | 2026-07-20 | 839SS | 2026-07-06 | 2026-07-06 | 1d | 0d |
| 841 | 1.1.2.14.1.3 | Encofrado de muros | 2d | 2026-07-21 | 2026-07-22 | 840 | 2026-07-07 | 2026-07-08 | 2d | 0d |
| 842 | 1.1.2.14.1.4 | Encofrado de losa | 2d | 2026-07-21 | 2026-07-22 | 841SS | 2026-07-07 | 2026-07-08 | 2d | 0d |
| 843 | 1.1.2.14.1.5 | Colocacion de malla en losa de entrepiso | 1d | 2026-07-22 | 2026-07-22 | 842SS+1d | 2026-07-08 | 2026-07-08 | 1d | 0d |
| 844 | 1.1.2.14.1.6 | Vaciado de muros y losa | 1d | 2026-07-22 | 2026-07-22 | 843SS | 2026-07-08 | 2026-07-08 | 1d | 0d |
| 845 | 1.1.2.14.2 | **NIVEL 1 APTO 102** | 2d | 2026-07-22 | 2026-07-23 |  | 2026-07-08 | 2026-07-09 | 2d | 0d |
| 846 | 1.1.2.14.2.1 | Colocación de malla en muros | 1d | 2026-07-22 | 2026-07-22 | 838FS-1d | 2026-07-08 | 2026-07-08 | 1d | 0d |
| 847 | 1.1.2.14.2.2 | Instalaciones eléctricas y sanitarias | 1d | 2026-07-22 | 2026-07-22 | 846SS | 2026-07-08 | 2026-07-08 | 1d | 0d |
| 848 | 1.1.2.14.2.3 | Encofrado de muros | 1d | 2026-07-23 | 2026-07-23 | 847 | 2026-07-09 | 2026-07-09 | 1d | 0d |
| 849 | 1.1.2.14.2.4 | Encofrado de losa | 1d | 2026-07-23 | 2026-07-23 | 848SS | 2026-07-09 | 2026-07-09 | 1d | 0d |
| 850 | 1.1.2.14.2.5 | Colocacion de malla en losa de entrepiso | 1d | 2026-07-23 | 2026-07-23 | 849SS | 2026-07-09 | 2026-07-09 | 1d | 0d |
| 851 | 1.1.2.14.2.6 | Vaciado de muros y losa | 1d | 2026-07-23 | 2026-07-23 | 850SS | 2026-07-09 | 2026-07-09 | 1d | 0d |
| 852 | 1.1.2.14.3 | **NIVEL 2 APTO 201** | 2d | 2026-07-23 | 2026-07-24 |  | 2026-07-09 | 2026-07-10 | 2d | 0d |
| 853 | 1.1.2.14.3.1 | Colocación de malla en muros | 1d | 2026-07-23 | 2026-07-23 | 845FS-1d | 2026-07-09 | 2026-07-09 | 1d | 0d |
| 854 | 1.1.2.14.3.2 | Instalaciones eléctricas y sanitarias | 1d | 2026-07-23 | 2026-07-23 | 853SS | 2026-07-09 | 2026-07-09 | 1d | 0d |
| 855 | 1.1.2.14.3.3 | Encofrado de muros | 1d | 2026-07-24 | 2026-07-24 | 854 | 2026-07-10 | 2026-07-10 | 1d | 0d |
| 856 | 1.1.2.14.3.4 | Encofrado de losa | 1d | 2026-07-24 | 2026-07-24 | 855SS | 2026-07-10 | 2026-07-10 | 1d | 0d |
| 857 | 1.1.2.14.3.5 | Colocacion de malla en losa de entrepiso | 1d | 2026-07-24 | 2026-07-24 | 856SS | 2026-07-10 | 2026-07-10 | 1d | 0d |
| 858 | 1.1.2.14.3.6 | Vaciado de muros y losa | 1d | 2026-07-24 | 2026-07-24 | 857SS | 2026-07-10 | 2026-07-10 | 1d | 0d |

| ID | WBS | Task | Duration | Start | Finish | Predecessors | Baseline start | Baseline finish | Baseline duration | Total slack |
| --- | --- | --- | --- | --- | --- | --- | --- | --- | --- | --- |
| 859 | 1.1.2.14.4 | **NIVEL 2 APTO 202** | 2d | 2026-07-24 | 2026-07-27 |  | 2026-07-10 | 2026-07-13 | 2d | 0d |
| 860 | 1.1.2.14.4.1 | Colocaciónde malla en muros | 1d | 2026-07-24 | 2026-07-24 | 852FS-1d | 2026-07-10 | 2026-07-10 | 1d | 0d |
| 861 | 1.1.2.14.4.2 | Instalaciones eléctricas y sanitarias | 1d | 2026-07-24 | 2026-07-24 | 860SS | 2026-07-10 | 2026-07-10 | 1d | 0d |
| 862 | 1.1.2.14.4.3 | Encofrado de muros | 1d | 2026-07-27 | 2026-07-27 | 861 | 2026-07-13 | 2026-07-13 | 1d | 0d |
| 863 | 1.1.2.14.4.4 | Encofrado de losa | 1d | 2026-07-27 | 2026-07-27 | 862SS | 2026-07-13 | 2026-07-13 | 1d | 0d |
| 864 | 1.1.2.14.4.5 | Colocacion de malla en losa de entrepiso | 1d | 2026-07-27 | 2026-07-27 | 863SS | 2026-07-13 | 2026-07-13 | 1d | 0d |
| 865 | 1.1.2.14.4.6 | Vaciado de muros y losa | 1d | 2026-07-27 | 2026-07-27 | 864SS | 2026-07-13 | 2026-07-13 | 1d | 0d |
| 866 | 1.1.2.14.5 | **NIVEL 3 APTO 301** | 2d | 2026-07-27 | 2026-07-28 |  | 2026-07-13 | 2026-07-14 | 2d | 0d |
| 867 | 1.1.2.14.5.1 | Colocación de malla en muros | 1d | 2026-07-27 | 2026-07-27 | 859FS-1d | 2026-07-13 | 2026-07-13 | 1d | 0d |
| 868 | 1.1.2.14.5.2 | Instalaciones eléctricas y sanitarias | 1d | 2026-07-27 | 2026-07-27 | 867SS | 2026-07-13 | 2026-07-13 | 1d | 0d |
| 869 | 1.1.2.14.5.3 | Encofrado de muros | 1d | 2026-07-28 | 2026-07-28 | 868 | 2026-07-14 | 2026-07-14 | 1d | 0d |
| 870 | 1.1.2.14.5.4 | Encofrado de losa | 1d | 2026-07-28 | 2026-07-28 | 869SS | 2026-07-14 | 2026-07-14 | 1d | 0d |
| 871 | 1.1.2.14.5.5 | Colocacion de malla en losa de entrepiso | 1d | 2026-07-28 | 2026-07-28 | 870SS | 2026-07-14 | 2026-07-14 | 1d | 0d |
| 872 | 1.1.2.14.5.6 | Vaciado de muros y losa | 1d | 2026-07-28 | 2026-07-28 | 871SS | 2026-07-14 | 2026-07-14 | 1d | 0d |
| 873 | 1.1.2.14.6 | **NIVEL 3 APTO 302** | 2d | 2026-07-28 | 2026-07-29 |  | 2026-07-14 | 2026-07-15 | 2d | 0d |
| 874 | 1.1.2.14.6.1 | Colocación de malla en muros | 1d | 2026-07-28 | 2026-07-28 | 866FS-1d | 2026-07-14 | 2026-07-14 | 1d | 0d |
| 875 | 1.1.2.14.6.2 | Instalaciones eléctricas y sanitarias | 1d | 2026-07-28 | 2026-07-28 | 874SS | 2026-07-14 | 2026-07-14 | 1d | 0d |
| 876 | 1.1.2.14.6.3 | Encofrado de muros | 1d | 2026-07-29 | 2026-07-29 | 875 | 2026-07-15 | 2026-07-15 | 1d | 0d |
| 877 | 1.1.2.14.6.4 | Encofrado de losa | 1d | 2026-07-29 | 2026-07-29 | 876SS | 2026-07-15 | 2026-07-15 | 1d | 0d |
| 878 | 1.1.2.14.6.5 | Colocacion de malla en losa de entrepiso | 1d | 2026-07-29 | 2026-07-29 | 877SS | 2026-07-15 | 2026-07-15 | 1d | 0d |
| 879 | 1.1.2.14.6.6 | Vaciado de muros y losa | 1d | 2026-07-29 | 2026-07-29 | 878SS | 2026-07-15 | 2026-07-15 | 1d | 0d |
| 880 | 1.1.2.14.7 | ANTEPECHOS y TECHO ESCALERA EDIF 14 | 4d | 2026-07-31 | 2026-08-05 | 879FS+1d | 2026-07-17 | 2026-07-22 | 4d | 76d |
| 881 | 1.1.2.15 | **EDIFICIO 13** | 14d | 2026-07-28 | 2026-08-14 |  | 2026-07-14 | 2026-07-31 | 14d | 0d |
| 882 | 1.1.2.15.1 | **NIVEL 1 APTO 101** | 4d | 2026-07-28 | 2026-07-31 |  | 2026-07-14 | 2026-07-17 | 4d | 0d |
| 883 | 1.1.2.15.1.1 | Colocación de malla en muros | 1d | 2026-07-28 | 2026-07-28 | 873FS-2d | 2026-07-14 | 2026-07-14 | 1d | 0d |
| 884 | 1.1.2.15.1.2 | Instalaciones eléctricas,sanitarias | 1d | 2026-07-29 | 2026-07-29 | 883 | 2026-07-15 | 2026-07-15 | 1d | 0d |
| 885 | 1.1.2.15.1.3 | Encofrado de muros | 2d | 2026-07-30 | 2026-07-31 | 884 | 2026-07-16 | 2026-07-17 | 2d | 0d |
| 886 | 1.1.2.15.1.4 | Encofrado de losa | 2d | 2026-07-30 | 2026-07-31 | 885SS | 2026-07-16 | 2026-07-17 | 2d | 0d |
| 887 | 1.1.2.15.1.5 | Colocacion de malla en losa de entrepiso | 1d | 2026-07-31 | 2026-07-31 | 886SS+1d | 2026-07-17 | 2026-07-17 | 1d | 0d |
| 888 | 1.1.2.15.1.6 | Vaciado de muros y losa | 1d | 2026-07-31 | 2026-07-31 | 887SS | 2026-07-17 | 2026-07-17 | 1d | 0d |

| ID | WBS | Task | Duration | Start | Finish | Predecessors | Baseline start | Baseline finish | Baseline duration | Total slack |
| --- | --- | --- | --- | --- | --- | --- | --- | --- | --- | --- |
| 889 | 1.1.2.15.2 | **NIVEL 1 APTO 102** | 2d | 2026-07-31 | 2026-08-03 |  | 2026-07-17 | 2026-07-20 | 2d | 0d |
| 890 | 1.1.2.15.2.1 | Colocación de malla en muros | 1d | 2026-07-31 | 2026-07-31 | 882FS-1d | 2026-07-17 | 2026-07-17 | 1d | 0d |
| 891 | 1.1.2.15.2.2 | Instalaciones eléctricas y sanitarias | 1d | 2026-07-31 | 2026-07-31 | 890SS | 2026-07-17 | 2026-07-17 | 1d | 0d |
| 892 | 1.1.2.15.2.3 | Encofrado de muros | 1d | 2026-08-03 | 2026-08-03 | 891 | 2026-07-20 | 2026-07-20 | 1d | 0d |
| 893 | 1.1.2.15.2.4 | Encofrado de losa | 1d | 2026-08-03 | 2026-08-03 | 892SS | 2026-07-20 | 2026-07-20 | 1d | 0d |
| 894 | 1.1.2.15.2.5 | Colocacion de malla en losa de entrepiso | 1d | 2026-08-03 | 2026-08-03 | 893SS | 2026-07-20 | 2026-07-20 | 1d | 0d |
| 895 | 1.1.2.15.2.6 | Vaciado de muros y losa | 1d | 2026-08-03 | 2026-08-03 | 894SS | 2026-07-20 | 2026-07-20 | 1d | 0d |
| 896 | 1.1.2.15.3 | **NIVEL 2 APTO 201** | 2d | 2026-08-03 | 2026-08-04 |  | 2026-07-20 | 2026-07-21 | 2d | 0d |
| 897 | 1.1.2.15.3.1 | Colocación de malla en muros | 1d | 2026-08-03 | 2026-08-03 | 889FS-1d | 2026-07-20 | 2026-07-20 | 1d | 0d |
| 898 | 1.1.2.15.3.2 | Instalaciones eléctricas y sanitarias | 1d | 2026-08-03 | 2026-08-03 | 897SS | 2026-07-20 | 2026-07-20 | 1d | 0d |
| 899 | 1.1.2.15.3.3 | Encofrado de muros | 1d | 2026-08-04 | 2026-08-04 | 898 | 2026-07-21 | 2026-07-21 | 1d | 0d |
| 900 | 1.1.2.15.3.4 | Encofrado de losa | 1d | 2026-08-04 | 2026-08-04 | 899SS | 2026-07-21 | 2026-07-21 | 1d | 0d |
| 901 | 1.1.2.15.3.5 | Colocacion de malla en losa de entrepiso | 1d | 2026-08-04 | 2026-08-04 | 900SS | 2026-07-21 | 2026-07-21 | 1d | 0d |
| 902 | 1.1.2.15.3.6 | Vaciado de muros y losa | 1d | 2026-08-04 | 2026-08-04 | 901SS | 2026-07-21 | 2026-07-21 | 1d | 0d |
| 903 | 1.1.2.15.4 | **NIVEL 2 APTO 202** | 2d | 2026-08-04 | 2026-08-05 |  | 2026-07-21 | 2026-07-22 | 2d | 0d |
| 904 | 1.1.2.15.4.1 | Colocaciónde malla en muros | 1d | 2026-08-04 | 2026-08-04 | 896FS-1d | 2026-07-21 | 2026-07-21 | 1d | 0d |
| 905 | 1.1.2.15.4.2 | Instalaciones eléctricas y sanitarias | 1d | 2026-08-04 | 2026-08-04 | 904SS | 2026-07-21 | 2026-07-21 | 1d | 0d |
| 906 | 1.1.2.15.4.3 | Encofrado de muros | 1d | 2026-08-05 | 2026-08-05 | 905 | 2026-07-22 | 2026-07-22 | 1d | 0d |
| 907 | 1.1.2.15.4.4 | Encofrado de losa | 1d | 2026-08-05 | 2026-08-05 | 906SS | 2026-07-22 | 2026-07-22 | 1d | 0d |
| 908 | 1.1.2.15.4.5 | Colocacion de malla en losa de entrepiso | 1d | 2026-08-05 | 2026-08-05 | 907SS | 2026-07-22 | 2026-07-22 | 1d | 0d |
| 909 | 1.1.2.15.4.6 | Vaciado de muros y losa | 1d | 2026-08-05 | 2026-08-05 | 908SS | 2026-07-22 | 2026-07-22 | 1d | 0d |
| 910 | 1.1.2.15.5 | **NIVEL 3 APTO 301** | 2d | 2026-08-05 | 2026-08-06 |  | 2026-07-22 | 2026-07-23 | 2d | 0d |
| 911 | 1.1.2.15.5.1 | Colocación de malla en muros | 1d | 2026-08-05 | 2026-08-05 | 903FS-1d | 2026-07-22 | 2026-07-22 | 1d | 0d |
| 912 | 1.1.2.15.5.2 | Instalaciones eléctricas y sanitarias | 1d | 2026-08-05 | 2026-08-05 | 911SS | 2026-07-22 | 2026-07-22 | 1d | 0d |
| 913 | 1.1.2.15.5.3 | Encofrado de muros | 1d | 2026-08-06 | 2026-08-06 | 912 | 2026-07-23 | 2026-07-23 | 1d | 0d |
| 914 | 1.1.2.15.5.4 | Encofrado de losa | 1d | 2026-08-06 | 2026-08-06 | 913SS | 2026-07-23 | 2026-07-23 | 1d | 0d |
| 915 | 1.1.2.15.5.5 | Colocacion de malla en losa de entrepiso | 1d | 2026-08-06 | 2026-08-06 | 914SS | 2026-07-23 | 2026-07-23 | 1d | 0d |
| 916 | 1.1.2.15.5.6 | Vaciado de muros y losa | 1d | 2026-08-06 | 2026-08-06 | 915SS | 2026-07-23 | 2026-07-23 | 1d | 0d |

| ID | WBS | Task | Duration | Start | Finish | Predecessors | Baseline start | Baseline finish | Baseline duration | Total slack |
| --- | --- | --- | --- | --- | --- | --- | --- | --- | --- | --- |
| 917 | 1.1.2.15.6 | **NIVEL 3 APTO 302** | 2d | 2026-08-06 | 2026-08-07 |  | 2026-07-23 | 2026-07-24 | 2d | 0d |
| 918 | 1.1.2.15.6.1 | Colocación de malla en muros | 1d | 2026-08-06 | 2026-08-06 | 910FS-1d | 2026-07-23 | 2026-07-23 | 1d | 0d |
| 919 | 1.1.2.15.6.2 | Instalaciones eléctricas y sanitarias | 1d | 2026-08-06 | 2026-08-06 | 918SS | 2026-07-23 | 2026-07-23 | 1d | 0d |
| 920 | 1.1.2.15.6.3 | Encofrado de muros | 1d | 2026-08-07 | 2026-08-07 | 919 | 2026-07-24 | 2026-07-24 | 1d | 0d |
| 921 | 1.1.2.15.6.4 | Encofrado de losa | 1d | 2026-08-07 | 2026-08-07 | 920SS | 2026-07-24 | 2026-07-24 | 1d | 0d |
| 922 | 1.1.2.15.6.5 | Colocacion de malla en losa de entrepiso | 1d | 2026-08-07 | 2026-08-07 | 921SS | 2026-07-24 | 2026-07-24 | 1d | 0d |
| 923 | 1.1.2.15.6.6 | Vaciado de muros y losa | 1d | 2026-08-07 | 2026-08-07 | 922SS | 2026-07-24 | 2026-07-24 | 1d | 0d |
| 924 | 1.1.2.15.7 | ANTEPECHOS y TECHO ESCALERA EDIF 13 | 4d | 2026-08-11 | 2026-08-14 | 923FS+1d | 2026-07-28 | 2026-07-31 | 4d | 69d |
| 925 | 1.1.2.16 | **EDIFICIO 18** | 14d | 2026-08-05 | 2026-08-24 |  | 2026-07-23 | 2026-08-11 | 14d | 0d |
| 926 | 1.1.2.16.1 | **NIVEL 1 APTO 101** | 4d | 2026-08-05 | 2026-08-10 |  | 2026-07-23 | 2026-07-28 | 4d | 0d |
| 927 | 1.1.2.16.1.1 | Colocación de malla en muros | 1d | 2026-08-05 | 2026-08-05 | 917FS-3d | 2026-07-23 | 2026-07-23 | 1d | 0d |
| 928 | 1.1.2.16.1.2 | Instalaciones eléctricas,sanitarias | 1d | 2026-08-06 | 2026-08-06 | 927 | 2026-07-24 | 2026-07-24 | 1d | 0d |
| 929 | 1.1.2.16.1.3 | Encofrado de muros | 2d | 2026-08-07 | 2026-08-10 | 928 | 2026-07-27 | 2026-07-28 | 2d | 0d |
| 930 | 1.1.2.16.1.4 | Encofrado de losa | 2d | 2026-08-07 | 2026-08-10 | 929SS | 2026-07-27 | 2026-07-28 | 2d | 0d |
| 931 | 1.1.2.16.1.5 | Colocacion de malla en losa de entrepiso | 1d | 2026-08-10 | 2026-08-10 | 930SS+1d | 2026-07-28 | 2026-07-28 | 1d | 0d |
| 932 | 1.1.2.16.1.6 | Vaciado de muros y losa | 1d | 2026-08-10 | 2026-08-10 | 931SS | 2026-07-28 | 2026-07-28 | 1d | 0d |
| 933 | 1.1.2.16.2 | **NIVEL 1 APTO 102** | 2d | 2026-08-10 | 2026-08-11 |  | 2026-07-28 | 2026-07-29 | 2d | 0d |
| 934 | 1.1.2.16.2.1 | Colocación de malla en muros | 1d | 2026-08-10 | 2026-08-10 | 926FS-1d | 2026-07-28 | 2026-07-28 | 1d | 0d |
| 935 | 1.1.2.16.2.2 | Instalaciones eléctricas y sanitarias | 1d | 2026-08-10 | 2026-08-10 | 934SS | 2026-07-28 | 2026-07-28 | 1d | 0d |
| 936 | 1.1.2.16.2.3 | Encofrado de muros | 1d | 2026-08-11 | 2026-08-11 | 935 | 2026-07-29 | 2026-07-29 | 1d | 0d |
| 937 | 1.1.2.16.2.4 | Encofrado de losa | 1d | 2026-08-11 | 2026-08-11 | 936SS | 2026-07-29 | 2026-07-29 | 1d | 0d |
| 938 | 1.1.2.16.2.5 | Colocacion de malla en losa de entrepiso | 1d | 2026-08-11 | 2026-08-11 | 937SS | 2026-07-29 | 2026-07-29 | 1d | 0d |
| 939 | 1.1.2.16.2.6 | Vaciado de muros y losa | 1d | 2026-08-11 | 2026-08-11 | 938SS | 2026-07-29 | 2026-07-29 | 1d | 0d |
| 940 | 1.1.2.16.3 | **NIVEL 2 APTO 201** | 2d | 2026-08-11 | 2026-08-12 |  | 2026-07-29 | 2026-07-30 | 2d | 0d |
| 941 | 1.1.2.16.3.1 | Colocación de malla en muros | 1d | 2026-08-11 | 2026-08-11 | 933FS-1d | 2026-07-29 | 2026-07-29 | 1d | 0d |
| 942 | 1.1.2.16.3.2 | Instalaciones eléctricas y sanitarias | 1d | 2026-08-11 | 2026-08-11 | 941SS | 2026-07-29 | 2026-07-29 | 1d | 0d |
| 943 | 1.1.2.16.3.3 | Encofrado de muros | 1d | 2026-08-12 | 2026-08-12 | 942 | 2026-07-30 | 2026-07-30 | 1d | 0d |
| 944 | 1.1.2.16.3.4 | Encofrado de losa | 1d | 2026-08-12 | 2026-08-12 | 943SS | 2026-07-30 | 2026-07-30 | 1d | 0d |
| 945 | 1.1.2.16.3.5 | Colocacion de malla en losa de entrepiso | 1d | 2026-08-12 | 2026-08-12 | 944SS | 2026-07-30 | 2026-07-30 | 1d | 0d |
| 946 | 1.1.2.16.3.6 | Vaciado de muros y losa | 1d | 2026-08-12 | 2026-08-12 | 945SS | 2026-07-30 | 2026-07-30 | 1d | 0d |

| ID | WBS | Task | Duration | Start | Finish | Predecessors | Baseline start | Baseline finish | Baseline duration | Total slack |
| --- | --- | --- | --- | --- | --- | --- | --- | --- | --- | --- |
| 947 | 1.1.2.16.4 | **NIVEL 2 APTO 202** | 2d | 2026-08-12 | 2026-08-13 |  | 2026-07-30 | 2026-07-31 | 2d | 0d |
| 948 | 1.1.2.16.4.1 | Colocaciónde malla en muros | 1d | 2026-08-12 | 2026-08-12 | 940FS-1d | 2026-07-30 | 2026-07-30 | 1d | 0d |
| 949 | 1.1.2.16.4.2 | Instalaciones eléctricas y sanitarias | 1d | 2026-08-12 | 2026-08-12 | 948SS | 2026-07-30 | 2026-07-30 | 1d | 0d |
| 950 | 1.1.2.16.4.3 | Encofrado de muros | 1d | 2026-08-13 | 2026-08-13 | 949 | 2026-07-31 | 2026-07-31 | 1d | 0d |
| 951 | 1.1.2.16.4.4 | Encofrado de losa | 1d | 2026-08-13 | 2026-08-13 | 950SS | 2026-07-31 | 2026-07-31 | 1d | 0d |
| 952 | 1.1.2.16.4.5 | Colocacion de malla en losa de entrepiso | 1d | 2026-08-13 | 2026-08-13 | 951SS | 2026-07-31 | 2026-07-31 | 1d | 0d |
| 953 | 1.1.2.16.4.6 | Vaciado de muros y losa | 1d | 2026-08-13 | 2026-08-13 | 952SS | 2026-07-31 | 2026-07-31 | 1d | 0d |
| 954 | 1.1.2.16.5 | **NIVEL 3 APTO 301** | 2d | 2026-08-13 | 2026-08-14 |  | 2026-07-31 | 2026-08-03 | 2d | 0d |
| 955 | 1.1.2.16.5.1 | Colocación de malla en muros | 1d | 2026-08-13 | 2026-08-13 | 947FS-1d | 2026-07-31 | 2026-07-31 | 1d | 0d |
| 956 | 1.1.2.16.5.2 | Instalaciones eléctricas y sanitarias | 1d | 2026-08-13 | 2026-08-13 | 955SS | 2026-07-31 | 2026-07-31 | 1d | 0d |
| 957 | 1.1.2.16.5.3 | Encofrado de muros | 1d | 2026-08-14 | 2026-08-14 | 956 | 2026-08-03 | 2026-08-03 | 1d | 0d |
| 958 | 1.1.2.16.5.4 | Encofrado de losa | 1d | 2026-08-14 | 2026-08-14 | 957SS | 2026-08-03 | 2026-08-03 | 1d | 0d |
| 959 | 1.1.2.16.5.5 | Colocacion de malla en losa de entrepiso | 1d | 2026-08-14 | 2026-08-14 | 958SS | 2026-08-03 | 2026-08-03 | 1d | 0d |
| 960 | 1.1.2.16.5.6 | Vaciado de muros y losa | 1d | 2026-08-14 | 2026-08-14 | 959SS | 2026-08-03 | 2026-08-03 | 1d | 0d |
| 961 | 1.1.2.16.6 | **NIVEL 3 APTO 302** | 2d | 2026-08-14 | 2026-08-17 |  | 2026-08-03 | 2026-08-04 | 2d | 0d |
| 962 | 1.1.2.16.6.1 | Colocación de malla en muros | 1d | 2026-08-14 | 2026-08-14 | 954FS-1d | 2026-08-03 | 2026-08-03 | 1d | 0d |
| 963 | 1.1.2.16.6.2 | Instalaciones eléctricas y sanitarias | 1d | 2026-08-14 | 2026-08-14 | 962SS | 2026-08-03 | 2026-08-03 | 1d | 0d |
| 964 | 1.1.2.16.6.3 | Encofrado de muros | 1d | 2026-08-17 | 2026-08-17 | 963 | 2026-08-04 | 2026-08-04 | 1d | 0d |
| 965 | 1.1.2.16.6.4 | Encofrado de losa | 1d | 2026-08-17 | 2026-08-17 | 964SS | 2026-08-04 | 2026-08-04 | 1d | 0d |
| 966 | 1.1.2.16.6.5 | Colocacion de malla en losa de entrepiso | 1d | 2026-08-17 | 2026-08-17 | 965SS | 2026-08-04 | 2026-08-04 | 1d | 0d |
| 967 | 1.1.2.16.6.6 | Vaciado de muros y losa | 1d | 2026-08-17 | 2026-08-17 | 966SS | 2026-08-04 | 2026-08-04 | 1d | 0d |
| 968 | 1.1.2.16.7 | ANTEPECHOS y TECHO ESCALERA EDIF 18 | 4d | 2026-08-19 | 2026-08-24 | 967FS+1d | 2026-08-06 | 2026-08-11 | 4d | 63d |
| 969 | 1.1.2.17 | **EDIFICIO 17** | 14d | 2026-08-14 | 2026-09-02 |  | 2026-08-03 | 2026-08-20 | 14d | 0d |
| 970 | 1.1.2.17.1 | **NIVEL 1 APTO 101** | 4d | 2026-08-14 | 2026-08-19 |  | 2026-08-03 | 2026-08-06 | 4d | 0d |
| 971 | 1.1.2.17.1.1 | Colocación de malla en muros | 1d | 2026-08-14 | 2026-08-14 | 961FS-2d | 2026-08-03 | 2026-08-03 | 1d | 0d |
| 972 | 1.1.2.17.1.2 | Instalaciones eléctricas,sanitarias | 1d | 2026-08-17 | 2026-08-17 | 971 | 2026-08-04 | 2026-08-04 | 1d | 0d |
| 973 | 1.1.2.17.1.3 | Encofrado de muros | 2d | 2026-08-18 | 2026-08-19 | 972 | 2026-08-05 | 2026-08-06 | 2d | 0d |
| 974 | 1.1.2.17.1.4 | Encofrado de losa | 2d | 2026-08-18 | 2026-08-19 | 973SS | 2026-08-05 | 2026-08-06 | 2d | 0d |
| 975 | 1.1.2.17.1.5 | Colocacion de malla en losa de entrepiso | 1d | 2026-08-19 | 2026-08-19 | 974SS+1d | 2026-08-06 | 2026-08-06 | 1d | 0d |
| 976 | 1.1.2.17.1.6 | Vaciado de muros y losa | 1d | 2026-08-19 | 2026-08-19 | 975SS | 2026-08-06 | 2026-08-06 | 1d | 0d |

| ID | WBS | Task | Duration | Start | Finish | Predecessors | Baseline start | Baseline finish | Baseline duration | Total slack |
| --- | --- | --- | --- | --- | --- | --- | --- | --- | --- | --- |
| 977 | 1.1.2.17.2 | **NIVEL 1 APTO 102** | 2d | 2026-08-19 | 2026-08-20 |  | 2026-08-06 | 2026-08-07 | 2d | 0d |
| 978 | 1.1.2.17.2.1 | Colocación de malla en muros | 1d | 2026-08-19 | 2026-08-19 | 970FS-1d | 2026-08-06 | 2026-08-06 | 1d | 0d |
| 979 | 1.1.2.17.2.2 | Instalaciones eléctricas y sanitarias | 1d | 2026-08-19 | 2026-08-19 | 978SS | 2026-08-06 | 2026-08-06 | 1d | 0d |
| 980 | 1.1.2.17.2.3 | Encofrado de muros | 1d | 2026-08-20 | 2026-08-20 | 979 | 2026-08-07 | 2026-08-07 | 1d | 0d |
| 981 | 1.1.2.17.2.4 | Encofrado de losa | 1d | 2026-08-20 | 2026-08-20 | 980SS | 2026-08-07 | 2026-08-07 | 1d | 0d |
| 982 | 1.1.2.17.2.5 | Colocacion de malla en losa de entrepiso | 1d | 2026-08-20 | 2026-08-20 | 981SS | 2026-08-07 | 2026-08-07 | 1d | 0d |
| 983 | 1.1.2.17.2.6 | Vaciado de muros y losa | 1d | 2026-08-20 | 2026-08-20 | 982SS | 2026-08-07 | 2026-08-07 | 1d | 0d |
| 984 | 1.1.2.17.3 | **NIVEL 2 APTO 201** | 2d | 2026-08-20 | 2026-08-21 |  | 2026-08-07 | 2026-08-10 | 2d | 0d |
| 985 | 1.1.2.17.3.1 | Colocación de malla en muros | 1d | 2026-08-20 | 2026-08-20 | 977FS-1d | 2026-08-07 | 2026-08-07 | 1d | 0d |
| 986 | 1.1.2.17.3.2 | Instalaciones eléctricas y sanitarias | 1d | 2026-08-20 | 2026-08-20 | 985SS | 2026-08-07 | 2026-08-07 | 1d | 0d |
| 987 | 1.1.2.17.3.3 | Encofrado de muros | 1d | 2026-08-21 | 2026-08-21 | 986 | 2026-08-10 | 2026-08-10 | 1d | 0d |
| 988 | 1.1.2.17.3.4 | Encofrado de losa | 1d | 2026-08-21 | 2026-08-21 | 987SS | 2026-08-10 | 2026-08-10 | 1d | 0d |
| 989 | 1.1.2.17.3.5 | Colocacion de malla en losa de entrepiso | 1d | 2026-08-21 | 2026-08-21 | 988SS | 2026-08-10 | 2026-08-10 | 1d | 0d |
| 990 | 1.1.2.17.3.6 | Vaciado de muros y losa | 1d | 2026-08-21 | 2026-08-21 | 989SS | 2026-08-10 | 2026-08-10 | 1d | 0d |
| 991 | 1.1.2.17.4 | **NIVEL 2 APTO 202** | 2d | 2026-08-21 | 2026-08-24 |  | 2026-08-10 | 2026-08-11 | 2d | 0d |
| 992 | 1.1.2.17.4.1 | Colocaciónde malla en muros | 1d | 2026-08-21 | 2026-08-21 | 984FS-1d | 2026-08-10 | 2026-08-10 | 1d | 0d |
| 993 | 1.1.2.17.4.2 | Instalaciones eléctricas y sanitarias | 1d | 2026-08-21 | 2026-08-21 | 992SS | 2026-08-10 | 2026-08-10 | 1d | 0d |
| 994 | 1.1.2.17.4.3 | Encofrado de muros | 1d | 2026-08-24 | 2026-08-24 | 993 | 2026-08-11 | 2026-08-11 | 1d | 0d |
| 995 | 1.1.2.17.4.4 | Encofrado de losa | 1d | 2026-08-24 | 2026-08-24 | 994SS | 2026-08-11 | 2026-08-11 | 1d | 0d |
| 996 | 1.1.2.17.4.5 | Colocacion de malla en losa de entrepiso | 1d | 2026-08-24 | 2026-08-24 | 995SS | 2026-08-11 | 2026-08-11 | 1d | 0d |
| 997 | 1.1.2.17.4.6 | Vaciado de muros y losa | 1d | 2026-08-24 | 2026-08-24 | 996SS | 2026-08-11 | 2026-08-11 | 1d | 0d |
| 998 | 1.1.2.17.5 | **NIVEL 3 APTO 301** | 2d | 2026-08-24 | 2026-08-25 |  | 2026-08-11 | 2026-08-12 | 2d | 0d |
| 999 | 1.1.2.17.5.1 | Colocación de malla en muros | 1d | 2026-08-24 | 2026-08-24 | 991FS-1d | 2026-08-11 | 2026-08-11 | 1d | 0d |
| 1000 | 1.1.2.17.5.2 | Instalaciones eléctricas y sanitarias | 1d | 2026-08-24 | 2026-08-24 | 999SS | 2026-08-11 | 2026-08-11 | 1d | 0d |
| 1001 | 1.1.2.17.5.3 | Encofrado de muros | 1d | 2026-08-25 | 2026-08-25 | 1000 | 2026-08-12 | 2026-08-12 | 1d | 0d |
| 1002 | 1.1.2.17.5.4 | Encofrado de losa | 1d | 2026-08-25 | 2026-08-25 | 1001SS | 2026-08-12 | 2026-08-12 | 1d | 0d |
| 1003 | 1.1.2.17.5.5 | Colocacion de malla en losa de entrepiso | 1d | 2026-08-25 | 2026-08-25 | 1002SS | 2026-08-12 | 2026-08-12 | 1d | 0d |
| 1004 | 1.1.2.17.5.6 | Vaciado de muros y losa | 1d | 2026-08-25 | 2026-08-25 | 1003SS | 2026-08-12 | 2026-08-12 | 1d | 0d |

| ID | WBS | Task | Duration | Start | Finish | Predecessors | Baseline start | Baseline finish | Baseline duration | Total slack |
| --- | --- | --- | --- | --- | --- | --- | --- | --- | --- | --- |
| 1005 | 1.1.2.17.6 | **NIVEL 3 APTO 302** | 2d | 2026-08-25 | 2026-08-26 |  | 2026-08-12 | 2026-08-13 | 2d | 0d |
| 1006 | 1.1.2.17.6.1 | Colocación de malla en muros | 1d | 2026-08-25 | 2026-08-25 | 998FS-1d | 2026-08-12 | 2026-08-12 | 1d | 0d |
| 1007 | 1.1.2.17.6.2 | Instalaciones eléctricas y sanitarias | 1d | 2026-08-25 | 2026-08-25 | 1006SS | 2026-08-12 | 2026-08-12 | 1d | 0d |
| 1008 | 1.1.2.17.6.3 | Encofrado de muros | 1d | 2026-08-26 | 2026-08-26 | 1007 | 2026-08-13 | 2026-08-13 | 1d | 0d |
| 1009 | 1.1.2.17.6.4 | Encofrado de losa | 1d | 2026-08-26 | 2026-08-26 | 1008SS | 2026-08-13 | 2026-08-13 | 1d | 0d |
| 1010 | 1.1.2.17.6.5 | Colocacion de malla en losa de entrepiso | 1d | 2026-08-26 | 2026-08-26 | 1009SS | 2026-08-13 | 2026-08-13 | 1d | 0d |
| 1011 | 1.1.2.17.6.6 | Vaciado de muros y losa | 1d | 2026-08-26 | 2026-08-26 | 1010SS | 2026-08-13 | 2026-08-13 | 1d | 0d |
| 1012 | 1.1.2.17.7 | ANTEPECHOS y TECHO ESCALERA EDIF 17 | 4d | 2026-08-28 | 2026-09-02 | 1011FS+1d | 2026-08-17 | 2026-08-20 | 4d | 56d |
| 1013 | 1.1.2.18 | **EDIFICIO 16** | 14d | 2026-08-25 | 2026-09-11 |  | 2026-08-12 | 2026-08-31 | 14d | 0d |
| 1014 | 1.1.2.18.1 | **NIVEL 1 APTO 101** | 4d | 2026-08-25 | 2026-08-28 |  | 2026-08-12 | 2026-08-17 | 4d | 0d |
| 1015 | 1.1.2.18.1.1 | Colocación de malla en muros | 1d | 2026-08-25 | 2026-08-25 | 1005FS-2d | 2026-08-12 | 2026-08-12 | 1d | 0d |
| 1016 | 1.1.2.18.1.2 | Instalaciones eléctricas,sanitarias | 1d | 2026-08-26 | 2026-08-26 | 1015 | 2026-08-13 | 2026-08-13 | 1d | 0d |
| 1017 | 1.1.2.18.1.3 | Encofrado de muros | 2d | 2026-08-27 | 2026-08-28 | 1016 | 2026-08-14 | 2026-08-17 | 2d | 0d |
| 1018 | 1.1.2.18.1.4 | Encofrado de losa | 2d | 2026-08-27 | 2026-08-28 | 1017SS | 2026-08-14 | 2026-08-17 | 2d | 0d |
| 1019 | 1.1.2.18.1.5 | Colocacion de malla en losa de entrepiso | 1d | 2026-08-28 | 2026-08-28 | 1018SS+1d | 2026-08-17 | 2026-08-17 | 1d | 0d |
| 1020 | 1.1.2.18.1.6 | Vaciado de muros y losa | 1d | 2026-08-28 | 2026-08-28 | 1019SS | 2026-08-17 | 2026-08-17 | 1d | 0d |
| 1021 | 1.1.2.18.2 | **NIVEL 1 APTO 102** | 2d | 2026-08-28 | 2026-08-31 |  | 2026-08-17 | 2026-08-18 | 2d | 0d |
| 1022 | 1.1.2.18.2.1 | Colocación de malla en muros | 1d | 2026-08-28 | 2026-08-28 | 1014FS-1d | 2026-08-17 | 2026-08-17 | 1d | 0d |
| 1023 | 1.1.2.18.2.2 | Instalaciones eléctricas y sanitarias | 1d | 2026-08-28 | 2026-08-28 | 1022SS | 2026-08-17 | 2026-08-17 | 1d | 0d |
| 1024 | 1.1.2.18.2.3 | Encofrado de muros | 1d | 2026-08-31 | 2026-08-31 | 1023 | 2026-08-18 | 2026-08-18 | 1d | 0d |
| 1025 | 1.1.2.18.2.4 | Encofrado de losa | 1d | 2026-08-31 | 2026-08-31 | 1024SS | 2026-08-18 | 2026-08-18 | 1d | 0d |
| 1026 | 1.1.2.18.2.5 | Colocacion de malla en losa de entrepiso | 1d | 2026-08-31 | 2026-08-31 | 1025SS | 2026-08-18 | 2026-08-18 | 1d | 0d |
| 1027 | 1.1.2.18.2.6 | Vaciado de muros y losa | 1d | 2026-08-31 | 2026-08-31 | 1026SS | 2026-08-18 | 2026-08-18 | 1d | 0d |
| 1028 | 1.1.2.18.3 | **NIVEL 2 APTO 201** | 2d | 2026-08-31 | 2026-09-01 |  | 2026-08-18 | 2026-08-19 | 2d | 0d |
| 1029 | 1.1.2.18.3.1 | Colocación de malla en muros | 1d | 2026-08-31 | 2026-08-31 | 1021FS-1d | 2026-08-18 | 2026-08-18 | 1d | 0d |
| 1030 | 1.1.2.18.3.2 | Instalaciones eléctricas y sanitarias | 1d | 2026-08-31 | 2026-08-31 | 1029SS | 2026-08-18 | 2026-08-18 | 1d | 0d |
| 1031 | 1.1.2.18.3.3 | Encofrado de muros | 1d | 2026-09-01 | 2026-09-01 | 1030 | 2026-08-19 | 2026-08-19 | 1d | 0d |
| 1032 | 1.1.2.18.3.4 | Encofrado de losa | 1d | 2026-09-01 | 2026-09-01 | 1031SS | 2026-08-19 | 2026-08-19 | 1d | 0d |
| 1033 | 1.1.2.18.3.5 | Colocacion de malla en losa de entrepiso | 1d | 2026-09-01 | 2026-09-01 | 1032SS | 2026-08-19 | 2026-08-19 | 1d | 0d |
| 1034 | 1.1.2.18.3.6 | Vaciado de muros y losa | 1d | 2026-09-01 | 2026-09-01 | 1033SS | 2026-08-19 | 2026-08-19 | 1d | 0d |

| ID | WBS | Task | Duration | Start | Finish | Predecessors | Baseline start | Baseline finish | Baseline duration | Total slack |
| --- | --- | --- | --- | --- | --- | --- | --- | --- | --- | --- |
| 1035 | 1.1.2.18.4 | **NIVEL 2 APTO 202** | 2d | 2026-09-01 | 2026-09-02 |  | 2026-08-19 | 2026-08-20 | 2d | 0d |
| 1036 | 1.1.2.18.4.1 | Colocaciónde malla en muros | 1d | 2026-09-01 | 2026-09-01 | 1028FS-1d | 2026-08-19 | 2026-08-19 | 1d | 0d |
| 1037 | 1.1.2.18.4.2 | Instalaciones eléctricas y sanitarias | 1d | 2026-09-01 | 2026-09-01 | 1036SS | 2026-08-19 | 2026-08-19 | 1d | 0d |
| 1038 | 1.1.2.18.4.3 | Encofrado de muros | 1d | 2026-09-02 | 2026-09-02 | 1037 | 2026-08-20 | 2026-08-20 | 1d | 0d |
| 1039 | 1.1.2.18.4.4 | Encofrado de losa | 1d | 2026-09-02 | 2026-09-02 | 1038SS | 2026-08-20 | 2026-08-20 | 1d | 0d |
| 1040 | 1.1.2.18.4.5 | Colocacion de malla en losa de entrepiso | 1d | 2026-09-02 | 2026-09-02 | 1039SS | 2026-08-20 | 2026-08-20 | 1d | 0d |
| 1041 | 1.1.2.18.4.6 | Vaciado de muros y losa | 1d | 2026-09-02 | 2026-09-02 | 1040SS | 2026-08-20 | 2026-08-20 | 1d | 0d |
| 1042 | 1.1.2.18.5 | **NIVEL 3 APTO 301** | 2d | 2026-09-02 | 2026-09-03 |  | 2026-08-20 | 2026-08-21 | 2d | 0d |
| 1043 | 1.1.2.18.5.1 | Colocación de malla en muros | 1d | 2026-09-02 | 2026-09-02 | 1035FS-1d | 2026-08-20 | 2026-08-20 | 1d | 0d |
| 1044 | 1.1.2.18.5.2 | Instalaciones eléctricas y sanitarias | 1d | 2026-09-02 | 2026-09-02 | 1043SS | 2026-08-20 | 2026-08-20 | 1d | 0d |
| 1045 | 1.1.2.18.5.3 | Encofrado de muros | 1d | 2026-09-03 | 2026-09-03 | 1044 | 2026-08-21 | 2026-08-21 | 1d | 0d |
| 1046 | 1.1.2.18.5.4 | Encofrado de losa | 1d | 2026-09-03 | 2026-09-03 | 1045SS | 2026-08-21 | 2026-08-21 | 1d | 0d |
| 1047 | 1.1.2.18.5.5 | Colocacion de malla en losa de entrepiso | 1d | 2026-09-03 | 2026-09-03 | 1046SS | 2026-08-21 | 2026-08-21 | 1d | 0d |
| 1048 | 1.1.2.18.5.6 | Vaciado de muros y losa | 1d | 2026-09-03 | 2026-09-03 | 1047SS | 2026-08-21 | 2026-08-21 | 1d | 0d |
| 1049 | 1.1.2.18.6 | **NIVEL 3 APTO 302** | 2d | 2026-09-03 | 2026-09-04 |  | 2026-08-21 | 2026-08-24 | 2d | 0d |
| 1050 | 1.1.2.18.6.1 | Colocación de malla en muros | 1d | 2026-09-03 | 2026-09-03 | 1042FS-1d | 2026-08-21 | 2026-08-21 | 1d | 0d |
| 1051 | 1.1.2.18.6.2 | Instalaciones eléctricas y sanitarias | 1d | 2026-09-03 | 2026-09-03 | 1050SS | 2026-08-21 | 2026-08-21 | 1d | 0d |
| 1052 | 1.1.2.18.6.3 | Encofrado de muros | 1d | 2026-09-04 | 2026-09-04 | 1051 | 2026-08-24 | 2026-08-24 | 1d | 0d |
| 1053 | 1.1.2.18.6.4 | Encofrado de losa | 1d | 2026-09-04 | 2026-09-04 | 1052SS | 2026-08-24 | 2026-08-24 | 1d | 0d |
| 1054 | 1.1.2.18.6.5 | Colocacion de malla en losa de entrepiso | 1d | 2026-09-04 | 2026-09-04 | 1053SS | 2026-08-24 | 2026-08-24 | 1d | 0d |
| 1055 | 1.1.2.18.6.6 | Vaciado de muros y losa | 1d | 2026-09-04 | 2026-09-04 | 1054SS | 2026-08-24 | 2026-08-24 | 1d | 0d |
| 1056 | 1.1.2.18.7 | ANTEPECHOS y TECHO ESCALERA EDIF 16 | 4d | 2026-09-08 | 2026-09-11 | 1055FS+1d | 2026-08-26 | 2026-08-31 | 4d | 49d |
| 1057 | 1.1.2.19 | **EDIFICIO 71** | 14d | 2026-09-02 | 2026-09-21 |  | 2026-08-21 | 2026-09-09 | 14d | 0d |
| 1058 | 1.1.2.19.1 | **NIVEL 1 APTO 101** | 4d | 2026-09-02 | 2026-09-07 |  | 2026-08-21 | 2026-08-26 | 4d | 0d |
| 1059 | 1.1.2.19.1.1 | Colocación de malla en muros | 1d | 2026-09-02 | 2026-09-02 | 1049FS-3d | 2026-08-21 | 2026-08-21 | 1d | 0d |
| 1060 | 1.1.2.19.1.2 | Instalaciones eléctricas,sanitarias | 1d | 2026-09-03 | 2026-09-03 | 1059 | 2026-08-24 | 2026-08-24 | 1d | 0d |
| 1061 | 1.1.2.19.1.3 | Encofrado de muros | 2d | 2026-09-04 | 2026-09-07 | 1060 | 2026-08-25 | 2026-08-26 | 2d | 0d |
| 1062 | 1.1.2.19.1.4 | Encofrado de losa | 2d | 2026-09-04 | 2026-09-07 | 1061SS | 2026-08-25 | 2026-08-26 | 2d | 0d |
| 1063 | 1.1.2.19.1.5 | Colocacion de malla en losa de entrepiso | 1d | 2026-09-07 | 2026-09-07 | 1062SS+1d | 2026-08-26 | 2026-08-26 | 1d | 0d |
| 1064 | 1.1.2.19.1.6 | Vaciado de muros y losa | 1d | 2026-09-07 | 2026-09-07 | 1063SS | 2026-08-26 | 2026-08-26 | 1d | 0d |

| ID | WBS | Task | Duration | Start | Finish | Predecessors | Baseline start | Baseline finish | Baseline duration | Total slack |
| --- | --- | --- | --- | --- | --- | --- | --- | --- | --- | --- |
| 1065 | 1.1.2.19.2 | **NIVEL 1 APTO 102** | 2d | 2026-09-07 | 2026-09-08 |  | 2026-08-26 | 2026-08-27 | 2d | 0d |
| 1066 | 1.1.2.19.2.1 | Colocación de malla en muros | 1d | 2026-09-07 | 2026-09-07 | 1058FS-1d | 2026-08-26 | 2026-08-26 | 1d | 0d |
| 1067 | 1.1.2.19.2.2 | Instalaciones eléctricas y sanitarias | 1d | 2026-09-07 | 2026-09-07 | 1066SS | 2026-08-26 | 2026-08-26 | 1d | 0d |
| 1068 | 1.1.2.19.2.3 | Encofrado de muros | 1d | 2026-09-08 | 2026-09-08 | 1067 | 2026-08-27 | 2026-08-27 | 1d | 0d |
| 1069 | 1.1.2.19.2.4 | Encofrado de losa | 1d | 2026-09-08 | 2026-09-08 | 1068SS | 2026-08-27 | 2026-08-27 | 1d | 0d |
| 1070 | 1.1.2.19.2.5 | Colocacion de malla en losa de entrepiso | 1d | 2026-09-08 | 2026-09-08 | 1069SS | 2026-08-27 | 2026-08-27 | 1d | 0d |
| 1071 | 1.1.2.19.2.6 | Vaciado de muros y losa | 1d | 2026-09-08 | 2026-09-08 | 1070SS | 2026-08-27 | 2026-08-27 | 1d | 0d |
| 1072 | 1.1.2.19.3 | **NIVEL 2 APTO 201** | 2d | 2026-09-08 | 2026-09-09 |  | 2026-08-27 | 2026-08-28 | 2d | 0d |
| 1073 | 1.1.2.19.3.1 | Colocación de malla en muros | 1d | 2026-09-08 | 2026-09-08 | 1065FS-1d | 2026-08-27 | 2026-08-27 | 1d | 0d |
| 1074 | 1.1.2.19.3.2 | Instalaciones eléctricas y sanitarias | 1d | 2026-09-08 | 2026-09-08 | 1073SS | 2026-08-27 | 2026-08-27 | 1d | 0d |
| 1075 | 1.1.2.19.3.3 | Encofrado de muros | 1d | 2026-09-09 | 2026-09-09 | 1074 | 2026-08-28 | 2026-08-28 | 1d | 0d |
| 1076 | 1.1.2.19.3.4 | Encofrado de losa | 1d | 2026-09-09 | 2026-09-09 | 1075SS | 2026-08-28 | 2026-08-28 | 1d | 0d |
| 1077 | 1.1.2.19.3.5 | Colocacion de malla en losa de entrepiso | 1d | 2026-09-09 | 2026-09-09 | 1076SS | 2026-08-28 | 2026-08-28 | 1d | 0d |
| 1078 | 1.1.2.19.3.6 | Vaciado de muros y losa | 1d | 2026-09-09 | 2026-09-09 | 1077SS | 2026-08-28 | 2026-08-28 | 1d | 0d |
| 1079 | 1.1.2.19.4 | **NIVEL 2 APTO 202** | 2d | 2026-09-09 | 2026-09-10 |  | 2026-08-28 | 2026-08-31 | 2d | 0d |
| 1080 | 1.1.2.19.4.1 | Colocaciónde malla en muros | 1d | 2026-09-09 | 2026-09-09 | 1072FS-1d | 2026-08-28 | 2026-08-28 | 1d | 0d |
| 1081 | 1.1.2.19.4.2 | Instalaciones eléctricas y sanitarias | 1d | 2026-09-09 | 2026-09-09 | 1080SS | 2026-08-28 | 2026-08-28 | 1d | 0d |
| 1082 | 1.1.2.19.4.3 | Encofrado de muros | 1d | 2026-09-10 | 2026-09-10 | 1081 | 2026-08-31 | 2026-08-31 | 1d | 0d |
| 1083 | 1.1.2.19.4.4 | Encofrado de losa | 1d | 2026-09-10 | 2026-09-10 | 1082SS | 2026-08-31 | 2026-08-31 | 1d | 0d |
| 1084 | 1.1.2.19.4.5 | Colocacion de malla en losa de entrepiso | 1d | 2026-09-10 | 2026-09-10 | 1083SS | 2026-08-31 | 2026-08-31 | 1d | 0d |
| 1085 | 1.1.2.19.4.6 | Vaciado de muros y losa | 1d | 2026-09-10 | 2026-09-10 | 1084SS | 2026-08-31 | 2026-08-31 | 1d | 0d |
| 1086 | 1.1.2.19.5 | **NIVEL 3 APTO 301** | 2d | 2026-09-10 | 2026-09-11 |  | 2026-08-31 | 2026-09-01 | 2d | 0d |
| 1087 | 1.1.2.19.5.1 | Colocación de malla en muros | 1d | 2026-09-10 | 2026-09-10 | 1079FS-1d | 2026-08-31 | 2026-08-31 | 1d | 0d |
| 1088 | 1.1.2.19.5.2 | Instalaciones eléctricas y sanitarias | 1d | 2026-09-10 | 2026-09-10 | 1087SS | 2026-08-31 | 2026-08-31 | 1d | 0d |
| 1089 | 1.1.2.19.5.3 | Encofrado de muros | 1d | 2026-09-11 | 2026-09-11 | 1088 | 2026-09-01 | 2026-09-01 | 1d | 0d |
| 1090 | 1.1.2.19.5.4 | Encofrado de losa | 1d | 2026-09-11 | 2026-09-11 | 1089SS | 2026-09-01 | 2026-09-01 | 1d | 0d |
| 1091 | 1.1.2.19.5.5 | Colocacion de malla en losa de entrepiso | 1d | 2026-09-11 | 2026-09-11 | 1090SS | 2026-09-01 | 2026-09-01 | 1d | 0d |
| 1092 | 1.1.2.19.5.6 | Vaciado de muros y losa | 1d | 2026-09-11 | 2026-09-11 | 1091SS | 2026-09-01 | 2026-09-01 | 1d | 0d |

| ID | WBS | Task | Duration | Start | Finish | Predecessors | Baseline start | Baseline finish | Baseline duration | Total slack |
| --- | --- | --- | --- | --- | --- | --- | --- | --- | --- | --- |
| 1093 | 1.1.2.19.6 | **NIVEL 3 APTO 302** | 2d | 2026-09-11 | 2026-09-14 |  | 2026-09-01 | 2026-09-02 | 2d | 0d |
| 1094 | 1.1.2.19.6.1 | Colocación de malla en muros | 1d | 2026-09-11 | 2026-09-11 | 1086FS-1d | 2026-09-01 | 2026-09-01 | 1d | 0d |
| 1095 | 1.1.2.19.6.2 | Instalaciones eléctricas y sanitarias | 1d | 2026-09-11 | 2026-09-11 | 1094SS | 2026-09-01 | 2026-09-01 | 1d | 0d |
| 1096 | 1.1.2.19.6.3 | Encofrado de muros | 1d | 2026-09-14 | 2026-09-14 | 1095 | 2026-09-02 | 2026-09-02 | 1d | 0d |
| 1097 | 1.1.2.19.6.4 | Encofrado de losa | 1d | 2026-09-14 | 2026-09-14 | 1096SS | 2026-09-02 | 2026-09-02 | 1d | 0d |
| 1098 | 1.1.2.19.6.5 | Colocacion de malla en losa de entrepiso | 1d | 2026-09-14 | 2026-09-14 | 1097SS | 2026-09-02 | 2026-09-02 | 1d | 0d |
| 1099 | 1.1.2.19.6.6 | Vaciado de muros y losa | 1d | 2026-09-14 | 2026-09-14 | 1098SS | 2026-09-02 | 2026-09-02 | 1d | 0d |
| 1100 | 1.1.2.19.7 | ANTEPECHOS y TECHO ESCALERA EDIF 71 | 4d | 2026-09-16 | 2026-09-21 | 1099FS+1d | 2026-09-04 | 2026-09-09 | 4d | 43d |
| 1101 | 1.1.2.20 | **EDIFICIO 70** | 14d | 2026-09-11 | 2026-10-01 |  | 2026-09-01 | 2026-09-18 | 14d | 0d |
| 1102 | 1.1.2.20.1 | **NIVEL 1 APTO 101** | 4d | 2026-09-11 | 2026-09-16 |  | 2026-09-01 | 2026-09-04 | 4d | 0d |
| 1103 | 1.1.2.20.1.1 | Colocación de malla en muros | 1d | 2026-09-11 | 2026-09-11 | 1093FS-2d | 2026-09-01 | 2026-09-01 | 1d | 0d |
| 1104 | 1.1.2.20.1.2 | Instalaciones eléctricas,sanitarias | 1d | 2026-09-14 | 2026-09-14 | 1103 | 2026-09-02 | 2026-09-02 | 1d | 0d |
| 1105 | 1.1.2.20.1.3 | Encofrado de muros | 2d | 2026-09-15 | 2026-09-16 | 1104 | 2026-09-03 | 2026-09-04 | 2d | 0d |
| 1106 | 1.1.2.20.1.4 | Encofrado de losa | 2d | 2026-09-15 | 2026-09-16 | 1105SS | 2026-09-03 | 2026-09-04 | 2d | 0d |
| 1107 | 1.1.2.20.1.5 | Colocacion de malla en losa de entrepiso | 1d | 2026-09-16 | 2026-09-16 | 1106SS+1d | 2026-09-04 | 2026-09-04 | 1d | 0d |
| 1108 | 1.1.2.20.1.6 | Vaciado de muros y losa | 1d | 2026-09-16 | 2026-09-16 | 1107SS | 2026-09-04 | 2026-09-04 | 1d | 0d |
| 1109 | 1.1.2.20.2 | **NIVEL 1 APTO 102** | 2d | 2026-09-16 | 2026-09-17 |  | 2026-09-04 | 2026-09-07 | 2d | 0d |
| 1110 | 1.1.2.20.2.1 | Colocación de malla en muros | 1d | 2026-09-16 | 2026-09-16 | 1102FS-1d | 2026-09-04 | 2026-09-04 | 1d | 0d |
| 1111 | 1.1.2.20.2.2 | Instalaciones eléctricas y sanitarias | 1d | 2026-09-16 | 2026-09-16 | 1110SS | 2026-09-04 | 2026-09-04 | 1d | 0d |
| 1112 | 1.1.2.20.2.3 | Encofrado de muros | 1d | 2026-09-17 | 2026-09-17 | 1111 | 2026-09-07 | 2026-09-07 | 1d | 0d |
| 1113 | 1.1.2.20.2.4 | Encofrado de losa | 1d | 2026-09-17 | 2026-09-17 | 1112SS | 2026-09-07 | 2026-09-07 | 1d | 0d |
| 1114 | 1.1.2.20.2.5 | Colocacion de malla en losa de entrepiso | 1d | 2026-09-17 | 2026-09-17 | 1113SS | 2026-09-07 | 2026-09-07 | 1d | 0d |
| 1115 | 1.1.2.20.2.6 | Vaciado de muros y losa | 1d | 2026-09-17 | 2026-09-17 | 1114SS | 2026-09-07 | 2026-09-07 | 1d | 0d |
| 1116 | 1.1.2.20.3 | **NIVEL 2 APTO 201** | 2d | 2026-09-17 | 2026-09-18 |  | 2026-09-07 | 2026-09-08 | 2d | 0d |
| 1117 | 1.1.2.20.3.1 | Colocación de malla en muros | 1d | 2026-09-17 | 2026-09-17 | 1109FS-1d | 2026-09-07 | 2026-09-07 | 1d | 0d |
| 1118 | 1.1.2.20.3.2 | Instalaciones eléctricas y sanitarias | 1d | 2026-09-17 | 2026-09-17 | 1117SS | 2026-09-07 | 2026-09-07 | 1d | 0d |
| 1119 | 1.1.2.20.3.3 | Encofrado de muros | 1d | 2026-09-18 | 2026-09-18 | 1118 | 2026-09-08 | 2026-09-08 | 1d | 0d |
| 1120 | 1.1.2.20.3.4 | Encofrado de losa | 1d | 2026-09-18 | 2026-09-18 | 1119SS | 2026-09-08 | 2026-09-08 | 1d | 0d |
| 1121 | 1.1.2.20.3.5 | Colocacion de malla en losa de entrepiso | 1d | 2026-09-18 | 2026-09-18 | 1120SS | 2026-09-08 | 2026-09-08 | 1d | 0d |
| 1122 | 1.1.2.20.3.6 | Vaciado de muros y losa | 1d | 2026-09-18 | 2026-09-18 | 1121SS | 2026-09-08 | 2026-09-08 | 1d | 0d |

| ID | WBS | Task | Duration | Start | Finish | Predecessors | Baseline start | Baseline finish | Baseline duration | Total slack |
| --- | --- | --- | --- | --- | --- | --- | --- | --- | --- | --- |
| 1123 | 1.1.2.20.4 | **NIVEL 2 APTO 202** | 2d | 2026-09-18 | 2026-09-21 |  | 2026-09-08 | 2026-09-09 | 2d | 0d |
| 1124 | 1.1.2.20.4.1 | Colocaciónde malla en muros | 1d | 2026-09-18 | 2026-09-18 | 1116FS-1d | 2026-09-08 | 2026-09-08 | 1d | 0d |
| 1125 | 1.1.2.20.4.2 | Instalaciones eléctricas y sanitarias | 1d | 2026-09-18 | 2026-09-18 | 1124SS | 2026-09-08 | 2026-09-08 | 1d | 0d |
| 1126 | 1.1.2.20.4.3 | Encofrado de muros | 1d | 2026-09-21 | 2026-09-21 | 1125 | 2026-09-09 | 2026-09-09 | 1d | 0d |
| 1127 | 1.1.2.20.4.4 | Encofrado de losa | 1d | 2026-09-21 | 2026-09-21 | 1126SS | 2026-09-09 | 2026-09-09 | 1d | 0d |
| 1128 | 1.1.2.20.4.5 | Colocacion de malla en losa de entrepiso | 1d | 2026-09-21 | 2026-09-21 | 1127SS | 2026-09-09 | 2026-09-09 | 1d | 0d |
| 1129 | 1.1.2.20.4.6 | Vaciado de muros y losa | 1d | 2026-09-21 | 2026-09-21 | 1128SS | 2026-09-09 | 2026-09-09 | 1d | 0d |
| 1130 | 1.1.2.20.5 | **NIVEL 3 APTO 301** | 2d | 2026-09-21 | 2026-09-22 |  | 2026-09-09 | 2026-09-10 | 2d | 0d |
| 1131 | 1.1.2.20.5.1 | Colocación de malla en muros | 1d | 2026-09-21 | 2026-09-21 | 1123FS-1d | 2026-09-09 | 2026-09-09 | 1d | 0d |
| 1132 | 1.1.2.20.5.2 | Instalaciones eléctricas y sanitarias | 1d | 2026-09-21 | 2026-09-21 | 1131SS | 2026-09-09 | 2026-09-09 | 1d | 0d |
| 1133 | 1.1.2.20.5.3 | Encofrado de muros | 1d | 2026-09-22 | 2026-09-22 | 1132 | 2026-09-10 | 2026-09-10 | 1d | 0d |
| 1134 | 1.1.2.20.5.4 | Encofrado de losa | 1d | 2026-09-22 | 2026-09-22 | 1133SS | 2026-09-10 | 2026-09-10 | 1d | 0d |
| 1135 | 1.1.2.20.5.5 | Colocacion de malla en losa de entrepiso | 1d | 2026-09-22 | 2026-09-22 | 1134SS | 2026-09-10 | 2026-09-10 | 1d | 0d |
| 1136 | 1.1.2.20.5.6 | Vaciado de muros y losa | 1d | 2026-09-22 | 2026-09-22 | 1135SS | 2026-09-10 | 2026-09-10 | 1d | 0d |
| 1137 | 1.1.2.20.6 | **NIVEL 3 APTO 302** | 2d | 2026-09-22 | 2026-09-23 |  | 2026-09-10 | 2026-09-11 | 2d | 0d |
| 1138 | 1.1.2.20.6.1 | Colocación de malla en muros | 1d | 2026-09-22 | 2026-09-22 | 1130FS-1d | 2026-09-10 | 2026-09-10 | 1d | 0d |
| 1139 | 1.1.2.20.6.2 | Instalaciones eléctricas y sanitarias | 1d | 2026-09-22 | 2026-09-22 | 1138SS | 2026-09-10 | 2026-09-10 | 1d | 0d |
| 1140 | 1.1.2.20.6.3 | Encofrado de muros | 1d | 2026-09-23 | 2026-09-23 | 1139 | 2026-09-11 | 2026-09-11 | 1d | 0d |
| 1141 | 1.1.2.20.6.4 | Encofrado de losa | 1d | 2026-09-23 | 2026-09-23 | 1140SS | 2026-09-11 | 2026-09-11 | 1d | 0d |
| 1142 | 1.1.2.20.6.5 | Colocacion de malla en losa de entrepiso | 1d | 2026-09-23 | 2026-09-23 | 1141SS | 2026-09-11 | 2026-09-11 | 1d | 0d |
| 1143 | 1.1.2.20.6.6 | Vaciado de muros y losa | 1d | 2026-09-23 | 2026-09-23 | 1142SS | 2026-09-11 | 2026-09-11 | 1d | 0d |
| 1144 | 1.1.2.20.7 | ANTEPECHOS y TECHO ESCALERA EDIF 70 | 4d | 2026-09-28 | 2026-10-01 | 1143FS+1d | 2026-09-15 | 2026-09-18 | 4d | 36d |
| 1145 | 1.1.2.21 | **EDIFICIO 73** | 14d | 2026-09-22 | 2026-10-12 |  | 2026-09-10 | 2026-09-30 | 14d | 0d |
| 1146 | 1.1.2.21.1 | **NIVEL 1 APTO 101** | 4d | 2026-09-22 | 2026-09-28 |  | 2026-09-10 | 2026-09-15 | 4d | 0d |
| 1147 | 1.1.2.21.1.1 | Colocación de malla en muros | 1d | 2026-09-22 | 2026-09-22 | 1137FS-2d | 2026-09-10 | 2026-09-10 | 1d | 0d |
| 1148 | 1.1.2.21.1.2 | Instalaciones eléctricas,sanitarias | 1d | 2026-09-23 | 2026-09-23 | 1147 | 2026-09-11 | 2026-09-11 | 1d | 0d |
| 1149 | 1.1.2.21.1.3 | Encofrado de muros | 2d | 2026-09-25 | 2026-09-28 | 1148 | 2026-09-14 | 2026-09-15 | 2d | 0d |
| 1150 | 1.1.2.21.1.4 | Encofrado de losa | 2d | 2026-09-25 | 2026-09-28 | 1149SS | 2026-09-14 | 2026-09-15 | 2d | 0d |
| 1151 | 1.1.2.21.1.5 | Colocacion de malla en losa de entrepiso | 1d | 2026-09-28 | 2026-09-28 | 1150SS+1d | 2026-09-15 | 2026-09-15 | 1d | 0d |
| 1152 | 1.1.2.21.1.6 | Vaciado de muros y losa | 1d | 2026-09-28 | 2026-09-28 | 1151SS | 2026-09-15 | 2026-09-15 | 1d | 0d |

| ID | WBS | Task | Duration | Start | Finish | Predecessors | Baseline start | Baseline finish | Baseline duration | Total slack |
| --- | --- | --- | --- | --- | --- | --- | --- | --- | --- | --- |
| 1153 | 1.1.2.21.2 | **NIVEL 1 APTO 102** | 2d | 2026-09-28 | 2026-09-29 |  | 2026-09-15 | 2026-09-16 | 2d | 0d |
| 1154 | 1.1.2.21.2.1 | Colocación de malla en muros | 1d | 2026-09-28 | 2026-09-28 | 1146FS-1d | 2026-09-15 | 2026-09-15 | 1d | 0d |
| 1155 | 1.1.2.21.2.2 | Instalaciones eléctricas y sanitarias | 1d | 2026-09-28 | 2026-09-28 | 1154SS | 2026-09-15 | 2026-09-15 | 1d | 0d |
| 1156 | 1.1.2.21.2.3 | Encofrado de muros | 1d | 2026-09-29 | 2026-09-29 | 1155 | 2026-09-16 | 2026-09-16 | 1d | 0d |
| 1157 | 1.1.2.21.2.4 | Encofrado de losa | 1d | 2026-09-29 | 2026-09-29 | 1156SS | 2026-09-16 | 2026-09-16 | 1d | 0d |
| 1158 | 1.1.2.21.2.5 | Colocacion de malla en losa de entrepiso | 1d | 2026-09-29 | 2026-09-29 | 1157SS | 2026-09-16 | 2026-09-16 | 1d | 0d |
| 1159 | 1.1.2.21.2.6 | Vaciado de muros y losa | 1d | 2026-09-29 | 2026-09-29 | 1158SS | 2026-09-16 | 2026-09-16 | 1d | 0d |
| 1160 | 1.1.2.21.3 | **NIVEL 2 APTO 201** | 2d | 2026-09-29 | 2026-09-30 |  | 2026-09-16 | 2026-09-17 | 2d | 0d |
| 1161 | 1.1.2.21.3.1 | Colocación de malla en muros | 1d | 2026-09-29 | 2026-09-29 | 1153FS-1d | 2026-09-16 | 2026-09-16 | 1d | 0d |
| 1162 | 1.1.2.21.3.2 | Instalaciones eléctricas y sanitarias | 1d | 2026-09-29 | 2026-09-29 | 1161SS | 2026-09-16 | 2026-09-16 | 1d | 0d |
| 1163 | 1.1.2.21.3.3 | Encofrado de muros | 1d | 2026-09-30 | 2026-09-30 | 1162 | 2026-09-17 | 2026-09-17 | 1d | 0d |
| 1164 | 1.1.2.21.3.4 | Encofrado de losa | 1d | 2026-09-30 | 2026-09-30 | 1163SS | 2026-09-17 | 2026-09-17 | 1d | 0d |
| 1165 | 1.1.2.21.3.5 | Colocacion de malla en losa de entrepiso | 1d | 2026-09-30 | 2026-09-30 | 1164SS | 2026-09-17 | 2026-09-17 | 1d | 0d |
| 1166 | 1.1.2.21.3.6 | Vaciado de muros y losa | 1d | 2026-09-30 | 2026-09-30 | 1165SS | 2026-09-17 | 2026-09-17 | 1d | 0d |
| 1167 | 1.1.2.21.4 | **NIVEL 2 APTO 202** | 2d | 2026-09-30 | 2026-10-01 |  | 2026-09-17 | 2026-09-18 | 2d | 0d |
| 1168 | 1.1.2.21.4.1 | Colocaciónde malla en muros | 1d | 2026-09-30 | 2026-09-30 | 1160FS-1d | 2026-09-17 | 2026-09-17 | 1d | 0d |
| 1169 | 1.1.2.21.4.2 | Instalaciones eléctricas y sanitarias | 1d | 2026-09-30 | 2026-09-30 | 1168SS | 2026-09-17 | 2026-09-17 | 1d | 0d |
| 1170 | 1.1.2.21.4.3 | Encofrado de muros | 1d | 2026-10-01 | 2026-10-01 | 1169 | 2026-09-18 | 2026-09-18 | 1d | 0d |
| 1171 | 1.1.2.21.4.4 | Encofrado de losa | 1d | 2026-10-01 | 2026-10-01 | 1170SS | 2026-09-18 | 2026-09-18 | 1d | 0d |
| 1172 | 1.1.2.21.4.5 | Colocacion de malla en losa de entrepiso | 1d | 2026-10-01 | 2026-10-01 | 1171SS | 2026-09-18 | 2026-09-18 | 1d | 0d |
| 1173 | 1.1.2.21.4.6 | Vaciado de muros y losa | 1d | 2026-10-01 | 2026-10-01 | 1172SS | 2026-09-18 | 2026-09-18 | 1d | 0d |
| 1174 | 1.1.2.21.5 | **NIVEL 3 APTO 301** | 2d | 2026-10-01 | 2026-10-02 |  | 2026-09-18 | 2026-09-21 | 2d | 0d |
| 1175 | 1.1.2.21.5.1 | Colocación de malla en muros | 1d | 2026-10-01 | 2026-10-01 | 1167FS-1d | 2026-09-18 | 2026-09-18 | 1d | 0d |
| 1176 | 1.1.2.21.5.2 | Instalaciones eléctricas y sanitarias | 1d | 2026-10-01 | 2026-10-01 | 1175SS | 2026-09-18 | 2026-09-18 | 1d | 0d |
| 1177 | 1.1.2.21.5.3 | Encofrado de muros | 1d | 2026-10-02 | 2026-10-02 | 1176 | 2026-09-21 | 2026-09-21 | 1d | 0d |
| 1178 | 1.1.2.21.5.4 | Encofrado de losa | 1d | 2026-10-02 | 2026-10-02 | 1177SS | 2026-09-21 | 2026-09-21 | 1d | 0d |
| 1179 | 1.1.2.21.5.5 | Colocacion de malla en losa de entrepiso | 1d | 2026-10-02 | 2026-10-02 | 1178SS | 2026-09-21 | 2026-09-21 | 1d | 0d |
| 1180 | 1.1.2.21.5.6 | Vaciado de muros y losa | 1d | 2026-10-02 | 2026-10-02 | 1179SS | 2026-09-21 | 2026-09-21 | 1d | 0d |

| ID | WBS | Task | Duration | Start | Finish | Predecessors | Baseline start | Baseline finish | Baseline duration | Total slack |
| --- | --- | --- | --- | --- | --- | --- | --- | --- | --- | --- |
| 1181 | 1.1.2.21.6 | **NIVEL 3 APTO 302** | 2d | 2026-10-02 | 2026-10-05 |  | 2026-09-21 | 2026-09-22 | 2d | 0d |
| 1182 | 1.1.2.21.6.1 | Colocación de malla en muros | 1d | 2026-10-02 | 2026-10-02 | 1174FS-1d | 2026-09-21 | 2026-09-21 | 1d | 0d |
| 1183 | 1.1.2.21.6.2 | Instalaciones eléctricas y sanitarias | 1d | 2026-10-02 | 2026-10-02 | 1182SS | 2026-09-21 | 2026-09-21 | 1d | 0d |
| 1184 | 1.1.2.21.6.3 | Encofrado de muros | 1d | 2026-10-05 | 2026-10-05 | 1183 | 2026-09-22 | 2026-09-22 | 1d | 0d |
| 1185 | 1.1.2.21.6.4 | Encofrado de losa | 1d | 2026-10-05 | 2026-10-05 | 1184SS | 2026-09-22 | 2026-09-22 | 1d | 0d |
| 1186 | 1.1.2.21.6.5 | Colocacion de malla en losa de entrepiso | 1d | 2026-10-05 | 2026-10-05 | 1185SS | 2026-09-22 | 2026-09-22 | 1d | 0d |
| 1187 | 1.1.2.21.6.6 | Vaciado de muros y losa | 1d | 2026-10-05 | 2026-10-05 | 1186SS | 2026-09-22 | 2026-09-22 | 1d | 0d |
| 1188 | 1.1.2.21.7 | ANTEPECHOS y TECHO ESCALERA EDIF 73 | 4d | 2026-10-07 | 2026-10-12 | 1187FS+1d | 2026-09-25 | 2026-09-30 | 4d | 29d |
| 1189 | 1.1.2.22 | **EDIFICIO 72** | 14d | 2026-10-01 | 2026-10-20 |  | 2026-09-21 | 2026-10-09 | 14d | 0d |
| 1190 | 1.1.2.22.1 | **NIVEL 1 APTO 101** | 4d | 2026-10-01 | 2026-10-06 |  | 2026-09-21 | 2026-09-25 | 4d | 0d |
| 1191 | 1.1.2.22.1.1 | Colocación de malla en muros | 1d | 2026-10-01 | 2026-10-01 | 1181FS-3d | 2026-09-21 | 2026-09-21 | 1d | 0d |
| 1192 | 1.1.2.22.1.2 | Instalaciones eléctricas,sanitarias | 1d | 2026-10-02 | 2026-10-02 | 1191 | 2026-09-22 | 2026-09-22 | 1d | 0d |
| 1193 | 1.1.2.22.1.3 | Encofrado de muros | 2d | 2026-10-05 | 2026-10-06 | 1192 | 2026-09-23 | 2026-09-25 | 2d | 0d |
| 1194 | 1.1.2.22.1.4 | Encofrado de losa | 2d | 2026-10-05 | 2026-10-06 | 1193SS | 2026-09-23 | 2026-09-25 | 2d | 0d |
| 1195 | 1.1.2.22.1.5 | Colocacion de malla en losa de entrepiso | 1d | 2026-10-06 | 2026-10-06 | 1194SS+1d | 2026-09-25 | 2026-09-25 | 1d | 0d |
| 1196 | 1.1.2.22.1.6 | Vaciado de muros y losa | 1d | 2026-10-06 | 2026-10-06 | 1195SS | 2026-09-25 | 2026-09-25 | 1d | 0d |
| 1197 | 1.1.2.22.2 | **NIVEL 1 APTO 102** | 2d | 2026-10-06 | 2026-10-07 |  | 2026-09-25 | 2026-09-28 | 2d | 0d |
| 1198 | 1.1.2.22.2.1 | Colocación de malla en muros | 1d | 2026-10-06 | 2026-10-06 | 1190FS-1d | 2026-09-25 | 2026-09-25 | 1d | 0d |
| 1199 | 1.1.2.22.2.2 | Instalaciones eléctricas y sanitarias | 1d | 2026-10-06 | 2026-10-06 | 1198SS | 2026-09-25 | 2026-09-25 | 1d | 0d |
| 1200 | 1.1.2.22.2.3 | Encofrado de muros | 1d | 2026-10-07 | 2026-10-07 | 1199 | 2026-09-28 | 2026-09-28 | 1d | 0d |
| 1201 | 1.1.2.22.2.4 | Encofrado de losa | 1d | 2026-10-07 | 2026-10-07 | 1200SS | 2026-09-28 | 2026-09-28 | 1d | 0d |
| 1202 | 1.1.2.22.2.5 | Colocacion de malla en losa de entrepiso | 1d | 2026-10-07 | 2026-10-07 | 1201SS | 2026-09-28 | 2026-09-28 | 1d | 0d |
| 1203 | 1.1.2.22.2.6 | Vaciado de muros y losa | 1d | 2026-10-07 | 2026-10-07 | 1202SS | 2026-09-28 | 2026-09-28 | 1d | 0d |
| 1204 | 1.1.2.22.3 | **NIVEL 2 APTO 201** | 2d | 2026-10-07 | 2026-10-08 |  | 2026-09-28 | 2026-09-29 | 2d | 0d |
| 1205 | 1.1.2.22.3.1 | Colocación de malla en muros | 1d | 2026-10-07 | 2026-10-07 | 1197FS-1d | 2026-09-28 | 2026-09-28 | 1d | 0d |
| 1206 | 1.1.2.22.3.2 | Instalaciones eléctricas y sanitarias | 1d | 2026-10-07 | 2026-10-07 | 1205SS | 2026-09-28 | 2026-09-28 | 1d | 0d |
| 1207 | 1.1.2.22.3.3 | Encofrado de muros | 1d | 2026-10-08 | 2026-10-08 | 1206 | 2026-09-29 | 2026-09-29 | 1d | 0d |
| 1208 | 1.1.2.22.3.4 | Encofrado de losa | 1d | 2026-10-08 | 2026-10-08 | 1207SS | 2026-09-29 | 2026-09-29 | 1d | 0d |
| 1209 | 1.1.2.22.3.5 | Colocacion de malla en losa de entrepiso | 1d | 2026-10-08 | 2026-10-08 | 1208SS | 2026-09-29 | 2026-09-29 | 1d | 0d |
| 1210 | 1.1.2.22.3.6 | Vaciado de muros y losa | 1d | 2026-10-08 | 2026-10-08 | 1209SS | 2026-09-29 | 2026-09-29 | 1d | 0d |

| ID | WBS | Task | Duration | Start | Finish | Predecessors | Baseline start | Baseline finish | Baseline duration | Total slack |
| --- | --- | --- | --- | --- | --- | --- | --- | --- | --- | --- |
| 1211 | 1.1.2.22.4 | **NIVEL 2 APTO 202** | 2d | 2026-10-08 | 2026-10-09 |  | 2026-09-29 | 2026-09-30 | 2d | 0d |
| 1212 | 1.1.2.22.4.1 | Colocaciónde malla en muros | 1d | 2026-10-08 | 2026-10-08 | 1204FS-1d | 2026-09-29 | 2026-09-29 | 1d | 0d |
| 1213 | 1.1.2.22.4.2 | Instalaciones eléctricas y sanitarias | 1d | 2026-10-08 | 2026-10-08 | 1212SS | 2026-09-29 | 2026-09-29 | 1d | 0d |
| 1214 | 1.1.2.22.4.3 | Encofrado de muros | 1d | 2026-10-09 | 2026-10-09 | 1213 | 2026-09-30 | 2026-09-30 | 1d | 0d |
| 1215 | 1.1.2.22.4.4 | Encofrado de losa | 1d | 2026-10-09 | 2026-10-09 | 1214SS | 2026-09-30 | 2026-09-30 | 1d | 0d |
| 1216 | 1.1.2.22.4.5 | Colocacion de malla en losa de entrepiso | 1d | 2026-10-09 | 2026-10-09 | 1215SS | 2026-09-30 | 2026-09-30 | 1d | 0d |
| 1217 | 1.1.2.22.4.6 | Vaciado de muros y losa | 1d | 2026-10-09 | 2026-10-09 | 1216SS | 2026-09-30 | 2026-09-30 | 1d | 0d |
| 1218 | 1.1.2.22.5 | **NIVEL 3 APTO 301** | 2d | 2026-10-09 | 2026-10-12 |  | 2026-09-30 | 2026-10-01 | 2d | 0d |
| 1219 | 1.1.2.22.5.1 | Colocación de malla en muros | 1d | 2026-10-09 | 2026-10-09 | 1211FS-1d | 2026-09-30 | 2026-09-30 | 1d | 0d |
| 1220 | 1.1.2.22.5.2 | Instalaciones eléctricas y sanitarias | 1d | 2026-10-09 | 2026-10-09 | 1219SS | 2026-09-30 | 2026-09-30 | 1d | 0d |
| 1221 | 1.1.2.22.5.3 | Encofrado de muros | 1d | 2026-10-12 | 2026-10-12 | 1220 | 2026-10-01 | 2026-10-01 | 1d | 0d |
| 1222 | 1.1.2.22.5.4 | Encofrado de losa | 1d | 2026-10-12 | 2026-10-12 | 1221SS | 2026-10-01 | 2026-10-01 | 1d | 0d |
| 1223 | 1.1.2.22.5.5 | Colocacion de malla en losa de entrepiso | 1d | 2026-10-12 | 2026-10-12 | 1222SS | 2026-10-01 | 2026-10-01 | 1d | 0d |
| 1224 | 1.1.2.22.5.6 | Vaciado de muros y losa | 1d | 2026-10-12 | 2026-10-12 | 1223SS | 2026-10-01 | 2026-10-01 | 1d | 0d |
| 1225 | 1.1.2.22.6 | **NIVEL 3 APTO 302** | 2d | 2026-10-12 | 2026-10-13 |  | 2026-10-01 | 2026-10-02 | 2d | 0d |
| 1226 | 1.1.2.22.6.1 | Colocación de malla en muros | 1d | 2026-10-12 | 2026-10-12 | 1218FS-1d | 2026-10-01 | 2026-10-01 | 1d | 0d |
| 1227 | 1.1.2.22.6.2 | Instalaciones eléctricas y sanitarias | 1d | 2026-10-12 | 2026-10-12 | 1226SS | 2026-10-01 | 2026-10-01 | 1d | 0d |
| 1228 | 1.1.2.22.6.3 | Encofrado de muros | 1d | 2026-10-13 | 2026-10-13 | 1227 | 2026-10-02 | 2026-10-02 | 1d | 0d |
| 1229 | 1.1.2.22.6.4 | Encofrado de losa | 1d | 2026-10-13 | 2026-10-13 | 1228SS | 2026-10-02 | 2026-10-02 | 1d | 0d |
| 1230 | 1.1.2.22.6.5 | Colocacion de malla en losa de entrepiso | 1d | 2026-10-13 | 2026-10-13 | 1229SS | 2026-10-02 | 2026-10-02 | 1d | 0d |
| 1231 | 1.1.2.22.6.6 | Vaciado de muros y losa | 1d | 2026-10-13 | 2026-10-13 | 1230SS | 2026-10-02 | 2026-10-02 | 1d | 0d |
| 1232 | 1.1.2.22.7 | ANTEPECHOS y TECHO ESCALERA EDIF 72 | 4d | 2026-10-15 | 2026-10-20 | 1231FS+1d | 2026-10-06 | 2026-10-09 | 4d | 23d |
| 1233 | 1.1.2.23 | **EDIFICIO 75** | 14d | 2026-10-12 | 2026-10-29 |  | 2026-10-01 | 2026-10-20 | 14d | 0d |
| 1234 | 1.1.2.23.1 | **NIVEL 1 APTO 101** | 4d | 2026-10-12 | 2026-10-15 |  | 2026-10-01 | 2026-10-06 | 4d | 0d |
| 1235 | 1.1.2.23.1.1 | Colocación de malla en muros | 1d | 2026-10-12 | 2026-10-12 | 1225FS-2d | 2026-10-01 | 2026-10-01 | 1d | 0d |
| 1236 | 1.1.2.23.1.2 | Instalaciones eléctricas,sanitarias | 1d | 2026-10-13 | 2026-10-13 | 1235 | 2026-10-02 | 2026-10-02 | 1d | 0d |
| 1237 | 1.1.2.23.1.3 | Encofrado de muros | 2d | 2026-10-14 | 2026-10-15 | 1236 | 2026-10-05 | 2026-10-06 | 2d | 0d |
| 1238 | 1.1.2.23.1.4 | Encofrado de losa | 2d | 2026-10-14 | 2026-10-15 | 1237SS | 2026-10-05 | 2026-10-06 | 2d | 0d |
| 1239 | 1.1.2.23.1.5 | Colocacion de malla en losa de entrepiso | 1d | 2026-10-15 | 2026-10-15 | 1238SS+1d | 2026-10-06 | 2026-10-06 | 1d | 0d |
| 1240 | 1.1.2.23.1.6 | Vaciado de muros y losa | 1d | 2026-10-15 | 2026-10-15 | 1239SS | 2026-10-06 | 2026-10-06 | 1d | 0d |

| ID | WBS | Task | Duration | Start | Finish | Predecessors | Baseline start | Baseline finish | Baseline duration | Total slack |
| --- | --- | --- | --- | --- | --- | --- | --- | --- | --- | --- |
| 1241 | 1.1.2.23.2 | **NIVEL 1 APTO 102** | 2d | 2026-10-15 | 2026-10-16 |  | 2026-10-06 | 2026-10-07 | 2d | 0d |
| 1242 | 1.1.2.23.2.1 | Colocación de malla en muros | 1d | 2026-10-15 | 2026-10-15 | 1234FS-1d | 2026-10-06 | 2026-10-06 | 1d | 0d |
| 1243 | 1.1.2.23.2.2 | Instalaciones eléctricas y sanitarias | 1d | 2026-10-15 | 2026-10-15 | 1242SS | 2026-10-06 | 2026-10-06 | 1d | 0d |
| 1244 | 1.1.2.23.2.3 | Encofrado de muros | 1d | 2026-10-16 | 2026-10-16 | 1243 | 2026-10-07 | 2026-10-07 | 1d | 0d |
| 1245 | 1.1.2.23.2.4 | Encofrado de losa | 1d | 2026-10-16 | 2026-10-16 | 1244SS | 2026-10-07 | 2026-10-07 | 1d | 0d |
| 1246 | 1.1.2.23.2.5 | Colocacion de malla en losa de entrepiso | 1d | 2026-10-16 | 2026-10-16 | 1245SS | 2026-10-07 | 2026-10-07 | 1d | 0d |
| 1247 | 1.1.2.23.2.6 | Vaciado de muros y losa | 1d | 2026-10-16 | 2026-10-16 | 1246SS | 2026-10-07 | 2026-10-07 | 1d | 0d |
| 1248 | 1.1.2.23.3 | **NIVEL 2 APTO 201** | 2d | 2026-10-16 | 2026-10-19 |  | 2026-10-07 | 2026-10-08 | 2d | 0d |
| 1249 | 1.1.2.23.3.1 | Colocación de malla en muros | 1d | 2026-10-16 | 2026-10-16 | 1241FS-1d | 2026-10-07 | 2026-10-07 | 1d | 0d |
| 1250 | 1.1.2.23.3.2 | Instalaciones eléctricas y sanitarias | 1d | 2026-10-16 | 2026-10-16 | 1249SS | 2026-10-07 | 2026-10-07 | 1d | 0d |
| 1251 | 1.1.2.23.3.3 | Encofrado de muros | 1d | 2026-10-19 | 2026-10-19 | 1250 | 2026-10-08 | 2026-10-08 | 1d | 0d |
| 1252 | 1.1.2.23.3.4 | Encofrado de losa | 1d | 2026-10-19 | 2026-10-19 | 1251SS | 2026-10-08 | 2026-10-08 | 1d | 0d |
| 1253 | 1.1.2.23.3.5 | Colocacion de malla en losa de entrepiso | 1d | 2026-10-19 | 2026-10-19 | 1252SS | 2026-10-08 | 2026-10-08 | 1d | 0d |
| 1254 | 1.1.2.23.3.6 | Vaciado de muros y losa | 1d | 2026-10-19 | 2026-10-19 | 1253SS | 2026-10-08 | 2026-10-08 | 1d | 0d |
| 1255 | 1.1.2.23.4 | **NIVEL 2 APTO 202** | 2d | 2026-10-19 | 2026-10-20 |  | 2026-10-08 | 2026-10-09 | 2d | 0d |
| 1256 | 1.1.2.23.4.1 | Colocaciónde malla en muros | 1d | 2026-10-19 | 2026-10-19 | 1248FS-1d | 2026-10-08 | 2026-10-08 | 1d | 0d |
| 1257 | 1.1.2.23.4.2 | Instalaciones eléctricas y sanitarias | 1d | 2026-10-19 | 2026-10-19 | 1256SS | 2026-10-08 | 2026-10-08 | 1d | 0d |
| 1258 | 1.1.2.23.4.3 | Encofrado de muros | 1d | 2026-10-20 | 2026-10-20 | 1257 | 2026-10-09 | 2026-10-09 | 1d | 0d |
| 1259 | 1.1.2.23.4.4 | Encofrado de losa | 1d | 2026-10-20 | 2026-10-20 | 1258SS | 2026-10-09 | 2026-10-09 | 1d | 0d |
| 1260 | 1.1.2.23.4.5 | Colocacion de malla en losa de entrepiso | 1d | 2026-10-20 | 2026-10-20 | 1259SS | 2026-10-09 | 2026-10-09 | 1d | 0d |
| 1261 | 1.1.2.23.4.6 | Vaciado de muros y losa | 1d | 2026-10-20 | 2026-10-20 | 1260SS | 2026-10-09 | 2026-10-09 | 1d | 0d |
| 1262 | 1.1.2.23.5 | **NIVEL 3 APTO 301** | 2d | 2026-10-20 | 2026-10-21 |  | 2026-10-09 | 2026-10-12 | 2d | 0d |
| 1263 | 1.1.2.23.5.1 | Colocación de malla en muros | 1d | 2026-10-20 | 2026-10-20 | 1255FS-1d | 2026-10-09 | 2026-10-09 | 1d | 0d |
| 1264 | 1.1.2.23.5.2 | Instalaciones eléctricas y sanitarias | 1d | 2026-10-20 | 2026-10-20 | 1263SS | 2026-10-09 | 2026-10-09 | 1d | 0d |
| 1265 | 1.1.2.23.5.3 | Encofrado de muros | 1d | 2026-10-21 | 2026-10-21 | 1264 | 2026-10-12 | 2026-10-12 | 1d | 0d |
| 1266 | 1.1.2.23.5.4 | Encofrado de losa | 1d | 2026-10-21 | 2026-10-21 | 1265SS | 2026-10-12 | 2026-10-12 | 1d | 0d |
| 1267 | 1.1.2.23.5.5 | Colocacion de malla en losa de entrepiso | 1d | 2026-10-21 | 2026-10-21 | 1266SS | 2026-10-12 | 2026-10-12 | 1d | 0d |
| 1268 | 1.1.2.23.5.6 | Vaciado de muros y losa | 1d | 2026-10-21 | 2026-10-21 | 1267SS | 2026-10-12 | 2026-10-12 | 1d | 0d |

| ID | WBS | Task | Duration | Start | Finish | Predecessors | Baseline start | Baseline finish | Baseline duration | Total slack |
| --- | --- | --- | --- | --- | --- | --- | --- | --- | --- | --- |
| 1269 | 1.1.2.23.6 | **NIVEL 3 APTO 302** | 2d | 2026-10-21 | 2026-10-22 |  | 2026-10-12 | 2026-10-13 | 2d | 0d |
| 1270 | 1.1.2.23.6.1 | Colocación de malla en muros | 1d | 2026-10-21 | 2026-10-21 | 1262FS-1d | 2026-10-12 | 2026-10-12 | 1d | 0d |
| 1271 | 1.1.2.23.6.2 | Instalaciones eléctricas y sanitarias | 1d | 2026-10-21 | 2026-10-21 | 1270SS | 2026-10-12 | 2026-10-12 | 1d | 0d |
| 1272 | 1.1.2.23.6.3 | Encofrado de muros | 1d | 2026-10-22 | 2026-10-22 | 1271 | 2026-10-13 | 2026-10-13 | 1d | 0d |
| 1273 | 1.1.2.23.6.4 | Encofrado de losa | 1d | 2026-10-22 | 2026-10-22 | 1272SS | 2026-10-13 | 2026-10-13 | 1d | 0d |
| 1274 | 1.1.2.23.6.5 | Colocacion de malla en losa de entrepiso | 1d | 2026-10-22 | 2026-10-22 | 1273SS | 2026-10-13 | 2026-10-13 | 1d | 0d |
| 1275 | 1.1.2.23.6.6 | Vaciado de muros y losa | 1d | 2026-10-22 | 2026-10-22 | 1274SS | 2026-10-13 | 2026-10-13 | 1d | 0d |
| 1276 | 1.1.2.23.7 | ANTEPECHOS y TECHO ESCALERA EDIF 75 | 4d | 2026-10-26 | 2026-10-29 | 1275FS+1d | 2026-10-15 | 2026-10-20 | 4d | 16d |
| 1277 | 1.1.2.24 | **EDIFICIO 74** | 14d | 2026-10-20 | 2026-11-06 |  | 2026-10-12 | 2026-10-29 | 14d | 0d |
| 1278 | 1.1.2.24.1 | **NIVEL 1 APTO 101** | 4d | 2026-10-20 | 2026-10-23 |  | 2026-10-12 | 2026-10-15 | 4d | 0d |
| 1279 | 1.1.2.24.1.1 | Colocación de malla en muros | 1d | 2026-10-20 | 2026-10-20 | 1269FS-3d | 2026-10-12 | 2026-10-12 | 1d | 0d |
| 1280 | 1.1.2.24.1.2 | Instalaciones eléctricas,sanitarias | 1d | 2026-10-21 | 2026-10-21 | 1279 | 2026-10-13 | 2026-10-13 | 1d | 0d |
| 1281 | 1.1.2.24.1.3 | Encofrado de muros | 2d | 2026-10-22 | 2026-10-23 | 1280 | 2026-10-14 | 2026-10-15 | 2d | 0d |
| 1282 | 1.1.2.24.1.4 | Encofrado de losa | 2d | 2026-10-22 | 2026-10-23 | 1281SS | 2026-10-14 | 2026-10-15 | 2d | 0d |
| 1283 | 1.1.2.24.1.5 | Colocacion de malla en losa de entrepiso | 1d | 2026-10-23 | 2026-10-23 | 1282SS+1d | 2026-10-15 | 2026-10-15 | 1d | 0d |
| 1284 | 1.1.2.24.1.6 | Vaciado de muros y losa | 1d | 2026-10-23 | 2026-10-23 | 1283SS | 2026-10-15 | 2026-10-15 | 1d | 0d |
| 1285 | 1.1.2.24.2 | **NIVEL 1 APTO 102** | 2d | 2026-10-23 | 2026-10-26 |  | 2026-10-15 | 2026-10-16 | 2d | 0d |
| 1286 | 1.1.2.24.2.1 | Colocación de malla en muros | 1d | 2026-10-23 | 2026-10-23 | 1278FS-1d | 2026-10-15 | 2026-10-15 | 1d | 0d |
| 1287 | 1.1.2.24.2.2 | Instalaciones eléctricas y sanitarias | 1d | 2026-10-23 | 2026-10-23 | 1286SS | 2026-10-15 | 2026-10-15 | 1d | 0d |
| 1288 | 1.1.2.24.2.3 | Encofrado de muros | 1d | 2026-10-26 | 2026-10-26 | 1287 | 2026-10-16 | 2026-10-16 | 1d | 0d |
| 1289 | 1.1.2.24.2.4 | Encofrado de losa | 1d | 2026-10-26 | 2026-10-26 | 1288SS | 2026-10-16 | 2026-10-16 | 1d | 0d |
| 1290 | 1.1.2.24.2.5 | Colocacion de malla en losa de entrepiso | 1d | 2026-10-26 | 2026-10-26 | 1289SS | 2026-10-16 | 2026-10-16 | 1d | 0d |
| 1291 | 1.1.2.24.2.6 | Vaciado de muros y losa | 1d | 2026-10-26 | 2026-10-26 | 1290SS | 2026-10-16 | 2026-10-16 | 1d | 0d |
| 1292 | 1.1.2.24.3 | **NIVEL 2 APTO 201** | 2d | 2026-10-26 | 2026-10-27 |  | 2026-10-16 | 2026-10-19 | 2d | 0d |
| 1293 | 1.1.2.24.3.1 | Colocación de malla en muros | 1d | 2026-10-26 | 2026-10-26 | 1285FS-1d | 2026-10-16 | 2026-10-16 | 1d | 0d |
| 1294 | 1.1.2.24.3.2 | Instalaciones eléctricas y sanitarias | 1d | 2026-10-26 | 2026-10-26 | 1293SS | 2026-10-16 | 2026-10-16 | 1d | 0d |
| 1295 | 1.1.2.24.3.3 | Encofrado de muros | 1d | 2026-10-27 | 2026-10-27 | 1294 | 2026-10-19 | 2026-10-19 | 1d | 0d |
| 1296 | 1.1.2.24.3.4 | Encofrado de losa | 1d | 2026-10-27 | 2026-10-27 | 1295SS | 2026-10-19 | 2026-10-19 | 1d | 0d |
| 1297 | 1.1.2.24.3.5 | Colocacion de malla en losa de entrepiso | 1d | 2026-10-27 | 2026-10-27 | 1296SS | 2026-10-19 | 2026-10-19 | 1d | 0d |
| 1298 | 1.1.2.24.3.6 | Vaciado de muros y losa | 1d | 2026-10-27 | 2026-10-27 | 1297SS | 2026-10-19 | 2026-10-19 | 1d | 0d |

| ID | WBS | Task | Duration | Start | Finish | Predecessors | Baseline start | Baseline finish | Baseline duration | Total slack |
| --- | --- | --- | --- | --- | --- | --- | --- | --- | --- | --- |
| 1299 | 1.1.2.24.4 | **NIVEL 2 APTO 202** | 2d | 2026-10-27 | 2026-10-28 |  | 2026-10-19 | 2026-10-20 | 2d | 0d |
| 1300 | 1.1.2.24.4.1 | Colocaciónde malla en muros | 1d | 2026-10-27 | 2026-10-27 | 1292FS-1d | 2026-10-19 | 2026-10-19 | 1d | 0d |
| 1301 | 1.1.2.24.4.2 | Instalaciones eléctricas y sanitarias | 1d | 2026-10-27 | 2026-10-27 | 1300SS | 2026-10-19 | 2026-10-19 | 1d | 0d |
| 1302 | 1.1.2.24.4.3 | Encofrado de muros | 1d | 2026-10-28 | 2026-10-28 | 1301 | 2026-10-20 | 2026-10-20 | 1d | 0d |
| 1303 | 1.1.2.24.4.4 | Encofrado de losa | 1d | 2026-10-28 | 2026-10-28 | 1302SS | 2026-10-20 | 2026-10-20 | 1d | 0d |
| 1304 | 1.1.2.24.4.5 | Colocacion de malla en losa de entrepiso | 1d | 2026-10-28 | 2026-10-28 | 1303SS | 2026-10-20 | 2026-10-20 | 1d | 0d |
| 1305 | 1.1.2.24.4.6 | Vaciado de muros y losa | 1d | 2026-10-28 | 2026-10-28 | 1304SS | 2026-10-20 | 2026-10-20 | 1d | 0d |
| 1306 | 1.1.2.24.5 | **NIVEL 3 APTO 301** | 2d | 2026-10-28 | 2026-10-29 |  | 2026-10-20 | 2026-10-21 | 2d | 0d |
| 1307 | 1.1.2.24.5.1 | Colocación de malla en muros | 1d | 2026-10-28 | 2026-10-28 | 1299FS-1d | 2026-10-20 | 2026-10-20 | 1d | 0d |
| 1308 | 1.1.2.24.5.2 | Instalaciones eléctricas y sanitarias | 1d | 2026-10-28 | 2026-10-28 | 1307SS | 2026-10-20 | 2026-10-20 | 1d | 0d |
| 1309 | 1.1.2.24.5.3 | Encofrado de muros | 1d | 2026-10-29 | 2026-10-29 | 1308 | 2026-10-21 | 2026-10-21 | 1d | 0d |
| 1310 | 1.1.2.24.5.4 | Encofrado de losa | 1d | 2026-10-29 | 2026-10-29 | 1309SS | 2026-10-21 | 2026-10-21 | 1d | 0d |
| 1311 | 1.1.2.24.5.5 | Colocacion de malla en losa de entrepiso | 1d | 2026-10-29 | 2026-10-29 | 1310SS | 2026-10-21 | 2026-10-21 | 1d | 0d |
| 1312 | 1.1.2.24.5.6 | Vaciado de muros y losa | 1d | 2026-10-29 | 2026-10-29 | 1311SS | 2026-10-21 | 2026-10-21 | 1d | 0d |
| 1313 | 1.1.2.24.6 | **NIVEL 3 APTO 302** | 2d | 2026-10-29 | 2026-10-30 |  | 2026-10-21 | 2026-10-22 | 2d | 0d |
| 1314 | 1.1.2.24.6.1 | Colocación de malla en muros | 1d | 2026-10-29 | 2026-10-29 | 1306FS-1d | 2026-10-21 | 2026-10-21 | 1d | 0d |
| 1315 | 1.1.2.24.6.2 | Instalaciones eléctricas y sanitarias | 1d | 2026-10-29 | 2026-10-29 | 1314SS | 2026-10-21 | 2026-10-21 | 1d | 0d |
| 1316 | 1.1.2.24.6.3 | Encofrado de muros | 1d | 2026-10-30 | 2026-10-30 | 1315 | 2026-10-22 | 2026-10-22 | 1d | 0d |
| 1317 | 1.1.2.24.6.4 | Encofrado de losa | 1d | 2026-10-30 | 2026-10-30 | 1316SS | 2026-10-22 | 2026-10-22 | 1d | 0d |
| 1318 | 1.1.2.24.6.5 | Colocacion de malla en losa de entrepiso | 1d | 2026-10-30 | 2026-10-30 | 1317SS | 2026-10-22 | 2026-10-22 | 1d | 0d |
| 1319 | 1.1.2.24.6.6 | Vaciado de muros y losa | 1d | 2026-10-30 | 2026-10-30 | 1318SS | 2026-10-22 | 2026-10-22 | 1d | 0d |
| 1320 | 1.1.2.24.7 | ANTEPECHOS y TECHO ESCALERA EDIF 74 | 4d | 2026-11-03 | 2026-11-06 | 1319FS+1d | 2026-10-26 | 2026-10-29 | 4d | 10d |
| 1321 | 1.1.2.25 | **EDIFICIO 77** | 14d | 2026-10-28 | 2026-11-17 |  | 2026-10-21 | 2026-11-10 | 14d | 0d |
| 1322 | 1.1.2.25.1 | **NIVEL 1 APTO 101** | 4d | 2026-10-28 | 2026-11-02 |  | 2026-10-21 | 2026-10-26 | 4d | 0d |
| 1323 | 1.1.2.25.1.1 | Colocación de malla en muros | 1d | 2026-10-28 | 2026-10-28 | 1313FS-3d | 2026-10-21 | 2026-10-21 | 1d | 0d |
| 1324 | 1.1.2.25.1.2 | Instalaciones eléctricas,sanitarias | 1d | 2026-10-29 | 2026-10-29 | 1323 | 2026-10-22 | 2026-10-22 | 1d | 0d |
| 1325 | 1.1.2.25.1.3 | Encofrado de muros | 2d | 2026-10-30 | 2026-11-02 | 1324 | 2026-10-23 | 2026-10-26 | 2d | 0d |
| 1326 | 1.1.2.25.1.4 | Encofrado de losa | 2d | 2026-10-30 | 2026-11-02 | 1325SS | 2026-10-23 | 2026-10-26 | 2d | 0d |
| 1327 | 1.1.2.25.1.5 | Colocacion de malla en losa de entrepiso | 1d | 2026-11-02 | 2026-11-02 | 1326SS+1d | 2026-10-26 | 2026-10-26 | 1d | 0d |
| 1328 | 1.1.2.25.1.6 | Vaciado de muros y losa | 1d | 2026-11-02 | 2026-11-02 | 1327SS | 2026-10-26 | 2026-10-26 | 1d | 0d |

| ID | WBS | Task | Duration | Start | Finish | Predecessors | Baseline start | Baseline finish | Baseline duration | Total slack |
| --- | --- | --- | --- | --- | --- | --- | --- | --- | --- | --- |
| 1329 | 1.1.2.25.2 | **NIVEL 1 APTO 102** | 2d | 2026-11-02 | 2026-11-03 |  | 2026-10-26 | 2026-10-27 | 2d | 0d |
| 1330 | 1.1.2.25.2.1 | Colocación de malla en muros | 1d | 2026-11-02 | 2026-11-02 | 1322FS-1d | 2026-10-26 | 2026-10-26 | 1d | 0d |
| 1331 | 1.1.2.25.2.2 | Instalaciones eléctricas y sanitarias | 1d | 2026-11-02 | 2026-11-02 | 1330SS | 2026-10-26 | 2026-10-26 | 1d | 0d |
| 1332 | 1.1.2.25.2.3 | Encofrado de muros | 1d | 2026-11-03 | 2026-11-03 | 1331 | 2026-10-27 | 2026-10-27 | 1d | 0d |
| 1333 | 1.1.2.25.2.4 | Encofrado de losa | 1d | 2026-11-03 | 2026-11-03 | 1332SS | 2026-10-27 | 2026-10-27 | 1d | 0d |
| 1334 | 1.1.2.25.2.5 | Colocacion de malla en losa de entrepiso | 1d | 2026-11-03 | 2026-11-03 | 1333SS | 2026-10-27 | 2026-10-27 | 1d | 0d |
| 1335 | 1.1.2.25.2.6 | Vaciado de muros y losa | 1d | 2026-11-03 | 2026-11-03 | 1334SS | 2026-10-27 | 2026-10-27 | 1d | 0d |
| 1336 | 1.1.2.25.3 | **NIVEL 2 APTO 201** | 2d | 2026-11-03 | 2026-11-04 |  | 2026-10-27 | 2026-10-28 | 2d | 0d |
| 1337 | 1.1.2.25.3.1 | Colocación de malla en muros | 1d | 2026-11-03 | 2026-11-03 | 1329FS-1d | 2026-10-27 | 2026-10-27 | 1d | 0d |
| 1338 | 1.1.2.25.3.2 | Instalaciones eléctricas y sanitarias | 1d | 2026-11-03 | 2026-11-03 | 1337SS | 2026-10-27 | 2026-10-27 | 1d | 0d |
| 1339 | 1.1.2.25.3.3 | Encofrado de muros | 1d | 2026-11-04 | 2026-11-04 | 1338 | 2026-10-28 | 2026-10-28 | 1d | 0d |
| 1340 | 1.1.2.25.3.4 | Encofrado de losa | 1d | 2026-11-04 | 2026-11-04 | 1339SS | 2026-10-28 | 2026-10-28 | 1d | 0d |
| 1341 | 1.1.2.25.3.5 | Colocacion de malla en losa de entrepiso | 1d | 2026-11-04 | 2026-11-04 | 1340SS | 2026-10-28 | 2026-10-28 | 1d | 0d |
| 1342 | 1.1.2.25.3.6 | Vaciado de muros y losa | 1d | 2026-11-04 | 2026-11-04 | 1341SS | 2026-10-28 | 2026-10-28 | 1d | 0d |
| 1343 | 1.1.2.25.4 | **NIVEL 2 APTO 202** | 2d | 2026-11-04 | 2026-11-05 |  | 2026-10-28 | 2026-10-29 | 2d | 0d |
| 1344 | 1.1.2.25.4.1 | Colocaciónde malla en muros | 1d | 2026-11-04 | 2026-11-04 | 1336FS-1d | 2026-10-28 | 2026-10-28 | 1d | 0d |
| 1345 | 1.1.2.25.4.2 | Instalaciones eléctricas y sanitarias | 1d | 2026-11-04 | 2026-11-04 | 1344SS | 2026-10-28 | 2026-10-28 | 1d | 0d |
| 1346 | 1.1.2.25.4.3 | Encofrado de muros | 1d | 2026-11-05 | 2026-11-05 | 1345 | 2026-10-29 | 2026-10-29 | 1d | 0d |
| 1347 | 1.1.2.25.4.4 | Encofrado de losa | 1d | 2026-11-05 | 2026-11-05 | 1346SS | 2026-10-29 | 2026-10-29 | 1d | 0d |
| 1348 | 1.1.2.25.4.5 | Colocacion de malla en losa de entrepiso | 1d | 2026-11-05 | 2026-11-05 | 1347SS | 2026-10-29 | 2026-10-29 | 1d | 0d |
| 1349 | 1.1.2.25.4.6 | Vaciado de muros y losa | 1d | 2026-11-05 | 2026-11-05 | 1348SS | 2026-10-29 | 2026-10-29 | 1d | 0d |
| 1350 | 1.1.2.25.5 | **NIVEL 3 APTO 301** | 2d | 2026-11-05 | 2026-11-06 |  | 2026-10-29 | 2026-10-30 | 2d | 0d |
| 1351 | 1.1.2.25.5.1 | Colocación de malla en muros | 1d | 2026-11-05 | 2026-11-05 | 1343FS-1d | 2026-10-29 | 2026-10-29 | 1d | 0d |
| 1352 | 1.1.2.25.5.2 | Instalaciones eléctricas y sanitarias | 1d | 2026-11-05 | 2026-11-05 | 1351SS | 2026-10-29 | 2026-10-29 | 1d | 0d |
| 1353 | 1.1.2.25.5.3 | Encofrado de muros | 1d | 2026-11-06 | 2026-11-06 | 1352 | 2026-10-30 | 2026-10-30 | 1d | 0d |
| 1354 | 1.1.2.25.5.4 | Encofrado de losa | 1d | 2026-11-06 | 2026-11-06 | 1353SS | 2026-10-30 | 2026-10-30 | 1d | 0d |
| 1355 | 1.1.2.25.5.5 | Colocacion de malla en losa de entrepiso | 1d | 2026-11-06 | 2026-11-06 | 1354SS | 2026-10-30 | 2026-10-30 | 1d | 0d |
| 1356 | 1.1.2.25.5.6 | Vaciado de muros y losa | 1d | 2026-11-06 | 2026-11-06 | 1355SS | 2026-10-30 | 2026-10-30 | 1d | 0d |

| ID | WBS | Task | Duration | Start | Finish | Predecessors | Baseline start | Baseline finish | Baseline duration | Total slack |
| --- | --- | --- | --- | --- | --- | --- | --- | --- | --- | --- |
| 1357 | 1.1.2.25.6 | **NIVEL 3 APTO 302** | 2d | 2026-11-06 | 2026-11-10 |  | 2026-10-30 | 2026-11-02 | 2d | 0d |
| 1358 | 1.1.2.25.6.1 | Colocación de malla en muros | 1d | 2026-11-06 | 2026-11-06 | 1350FS-1d | 2026-10-30 | 2026-10-30 | 1d | 0d |
| 1359 | 1.1.2.25.6.2 | Instalaciones eléctricas y sanitarias | 1d | 2026-11-06 | 2026-11-06 | 1358SS | 2026-10-30 | 2026-10-30 | 1d | 0d |
| 1360 | 1.1.2.25.6.3 | Encofrado de muros | 1d | 2026-11-10 | 2026-11-10 | 1359 | 2026-11-02 | 2026-11-02 | 1d | 0d |
| 1361 | 1.1.2.25.6.4 | Encofrado de losa | 1d | 2026-11-10 | 2026-11-10 | 1360SS | 2026-11-02 | 2026-11-02 | 1d | 0d |
| 1362 | 1.1.2.25.6.5 | Colocacion de malla en losa de entrepiso | 1d | 2026-11-10 | 2026-11-10 | 1361SS | 2026-11-02 | 2026-11-02 | 1d | 0d |
| 1363 | 1.1.2.25.6.6 | Vaciado de muros y losa | 1d | 2026-11-10 | 2026-11-10 | 1362SS | 2026-11-02 | 2026-11-02 | 1d | 0d |
| 1364 | 1.1.2.25.7 | ANTEPECHOS y TECHO ESCALERA EDIF 77 | 4d | 2026-11-12 | 2026-11-17 | 1363FS+1d | 2026-11-04 | 2026-11-10 | 4d | 4d |
| 1365 | 1.1.2.26 | **EDIFICIO 76** | 14d | 2026-11-06 | 2026-11-26 |  | 2026-10-30 | 2026-11-19 | 14d | 0d |
| 1366 | 1.1.2.26.1 | **NIVEL 1 APTO 101** | 4d | 2026-11-06 | 2026-11-12 |  | 2026-10-30 | 2026-11-04 | 4d | 0d |
| 1367 | 1.1.2.26.1.1 | Colocación de malla en muros | 1d | 2026-11-06 | 2026-11-06 | 1357FS-2d | 2026-10-30 | 2026-10-30 | 1d | 0d |
| 1368 | 1.1.2.26.1.2 | Instalaciones eléctricas,sanitarias | 1d | 2026-11-10 | 2026-11-10 | 1367 | 2026-11-02 | 2026-11-02 | 1d | 0d |
| 1369 | 1.1.2.26.1.3 | Encofrado de muros | 2d | 2026-11-11 | 2026-11-12 | 1368 | 2026-11-03 | 2026-11-04 | 2d | 0d |
| 1370 | 1.1.2.26.1.4 | Encofrado de losa | 2d | 2026-11-11 | 2026-11-12 | 1369SS | 2026-11-03 | 2026-11-04 | 2d | 0d |
| 1371 | 1.1.2.26.1.5 | Colocacion de malla en losa de entrepiso | 1d | 2026-11-12 | 2026-11-12 | 1370SS+1d | 2026-11-04 | 2026-11-04 | 1d | 0d |
| 1372 | 1.1.2.26.1.6 | Vaciado de muros y losa | 1d | 2026-11-12 | 2026-11-12 | 1371SS | 2026-11-04 | 2026-11-04 | 1d | 0d |
| 1373 | 1.1.2.26.2 | **NIVEL 1 APTO 102** | 2d | 2026-11-12 | 2026-11-13 |  | 2026-11-04 | 2026-11-05 | 2d | 0d |
| 1374 | 1.1.2.26.2.1 | Colocación de malla en muros | 1d | 2026-11-12 | 2026-11-12 | 1366FS-1d | 2026-11-04 | 2026-11-04 | 1d | 0d |
| 1375 | 1.1.2.26.2.2 | Instalaciones eléctricas y sanitarias | 1d | 2026-11-12 | 2026-11-12 | 1374SS | 2026-11-04 | 2026-11-04 | 1d | 0d |
| 1376 | 1.1.2.26.2.3 | Encofrado de muros | 1d | 2026-11-13 | 2026-11-13 | 1375 | 2026-11-05 | 2026-11-05 | 1d | 0d |
| 1377 | 1.1.2.26.2.4 | Encofrado de losa | 1d | 2026-11-13 | 2026-11-13 | 1376SS | 2026-11-05 | 2026-11-05 | 1d | 0d |
| 1378 | 1.1.2.26.2.5 | Colocacion de malla en losa de entrepiso | 1d | 2026-11-13 | 2026-11-13 | 1377SS | 2026-11-05 | 2026-11-05 | 1d | 0d |
| 1379 | 1.1.2.26.2.6 | Vaciado de muros y losa | 1d | 2026-11-13 | 2026-11-13 | 1378SS | 2026-11-05 | 2026-11-05 | 1d | 0d |
| 1380 | 1.1.2.26.3 | **NIVEL 2 APTO 201** | 2d | 2026-11-13 | 2026-11-16 |  | 2026-11-05 | 2026-11-06 | 2d | 0d |
| 1381 | 1.1.2.26.3.1 | Colocación de malla en muros | 1d | 2026-11-13 | 2026-11-13 | 1373FS-1d | 2026-11-05 | 2026-11-05 | 1d | 0d |
| 1382 | 1.1.2.26.3.2 | Instalaciones eléctricas y sanitarias | 1d | 2026-11-13 | 2026-11-13 | 1381SS | 2026-11-05 | 2026-11-05 | 1d | 0d |
| 1383 | 1.1.2.26.3.3 | Encofrado de muros | 1d | 2026-11-16 | 2026-11-16 | 1382 | 2026-11-06 | 2026-11-06 | 1d | 0d |
| 1384 | 1.1.2.26.3.4 | Encofrado de losa | 1d | 2026-11-16 | 2026-11-16 | 1383SS | 2026-11-06 | 2026-11-06 | 1d | 0d |
| 1385 | 1.1.2.26.3.5 | Colocacion de malla en losa de entrepiso | 1d | 2026-11-16 | 2026-11-16 | 1384SS | 2026-11-06 | 2026-11-06 | 1d | 0d |
| 1386 | 1.1.2.26.3.6 | Vaciado de muros y losa | 1d | 2026-11-16 | 2026-11-16 | 1385SS | 2026-11-06 | 2026-11-06 | 1d | 0d |

| ID | WBS | Task | Duration | Start | Finish | Predecessors | Complete | Remaining | Baseline start | Baseline finish | Baseline duration | Total slack | Constraint |
| --- | --- | --- | --- | --- | --- | --- | --- | --- | --- | --- | --- | --- | --- |
| 1387 | 1.1.2.26.4 | **NIVEL 2 APTO 202** | 2d | 2026-11-16 | 2026-11-17 |  |  |  | 2026-11-06 | 2026-11-10 | 2d | 0d |  |
| 1388 | 1.1.2.26.4.1 | Colocaciónde malla en muros | 1d | 2026-11-16 | 2026-11-16 | 1380FS-1d |  |  | 2026-11-06 | 2026-11-06 | 1d | 0d |  |
| 1389 | 1.1.2.26.4.2 | Instalaciones eléctricas y sanitarias | 1d | 2026-11-16 | 2026-11-16 | 1388SS |  |  | 2026-11-06 | 2026-11-06 | 1d | 0d |  |
| 1390 | 1.1.2.26.4.3 | Encofrado de muros | 1d | 2026-11-17 | 2026-11-17 | 1389 |  |  | 2026-11-10 | 2026-11-10 | 1d | 0d |  |
| 1391 | 1.1.2.26.4.4 | Encofrado de losa | 1d | 2026-11-17 | 2026-11-17 | 1390SS |  |  | 2026-11-10 | 2026-11-10 | 1d | 0d |  |
| 1392 | 1.1.2.26.4.5 | Colocacion de malla en losa de entrepiso | 1d | 2026-11-17 | 2026-11-17 | 1391SS |  |  | 2026-11-10 | 2026-11-10 | 1d | 0d |  |
| 1393 | 1.1.2.26.4.6 | Vaciado de muros y losa | 1d | 2026-11-17 | 2026-11-17 | 1392SS |  |  | 2026-11-10 | 2026-11-10 | 1d | 0d |  |
| 1394 | 1.1.2.26.5 | **NIVEL 3 APTO 301** | 2d | 2026-11-17 | 2026-11-18 |  |  |  | 2026-11-10 | 2026-11-11 | 2d | 0d |  |
| 1395 | 1.1.2.26.5.1 | Colocación de malla en muros | 1d | 2026-11-17 | 2026-11-17 | 1387FS-1d |  |  | 2026-11-10 | 2026-11-10 | 1d | 0d |  |
| 1396 | 1.1.2.26.5.2 | Instalaciones eléctricas y sanitarias | 1d | 2026-11-17 | 2026-11-17 | 1395SS |  |  | 2026-11-10 | 2026-11-10 | 1d | 0d |  |
| 1397 | 1.1.2.26.5.3 | Encofrado de muros | 1d | 2026-11-18 | 2026-11-18 | 1396 |  |  | 2026-11-11 | 2026-11-11 | 1d | 0d |  |
| 1398 | 1.1.2.26.5.4 | Encofrado de losa | 1d | 2026-11-18 | 2026-11-18 | 1397SS |  |  | 2026-11-11 | 2026-11-11 | 1d | 0d |  |
| 1399 | 1.1.2.26.5.5 | Colocacion de malla en losa de entrepiso | 1d | 2026-11-18 | 2026-11-18 | 1398SS |  |  | 2026-11-11 | 2026-11-11 | 1d | 0d |  |
| 1400 | 1.1.2.26.5.6 | Vaciado de muros y losa | 1d | 2026-11-18 | 2026-11-18 | 1399SS |  |  | 2026-11-11 | 2026-11-11 | 1d | 0d |  |
| 1401 | 1.1.2.26.6 | **NIVEL 3 APTO 302** | 2d | 2026-11-18 | 2026-11-19 |  |  |  | 2026-11-11 | 2026-11-12 | 2d | 0d |  |
| 1402 | 1.1.2.26.6.1 | Colocación de malla en muros | 1d | 2026-11-18 | 2026-11-18 | 1394FS-1d |  |  | 2026-11-11 | 2026-11-11 | 1d | 0d |  |
| 1403 | 1.1.2.26.6.2 | Instalaciones eléctricas y sanitarias | 1d | 2026-11-18 | 2026-11-18 | 1402SS |  |  | 2026-11-11 | 2026-11-11 | 1d | 0d |  |
| 1404 | 1.1.2.26.6.3 | Encofrado de muros | 1d | 2026-11-19 | 2026-11-19 | 1403 |  |  | 2026-11-12 | 2026-11-12 | 1d | 0d |  |
| 1405 | 1.1.2.26.6.4 | Encofrado de losa | 1d | 2026-11-19 | 2026-11-19 | 1404SS |  |  | 2026-11-12 | 2026-11-12 | 1d | 0d |  |
| 1406 | 1.1.2.26.6.5 | Colocacion de malla en losa de entrepiso | 1d | 2026-11-19 | 2026-11-19 | 1405SS |  |  | 2026-11-12 | 2026-11-12 | 1d | 0d |  |
| 1407 | 1.1.2.26.6.6 | Vaciado de muros y losa | 1d | 2026-11-19 | 2026-11-19 | 1406SS |  |  | 2026-11-12 | 2026-11-12 | 1d | 0d |  |
| 1408 | 1.1.2.26.7 | ANTEPECHOS y TECHO ESCALERA EDIF 76 | 4d | 2026-11-23 | 2026-11-26 | 1407FS+1d |  |  | 2026-11-16 | 2026-11-19 | 4d | 0d |  |
| 1409 | 1.1.3 | **ESCALERA** | 178.25d | 2026-03-23 A | 2026-12-04 |  | 26% | 131.1d | 2026-03-11 | 2026-11-27 | 182d | 122d |  |
| 1410 | 1.1.3.1 | EDIFICIO 3 | 6d | 2026-03-23 A | 2026-03-31 A | 265 | 100% |  | 2026-03-11 | 2026-03-18 | 6d |  | finish no earlier than 2026-03-31 |
| 1411 | 1.1.3.2 | EDIFICIO 2 | 5d | 2026-04-20 A | 2026-04-24 A |  | 100% |  | 2026-03-20 | 2026-03-27 | 6d |  | start no earlier than 2026-04-20 |
| 1412 | 1.1.3.3 | EDIFICIO 4 | 6d | 2026-04-30 A | 2026-05-08 A | 353 | 100% |  | 2026-03-31 | 2026-04-09 | 6d |  | start no earlier than 2026-04-30 |
| 1413 | 1.1.3.4 | EDIFICIO 6 | 6d | 2026-04-30 A | 2026-05-08 A | 397 | 100% |  | 2026-04-14 | 2026-04-21 | 6d |  | start no earlier than 2026-04-30 |
| 1414 | 1.1.3.5 | EDIFICIO 1 | 6d | 2026-04-27 A | 2026-05-05 A | 441 | 100% |  | 2026-04-23 | 2026-04-30 | 6d |  | start no earlier than 2026-04-27 |
| 1415 | 1.1.3.6 | EDIFICIO 5 | 6d | 2026-05-01 A | 2026-05-11 A | 485 | 100% |  | 2026-05-05 | 2026-05-12 | 6d |  |  |
| 1416 | 1.1.3.7 | EDIFICIO 9 | 6d | 2026-05-29 A | 2026-06-08 A | 529 | 100% |  | 2026-05-14 | 2026-05-21 | 6d |  | start no earlier than 2026-05-29 |
| 1417 | 1.1.3.8 | EDIFICIO8 | 6d | 2026-07-07 | 2026-07-14 | 573 |  |  | 2026-05-25 | 2026-06-01 | 6d | 223d | start no earlier than 2026-07-01 |
| 1418 | 1.1.3.9 | EDIFICIO 7 | 6d | 2026-07-07 | 2026-07-14 | 617 |  |  | 2026-06-03 | 2026-06-11 | 6d | 223d | start no earlier than 2026-07-01 |
| 1419 | 1.1.3.10 | EDIFICIO 12 | 6d | 2026-07-07 | 2026-07-14 | 661 |  |  | 2026-06-15 | 2026-06-22 | 6d | 223d | start no earlier than 2026-07-01 |
| 1420 | 1.1.3.11 | EDIFICIO 11 | 6d | 2026-07-07 | 2026-07-14 | 705 |  |  | 2026-06-24 | 2026-07-01 | 6d | 223d |  |
| 1421 | 1.1.3.12 | EDIFICIO 10 | 6d | 2026-07-07 | 2026-07-14 | 749 |  |  | 2026-07-03 | 2026-07-10 | 6d | 223d |  |
| 1422 | 1.1.3.13 | EDIFICIO 15 | 6d | 2026-07-28 | 2026-08-04 | 793 |  |  | 2026-07-14 | 2026-07-21 | 6d | 208d |  |
| 1423 | 1.1.3.14 | EDIFICIO 14 | 6d | 2026-08-06 | 2026-08-13 | 837 |  |  | 2026-07-23 | 2026-07-30 | 6d | 201d |  |
| 1424 | 1.1.3.15 | EDIFICIO 13 | 6d | 2026-08-17 | 2026-08-24 | 881 |  |  | 2026-08-03 | 2026-08-10 | 6d | 194d |  |
| 1425 | 1.1.3.16 | EDIFICIO 18 | 6d | 2026-08-25 | 2026-09-01 | 925 |  |  | 2026-08-12 | 2026-08-19 | 6d | 188d |  |
| 1426 | 1.1.3.17 | EDIFICIO 17 | 6d | 2026-09-03 | 2026-09-10 | 969 |  |  | 2026-08-21 | 2026-08-28 | 6d | 181d |  |
| 1427 | 1.1.3.18 | EDIFICIO 16 | 6d | 2026-09-14 | 2026-09-21 | 1013 |  |  | 2026-09-01 | 2026-09-08 | 6d | 174d |  |
| 1428 | 1.1.3.19 | EDIFICIO 71 | 6d | 2026-09-22 | 2026-09-30 | 1057 |  |  | 2026-09-10 | 2026-09-17 | 6d | 168d |  |
| 1429 | 1.1.3.20 | EDIFICIO 70 | 6d | 2026-10-02 | 2026-10-09 | 1101 |  |  | 2026-09-21 | 2026-09-29 | 6d | 161d |  |
| 1430 | 1.1.3.21 | EDIFICIO 73 | 6d | 2026-10-13 | 2026-10-20 | 1145 |  |  | 2026-10-01 | 2026-10-08 | 6d | 154d |  |
| 1431 | 1.1.3.22 | EDIFICIO 72 | 6d | 2026-10-21 | 2026-10-28 | 1189 |  |  | 2026-10-12 | 2026-10-19 | 6d | 148d |  |
| 1432 | 1.1.3.23 | EDIFICIO 75 | 6d | 2026-10-30 | 2026-11-06 | 1233 |  |  | 2026-10-21 | 2026-10-28 | 6d | 141d |  |
| 1433 | 1.1.3.24 | EDIFICIO 74 | 6d | 2026-11-10 | 2026-11-17 | 1277 |  |  | 2026-10-30 | 2026-11-06 | 6d | 135d |  |
| 1434 | 1.1.3.25 | EDIFICIO 77 | 6d | 2026-11-18 | 2026-11-25 | 1321 |  |  | 2026-11-11 | 2026-11-18 | 6d | 129d |  |
| 1435 | 1.1.3.26 | EDIFICIO 76 | 6d | 2026-11-27 | 2026-12-04 | 1365 |  |  | 2026-11-20 | 2026-11-27 | 6d | 122d |  |

| ID | WBS | Task | Duration | Start | Finish | Predecessors | Complete | Remaining | Baseline start | Baseline finish | Baseline duration | Total slack | Free slack | Constraint |
| --- | --- | --- | --- | --- | --- | --- | --- | --- | --- | --- | --- | --- | --- | --- |
| 1436 | 1.1.4 | **ALBAÑILERIA** | 201d | 2026-03-05 A | 2026-12-18 |  | 31% | 137.75d | 2026-03-09 | 2026-12-11 | 194d | 102d |  |  |
| 1437 | 1.1.4.1 | **RESANE INTERNO Y DENGLASS** | 201d | 2026-03-05 A | 2026-12-18 |  | 38% | 123.69d | 2026-03-09 | 2026-12-11 | 194d | 0d |  |  |
| 1438 | 1.1.4.1.1 | EDIFICIO 3 | 18d | 2026-03-05 A | 2026-03-30 A | 265FS-2d | 100% |  | 2026-03-09 | 2026-04-01 | 18d |  |  |  |
| 1439 | 1.1.4.1.2 | EDIFICIO 2 | 18d | 2026-04-07 A | 2026-04-30 A | 309FS-2d | 100% |  | 2026-03-18 | 2026-04-14 | 18d |  |  | start no earlier than 2026-04-07 |
| 1440 | 1.1.4.1.3 | EDIFICIO 1 | 18d | 2026-04-13 A | 2026-05-07 A | 353FS-2d | 100% |  | 2026-03-27 | 2026-04-23 | 18d |  |  | start no earlier than 2026-04-13 |
| 1441 | 1.1.4.1.4 | EDIFICIO 6 | 18d | 2026-04-13 A | 2026-05-07 A | 397FS-2d | 100% |  | 2026-04-10 | 2026-05-06 | 18d |  |  | start no earlier than 2026-04-13 |
| 1442 | 1.1.4.1.5 | EDIFICIO 5 | 18d | 2026-04-20 A | 2026-05-14 A | 441FS-2d | 100% |  | 2026-04-21 | 2026-05-15 | 18d |  |  | start no earlier than 2026-04-20 |
| 1443 | 1.1.4.1.6 | EDIFICIO 4 | 18d | 2026-04-29 A | 2026-05-25 A | 485FS-2d | 100% |  | 2026-04-30 | 2026-05-26 | 18d |  |  |  |
| 1444 | 1.1.4.1.7 | EDIFICIO 9 | 18d | 2026-05-05 A | 2026-05-28 A | 529FS-2d | 100% |  | 2026-05-12 | 2026-06-05 | 18d |  |  |  |
| 1445 | 1.1.4.1.8 | EDIFICIO8 | 18d | 2026-05-08 A | 2026-06-02 A | 573FS-2d | 100% |  | 2026-05-21 | 2026-06-16 | 18d |  |  |  |
| 1446 | 1.1.4.1.9 | EDIFICIO 7 | 18d | 2026-05-18 A | 2026-06-11 A | 617FS-2d | 100% |  | 2026-06-01 | 2026-06-25 | 18d |  |  |  |
| 1447 | 1.1.4.1.10 | EDIFICIO 12 | 18d | 2026-05-28 A | 2026-06-23 A | 661FS-2d | 100% |  | 2026-06-11 | 2026-07-06 | 18d |  |  |  |
| 1448 | 1.1.4.1.11 | EDIFICIO 11 | 18d | 2026-07-03 | 2026-07-28 | 705FS-2d |  |  | 2026-06-22 | 2026-07-15 | 18d | 98d | 0d |  |
| 1449 | 1.1.4.1.12 | EDIFICIO 10 | 18d | 2026-07-03 | 2026-07-28 | 749FS-2d |  |  | 2026-07-01 | 2026-07-24 | 18d | 98d | 0d |  |
| 1450 | 1.1.4.1.13 | EDIFICIO 15 | 18d | 2026-07-24 | 2026-08-18 | 793FS-2d |  |  | 2026-07-10 | 2026-08-04 | 18d | 83d | 0d |  |
| 1451 | 1.1.4.1.14 | EDIFICIO 14 | 18d | 2026-08-04 | 2026-08-27 | 837FS-2d |  |  | 2026-07-21 | 2026-08-13 | 18d | 76d | 0d |  |
| 1452 | 1.1.4.1.15 | EDIFICIO 13 | 18d | 2026-08-13 | 2026-09-07 | 881FS-2d |  |  | 2026-07-30 | 2026-08-24 | 18d | 69d | 0d |  |
| 1453 | 1.1.4.1.16 | EDIFICIO 18 | 18d | 2026-08-21 | 2026-09-15 | 925FS-2d |  |  | 2026-08-10 | 2026-09-02 | 18d | 63d | 0d |  |
| 1454 | 1.1.4.1.17 | EDIFICIO 17 | 18d | 2026-09-01 | 2026-09-25 | 969FS-2d |  |  | 2026-08-19 | 2026-09-11 | 18d | 56d | 0d |  |
| 1455 | 1.1.4.1.18 | EDIFICIO 16 | 18d | 2026-09-10 | 2026-10-06 | 1013FS-2d |  |  | 2026-08-28 | 2026-09-22 | 18d | 49d | 0d |  |
| 1456 | 1.1.4.1.19 | EDIFICIO 71 | 18d | 2026-09-18 | 2026-10-14 | 1057FS-2d |  |  | 2026-09-08 | 2026-10-02 | 18d | 43d | 0d |  |
| 1457 | 1.1.4.1.20 | EDIFICIO 70 | 18d | 2026-09-30 | 2026-10-23 | 1101FS-2d |  |  | 2026-09-17 | 2026-10-13 | 18d | 36d | 0d |  |
| 1458 | 1.1.4.1.21 | EDIFICIO 73 | 18d | 2026-10-09 | 2026-11-03 | 1145FS-2d |  |  | 2026-09-29 | 2026-10-22 | 18d | 29d | 0d |  |
| 1459 | 1.1.4.1.22 | EDIFICIO 72 | 18d | 2026-10-19 | 2026-11-12 | 1189FS-2d |  |  | 2026-10-08 | 2026-11-02 | 18d | 23d | 0d |  |
| 1460 | 1.1.4.1.23 | EDIFICIO 75 | 18d | 2026-10-28 | 2026-11-23 | 1233FS-2d |  |  | 2026-10-19 | 2026-11-12 | 18d | 16d | 0d |  |
| 1461 | 1.1.4.1.24 | EDIFICIO 74 | 18d | 2026-11-05 | 2026-12-01 | 1277FS-2d |  |  | 2026-10-28 | 2026-11-23 | 18d | 10d | 0d |  |
| 1462 | 1.1.4.1.25 | EDIFICIO 77 | 18d | 2026-11-16 | 2026-12-09 | 1321FS-2d |  |  | 2026-11-06 | 2026-12-02 | 18d | 4d | 0d |  |
| 1463 | 1.1.4.1.26 | EDIFICIO 76 | 18d | 2026-11-25 | 2026-12-18 | 1365FS-2d |  |  | 2026-11-18 | 2026-12-11 | 18d | 0d |  |  |

| ID | WBS | Task | Duration | Start | Finish | Predecessors | Complete | Remaining | Baseline start | Baseline finish | Baseline duration | Total slack | Free slack | Constraint |
| --- | --- | --- | --- | --- | --- | --- | --- | --- | --- | --- | --- | --- | --- | --- |
| 1464 | 1.1.4.2 | **RESANE EXTERIOR** | 183d | 2026-03-23 A | 2026-12-10 |  | 22% | 141.94d | 2026-03-11 | 2026-12-03 | 186d | 88d |  |  |
| 1465 | 1.1.4.2.1 | EDIFICIO 3 | 10d | 2026-03-23 A | 2026-04-07 A |  | 100% |  | 2026-03-11 | 2026-03-24 | 10d |  |  | start no earlier than 2026-03-23 |
| 1466 | 1.1.4.2.2 | EDIFICIO 2 | 10d | 2026-04-27 A | 2026-05-11 A |  | 100% |  | 2026-03-20 | 2026-04-06 | 10d |  |  | start no earlier than 2026-04-27 |
| 1467 | 1.1.4.2.3 | EDIFICIO 1 | 20.75d | 2026-04-30 A | 2026-05-29 A | 353 | 100% |  | 2026-03-31 | 2026-04-15 | 10d |  |  | finish no earlier than 2026-05-29 |
| 1468 | 1.1.4.2.4 | EDIFICIO 6 | 10d | 2026-05-29 A | 2026-06-12 A | 397 | 100% |  | 2026-04-14 | 2026-04-27 | 10d |  |  | start no earlier than 2026-05-29 |
| 1469 | 1.1.4.2.5 | EDIFICIO 5 | 10d | 2026-05-29 A | 2026-06-12 A | 441 | 100% |  | 2026-04-23 | 2026-05-07 | 10d |  |  | start no earlier than 2026-05-29 |
| 1470 | 1.1.4.2.6 | EDIFICIO 4 | 10d | 2026-07-01 | 2026-07-14 | 485 |  |  | 2026-05-05 | 2026-05-18 | 10d | 193d | 0d | start no earlier than 2026-07-01 |
| 1471 | 1.1.4.2.7 | EDIFICIO 9 | 10d | 2026-07-01 | 2026-07-14 | 529 |  |  | 2026-05-14 | 2026-05-27 | 10d | 193d | 0d | start no earlier than 2026-07-01 |
| 1472 | 1.1.4.2.8 | EDIFICIO8 | 10d | 2026-07-07 | 2026-07-20 | 573 |  |  | 2026-05-25 | 2026-06-08 | 10d | 189d | 0d | start no earlier than 2026-07-01 |
| 1473 | 1.1.4.2.9 | EDIFICIO 7 | 10d | 2026-07-07 | 2026-07-20 | 617 |  |  | 2026-06-03 | 2026-06-17 | 10d | 189d | 0d | start no earlier than 2026-07-01 |
| 1474 | 1.1.4.2.10 | EDIFICIO 12 | 10d | 2026-07-07 | 2026-07-20 | 661 |  |  | 2026-06-15 | 2026-06-26 | 10d | 189d | 0d | start no earlier than 2026-07-01 |
| 1475 | 1.1.4.2.11 | EDIFICIO 11 | 10d | 2026-07-07 | 2026-07-20 | 705 |  |  | 2026-06-24 | 2026-07-07 | 10d | 189d | 0d |  |
| 1476 | 1.1.4.2.12 | EDIFICIO 10 | 10d | 2026-07-07 | 2026-07-20 | 749 |  |  | 2026-07-03 | 2026-07-16 | 10d | 189d | 0d |  |
| 1477 | 1.1.4.2.13 | EDIFICIO 15 | 10d | 2026-07-28 | 2026-08-10 | 793 |  |  | 2026-07-14 | 2026-07-27 | 10d | 174d | 0d |  |
| 1478 | 1.1.4.2.14 | EDIFICIO 14 | 10d | 2026-08-06 | 2026-08-19 | 837 |  |  | 2026-07-23 | 2026-08-05 | 10d | 167d | 0d |  |
| 1479 | 1.1.4.2.15 | EDIFICIO 13 | 10d | 2026-08-17 | 2026-08-28 | 881 |  |  | 2026-08-03 | 2026-08-14 | 10d | 160d | 0d |  |
| 1480 | 1.1.4.2.16 | EDIFICIO 18 | 10d | 2026-08-25 | 2026-09-07 | 925 |  |  | 2026-08-12 | 2026-08-25 | 10d | 154d | 0d |  |
| 1481 | 1.1.4.2.17 | EDIFICIO 17 | 10d | 2026-09-03 | 2026-09-16 | 969 |  |  | 2026-08-21 | 2026-09-03 | 10d | 147d | 0d |  |
| 1482 | 1.1.4.2.18 | EDIFICIO 16 | 10d | 2026-09-14 | 2026-09-28 | 1013 |  |  | 2026-09-01 | 2026-09-14 | 10d | 140d | 0d |  |
| 1483 | 1.1.4.2.19 | EDIFICIO 71 | 10d | 2026-09-22 | 2026-10-06 | 1057 |  |  | 2026-09-10 | 2026-09-23 | 10d | 134d | 0d |  |
| 1484 | 1.1.4.2.20 | EDIFICIO 70 | 10d | 2026-10-02 | 2026-10-15 | 1101 |  |  | 2026-09-21 | 2026-10-05 | 10d | 127d | 0d |  |
| 1485 | 1.1.4.2.21 | EDIFICIO 73 | 10d | 2026-10-13 | 2026-10-26 | 1145 |  |  | 2026-10-01 | 2026-10-14 | 10d | 120d | 0d |  |
| 1486 | 1.1.4.2.22 | EDIFICIO 72 | 10d | 2026-10-21 | 2026-11-03 | 1189 |  |  | 2026-10-12 | 2026-10-23 | 10d | 114d | 0d |  |
| 1487 | 1.1.4.2.23 | EDIFICIO 75 | 10d | 2026-10-30 | 2026-11-13 | 1233 |  |  | 2026-10-21 | 2026-11-03 | 10d | 107d | 0d |  |
| 1488 | 1.1.4.2.24 | EDIFICIO 74 | 10d | 2026-11-10 | 2026-11-23 | 1277 |  |  | 2026-10-30 | 2026-11-13 | 10d | 101d | 0d |  |
| 1489 | 1.1.4.2.25 | EDIFICIO 77 | 10d | 2026-11-18 | 2026-12-01 | 1321 |  |  | 2026-11-11 | 2026-11-24 | 10d | 95d | 0d |  |
| 1490 | 1.1.4.2.26 | EDIFICIO 76 | 10d | 2026-11-27 | 2026-12-10 | 1365 |  |  | 2026-11-20 | 2026-12-03 | 10d | 88d | 0d |  |

| ID | WBS | Task | Duration | Start | Finish | Predecessors | Complete | Remaining | Baseline start | Baseline finish | Baseline duration | Total slack | Free slack | Constraint |
| --- | --- | --- | --- | --- | --- | --- | --- | --- | --- | --- | --- | --- | --- | --- |
| 1491 | 1.1.4.3 | **TERRAZA** | 151d | 2026-04-30 A | 2026-12-02 |  | 27% | 110.35d | 2026-03-11 | 2026-11-25 | 180d | 111d |  |  |
| 1492 | 1.1.4.3.1 | EDIFICIO 3 | 4d | 2026-04-30 A | 2026-05-06 A |  | 100% |  | 2026-03-11 | 2026-03-16 | 4d |  |  | start no earlier than 2026-04-30 |
| 1493 | 1.1.4.3.2 | EDIFICIO 2 | 4d | 2026-04-30 A | 2026-05-06 A |  | 100% |  | 2026-03-20 | 2026-03-25 | 4d |  |  | start no earlier than 2026-04-30 |
| 1494 | 1.1.4.3.3 | EDIFICIO 1 | 4d | 2026-04-30 A | 2026-05-06 A | 353 | 100% |  | 2026-03-31 | 2026-04-07 | 4d |  |  | start no earlier than 2026-04-30 |
| 1495 | 1.1.4.3.4 | EDIFICIO 6 | 4d | 2026-04-30 A | 2026-05-06 A | 397 | 100% |  | 2026-04-14 | 2026-04-17 | 4d |  |  | start no earlier than 2026-04-30 |
| 1496 | 1.1.4.3.5 | EDIFICIO 5 | 4d | 2026-04-30 A | 2026-05-06 A | 441 | 100% |  | 2026-04-23 | 2026-04-28 | 4d |  |  | start no earlier than 2026-04-30 |
| 1497 | 1.1.4.3.6 | EDIFICIO 4 | 4d | 2026-05-01 A | 2026-05-07 A | 485 | 100% |  | 2026-05-05 | 2026-05-08 | 4d |  |  |  |
| 1498 | 1.1.4.3.7 | EDIFICIO 9 | 4d | 2026-05-29 A | 2026-06-03 A | 529 | 100% |  | 2026-05-14 | 2026-05-19 | 4d |  |  | start no earlier than 2026-05-29 |
| 1499 | 1.1.4.3.8 | EDIFICIO8 | 4d | 2026-07-07 | 2026-07-10 | 573 |  |  | 2026-05-25 | 2026-05-28 | 4d | 212d | 0d | start no earlier than 2026-07-01 |
| 1500 | 1.1.4.3.9 | EDIFICIO 7 | 4d | 2026-07-07 | 2026-07-10 | 617 |  |  | 2026-06-03 | 2026-06-09 | 4d | 212d | 0d | start no earlier than 2026-07-01 |
| 1501 | 1.1.4.3.10 | EDIFICIO 12 | 4d | 2026-07-07 | 2026-07-10 | 661 |  |  | 2026-06-15 | 2026-06-18 | 4d | 212d | 0d | start no earlier than 2026-07-01 |
| 1502 | 1.1.4.3.11 | EDIFICIO 11 | 4d | 2026-07-07 | 2026-07-10 | 705 |  |  | 2026-06-24 | 2026-06-29 | 4d | 212d | 0d |  |
| 1503 | 1.1.4.3.12 | EDIFICIO 10 | 4d | 2026-07-07 | 2026-07-10 | 749 |  |  | 2026-07-03 | 2026-07-08 | 4d | 212d | 0d |  |
| 1504 | 1.1.4.3.13 | EDIFICIO 15 | 4d | 2026-07-28 | 2026-07-31 | 793 |  |  | 2026-07-14 | 2026-07-17 | 4d | 197d | 0d |  |
| 1505 | 1.1.4.3.14 | EDIFICIO 14 | 4d | 2026-08-06 | 2026-08-11 | 837 |  |  | 2026-07-23 | 2026-07-28 | 4d | 190d | 0d |  |
| 1506 | 1.1.4.3.15 | EDIFICIO 13 | 4d | 2026-08-17 | 2026-08-20 | 881 |  |  | 2026-08-03 | 2026-08-06 | 4d | 183d | 0d |  |
| 1507 | 1.1.4.3.16 | EDIFICIO 18 | 4d | 2026-08-25 | 2026-08-28 | 925 |  |  | 2026-08-12 | 2026-08-17 | 4d | 177d | 0d |  |
| 1508 | 1.1.4.3.17 | EDIFICIO 17 | 4d | 2026-09-03 | 2026-09-08 | 969 |  |  | 2026-08-21 | 2026-08-26 | 4d | 170d | 0d |  |
| 1509 | 1.1.4.3.18 | EDIFICIO 16 | 4d | 2026-09-14 | 2026-09-17 | 1013 |  |  | 2026-09-01 | 2026-09-04 | 4d | 163d | 0d |  |
| 1510 | 1.1.4.3.19 | EDIFICIO 71 | 4d | 2026-09-22 | 2026-09-28 | 1057 |  |  | 2026-09-10 | 2026-09-15 | 4d | 157d | 0d |  |
| 1511 | 1.1.4.3.20 | EDIFICIO 70 | 4d | 2026-10-02 | 2026-10-07 | 1101 |  |  | 2026-09-21 | 2026-09-25 | 4d | 150d | 0d |  |
| 1512 | 1.1.4.3.21 | EDIFICIO 73 | 4d | 2026-10-13 | 2026-10-16 | 1145 |  |  | 2026-10-01 | 2026-10-06 | 4d | 143d | 0d |  |
| 1513 | 1.1.4.3.22 | EDIFICIO 72 | 4d | 2026-10-21 | 2026-10-26 | 1189 |  |  | 2026-10-12 | 2026-10-15 | 4d | 137d | 0d |  |
| 1514 | 1.1.4.3.23 | EDIFICIO 75 | 4d | 2026-10-30 | 2026-11-04 | 1233 |  |  | 2026-10-21 | 2026-10-26 | 4d | 130d | 0d |  |
| 1515 | 1.1.4.3.24 | EDIFICIO 74 | 4d | 2026-11-10 | 2026-11-13 | 1277 |  |  | 2026-10-30 | 2026-11-04 | 4d | 124d | 0d |  |
| 1516 | 1.1.4.3.25 | EDIFICIO 77 | 4d | 2026-11-18 | 2026-11-23 | 1321 |  |  | 2026-11-11 | 2026-11-16 | 4d | 118d | 0d |  |
| 1517 | 1.1.4.3.26 | EDIFICIO 76 | 4d | 2026-11-27 | 2026-12-02 | 1365 |  |  | 2026-11-20 | 2026-11-25 | 4d | 111d | 0d |  |

| ID | WBS | Task | Duration | Start | Finish | Predecessors | Complete | Remaining | Baseline start | Baseline finish | Baseline duration | Total slack | Free slack | Constraint |
| --- | --- | --- | --- | --- | --- | --- | --- | --- | --- | --- | --- | --- | --- | --- |
| 1518 | 1.1.4.4 | **PENDIENTE DE TECHOS** | 160d | 2026-04-22 A | 2026-12-07 |  | 27% | 116.92d | 2026-03-17 | 2026-11-30 | 179d | 111d |  |  |
| 1519 | 1.1.4.4.1 | EDIFICIO 3 | 3d | 2026-04-22 A | 2026-04-24 A |  | 100% |  | 2026-03-17 | 2026-03-19 | 3d |  |  | start no earlier than 2026-04-22 |
| 1520 | 1.1.4.4.2 | EDIFICIO 2 | 3d | 2026-04-28 A | 2026-04-30 A |  | 100% |  | 2026-03-26 | 2026-03-30 | 3d |  |  | start no earlier than 2026-04-28 |
| 1521 | 1.1.4.4.3 | EDIFICIO 1 | 3d | 2026-05-11 A | 2026-05-13 A |  | 100% |  | 2026-04-08 | 2026-04-10 | 3d |  |  | start no earlier than 2026-05-11 |
| 1522 | 1.1.4.4.4 | EDIFICIO 6 | 3d | 2026-05-25 A | 2026-05-27 A | 1495 | 100% |  | 2026-04-20 | 2026-04-22 | 3d |  |  | start no earlier than 2026-05-25 |
| 1523 | 1.1.4.4.5 | EDIFICIO 5 | 3d | 2026-05-29 A | 2026-06-02 A | 1496 | 100% |  | 2026-04-29 | 2026-05-01 | 3d |  |  | start no earlier than 2026-05-29 |
| 1524 | 1.1.4.4.6 | EDIFICIO 4 | 3d | 2026-05-29 A | 2026-06-02 A | 1497 | 100% |  | 2026-05-11 | 2026-05-13 | 3d |  |  | start no earlier than 2026-05-29 |
| 1525 | 1.1.4.4.7 | EDIFICIO 9 | 3d | 2026-06-05 A | 2026-06-09 A | 1498 | 100% |  | 2026-05-20 | 2026-05-22 | 3d |  |  |  |
| 1526 | 1.1.4.4.8 | EDIFICIO8 | 3d | 2026-07-13 | 2026-07-15 | 1499 |  |  | 2026-05-29 | 2026-06-02 | 3d | 212d | 0d |  |
| 1527 | 1.1.4.4.9 | EDIFICIO 7 | 3d | 2026-07-13 | 2026-07-15 | 1500 |  |  | 2026-06-10 | 2026-06-12 | 3d | 212d | 0d |  |
| 1528 | 1.1.4.4.10 | EDIFICIO 12 | 3d | 2026-07-13 | 2026-07-15 | 1501 |  |  | 2026-06-19 | 2026-06-23 | 3d | 212d | 0d |  |
| 1529 | 1.1.4.4.11 | EDIFICIO 11 | 3d | 2026-07-13 | 2026-07-15 | 1502 |  |  | 2026-06-30 | 2026-07-02 | 3d | 212d | 0d |  |
| 1530 | 1.1.4.4.12 | EDIFICIO 10 | 3d | 2026-07-13 | 2026-07-15 | 1503 |  |  | 2026-07-09 | 2026-07-13 | 3d | 212d | 0d |  |
| 1531 | 1.1.4.4.13 | EDIFICIO 15 | 3d | 2026-08-03 | 2026-08-05 | 1504 |  |  | 2026-07-20 | 2026-07-22 | 3d | 197d | 0d |  |
| 1532 | 1.1.4.4.14 | EDIFICIO 14 | 3d | 2026-08-12 | 2026-08-14 | 1505 |  |  | 2026-07-29 | 2026-07-31 | 3d | 190d | 0d |  |
| 1533 | 1.1.4.4.15 | EDIFICIO 13 | 3d | 2026-08-21 | 2026-08-25 | 1506 |  |  | 2026-08-07 | 2026-08-11 | 3d | 183d | 0d |  |
| 1534 | 1.1.4.4.16 | EDIFICIO 18 | 3d | 2026-08-31 | 2026-09-02 | 1507 |  |  | 2026-08-18 | 2026-08-20 | 3d | 177d | 0d |  |
| 1535 | 1.1.4.4.17 | EDIFICIO 17 | 3d | 2026-09-09 | 2026-09-11 | 1508 |  |  | 2026-08-27 | 2026-08-31 | 3d | 170d | 0d |  |
| 1536 | 1.1.4.4.18 | EDIFICIO 16 | 3d | 2026-09-18 | 2026-09-22 | 1509 |  |  | 2026-09-07 | 2026-09-09 | 3d | 163d | 0d |  |
| 1537 | 1.1.4.4.19 | EDIFICIO 71 | 3d | 2026-09-29 | 2026-10-01 | 1510 |  |  | 2026-09-16 | 2026-09-18 | 3d | 157d | 0d |  |
| 1538 | 1.1.4.4.20 | EDIFICIO 70 | 3d | 2026-10-08 | 2026-10-12 | 1511 |  |  | 2026-09-28 | 2026-09-30 | 3d | 150d | 0d |  |
| 1539 | 1.1.4.4.21 | EDIFICIO 73 | 3d | 2026-10-19 | 2026-10-21 | 1512 |  |  | 2026-10-07 | 2026-10-09 | 3d | 143d | 0d |  |
| 1540 | 1.1.4.4.22 | EDIFICIO 72 | 3d | 2026-10-27 | 2026-10-29 | 1513 |  |  | 2026-10-16 | 2026-10-20 | 3d | 137d | 0d |  |
| 1541 | 1.1.4.4.23 | EDIFICIO 75 | 3d | 2026-11-05 | 2026-11-10 | 1514 |  |  | 2026-10-27 | 2026-10-29 | 3d | 130d | 0d |  |
| 1542 | 1.1.4.4.24 | EDIFICIO 74 | 3d | 2026-11-16 | 2026-11-18 | 1515 |  |  | 2026-11-05 | 2026-11-10 | 3d | 124d | 0d |  |
| 1543 | 1.1.4.4.25 | EDIFICIO 77 | 3d | 2026-11-24 | 2026-11-26 | 1516 |  |  | 2026-11-17 | 2026-11-19 | 3d | 118d | 0d |  |
| 1544 | 1.1.4.4.26 | EDIFICIO 76 | 3d | 2026-12-03 | 2026-12-07 | 1517 |  |  | 2026-11-26 | 2026-11-30 | 3d | 111d | 0d |  |

| ID | WBS | Task | Duration | Start | Finish | Predecessors | Complete | Remaining | Baseline start | Baseline finish | Baseline duration | Total slack | Free slack | Constraint |
| --- | --- | --- | --- | --- | --- | --- | --- | --- | --- | --- | --- | --- | --- | --- |
| 1545 | 1.1.5 | **ESTUCADO** | 193d | 2026-03-31 A | 2027-01-12 |  | 26% | 141.86d | 2026-03-25 | 2026-12-29 | 192d | 80d |  |  |
| 1546 | 1.1.5.1 | **ESTUCADO Y PRIMER INTERNO APTOS Y ESCALERA** | 193d | 2026-03-31 A | 2027-01-12 |  | 38% | 118.77d | 2026-04-06 | 2026-12-29 | 186d | 0d |  |  |
| 1547 | 1.1.5.1.1 | EDIFICIO 3 | 10d | 2026-03-31 A | 2026-04-15 A | 1438 | 100% |  | 2026-04-06 | 2026-04-17 | 10d |  |  |  |
| 1548 | 1.1.5.1.2 | EDIFICIO 2 | 10d | 2026-04-28 A | 2026-05-12 A |  | 100% |  | 2026-04-15 | 2026-04-28 | 10d |  |  | start no earlier than 2026-04-28 |
| 1549 | 1.1.5.1.3 | EDIFICIO 1 | 10d | 2026-04-30 A | 2026-05-14 A |  | 100% |  | 2026-04-24 | 2026-05-08 | 10d |  |  | start no earlier than 2026-04-30 |
| 1550 | 1.1.5.1.4 | EDIFICIO 6 | 10d | 2026-05-08 A | 2026-05-21 A | 1441 | 100% |  | 2026-05-07 | 2026-05-20 | 10d |  |  |  |
| 1551 | 1.1.5.1.5 | EDIFICIO 5 | 10d | 2026-05-15 A | 2026-05-28 A | 1442 | 100% |  | 2026-05-18 | 2026-05-29 | 10d |  |  |  |
| 1552 | 1.1.5.1.6 | EDIFICIO 4 | 10d | 2026-05-26 A | 2026-06-09 A | 1443 | 100% |  | 2026-05-27 | 2026-06-10 | 10d |  |  |  |
| 1553 | 1.1.5.1.7 | EDIFICIO 9 | 10d | 2026-05-29 A | 2026-06-12 A | 1444 | 100% |  | 2026-06-08 | 2026-06-19 | 10d |  |  |  |
| 1554 | 1.1.5.1.8 | EDIFICIO8 | 10d | 2026-06-03 A | 2026-06-17 A | 1445 | 100% |  | 2026-06-17 | 2026-06-30 | 10d |  |  |  |
| 1555 | 1.1.5.1.9 | EDIFICIO 7 | 10d | 2026-06-12 A | 2026-06-25 A | 1446 | 100% |  | 2026-06-26 | 2026-07-09 | 10d |  |  |  |
| 1556 | 1.1.5.1.10 | EDIFICIO 12 | 10d | 2026-06-24 A | 2026-07-07 A | 1447 | 100% |  | 2026-07-07 | 2026-07-20 | 10d |  |  |  |
| 1557 | 1.1.5.1.11 | EDIFICIO 11 | 10d | 2026-07-29 | 2026-08-11 | 1448 |  |  | 2026-07-16 | 2026-07-29 | 10d | 98d | 0d |  |
| 1558 | 1.1.5.1.12 | EDIFICIO 10 | 10d | 2026-07-29 | 2026-08-11 | 1449 |  |  | 2026-07-27 | 2026-08-07 | 10d | 98d | 0d |  |
| 1559 | 1.1.5.1.13 | EDIFICIO 15 | 10d | 2026-08-19 | 2026-09-01 | 1450 |  |  | 2026-08-05 | 2026-08-18 | 10d | 83d | 0d |  |
| 1560 | 1.1.5.1.14 | EDIFICIO 14 | 10d | 2026-08-28 | 2026-09-10 | 1451 |  |  | 2026-08-14 | 2026-08-27 | 10d | 76d | 0d |  |
| 1561 | 1.1.5.1.15 | EDIFICIO 13 | 10d | 2026-09-08 | 2026-09-21 | 1452 |  |  | 2026-08-25 | 2026-09-07 | 10d | 69d | 0d |  |
| 1562 | 1.1.5.1.16 | EDIFICIO 18 | 10d | 2026-09-16 | 2026-09-30 | 1453 |  |  | 2026-09-03 | 2026-09-16 | 10d | 63d | 0d |  |
| 1563 | 1.1.5.1.17 | EDIFICIO 17 | 10d | 2026-09-28 | 2026-10-09 | 1454 |  |  | 2026-09-14 | 2026-09-28 | 10d | 56d | 0d |  |
| 1564 | 1.1.5.1.18 | EDIFICIO 16 | 10d | 2026-10-07 | 2026-10-20 | 1455 |  |  | 2026-09-23 | 2026-10-07 | 10d | 49d | 0d |  |
| 1565 | 1.1.5.1.19 | EDIFICIO 71 | 10d | 2026-10-15 | 2026-10-28 | 1456 |  |  | 2026-10-05 | 2026-10-16 | 10d | 43d | 0d |  |
| 1566 | 1.1.5.1.20 | EDIFICIO 70 | 10d | 2026-10-26 | 2026-11-06 | 1457 |  |  | 2026-10-14 | 2026-10-27 | 10d | 36d | 0d |  |
| 1567 | 1.1.5.1.21 | EDIFICIO 73 | 10d | 2026-11-04 | 2026-11-18 | 1458 |  |  | 2026-10-23 | 2026-11-05 | 10d | 29d | 0d |  |
| 1568 | 1.1.5.1.22 | EDIFICIO 72 | 10d | 2026-11-13 | 2026-11-26 | 1459 |  |  | 2026-11-03 | 2026-11-17 | 10d | 23d | 0d |  |
| 1569 | 1.1.5.1.23 | EDIFICIO 75 | 10d | 2026-11-24 | 2026-12-07 | 1460 |  |  | 2026-11-13 | 2026-11-26 | 10d | 16d | 0d |  |
| 1570 | 1.1.5.1.24 | EDIFICIO 74 | 10d | 2026-12-02 | 2026-12-15 | 1461 |  |  | 2026-11-24 | 2026-12-07 | 10d | 10d | 0d |  |
| 1571 | 1.1.5.1.25 | EDIFICIO 77 | 10d | 2026-12-10 | 2026-12-23 | 1462 |  |  | 2026-12-03 | 2026-12-16 | 10d | 4d | 0d |  |
| 1572 | 1.1.5.1.26 | EDIFICIO 76 | 10d | 2026-12-21 | 2027-01-12 | 1463 |  |  | 2026-12-14 | 2026-12-29 | 10d | 0d |  |  |

| ID | WBS | Task | Duration | Start | Finish | Predecessors | Complete | Remaining | Baseline start | Baseline finish | Baseline duration | Total slack | Free slack | Constraint |
| --- | --- | --- | --- | --- | --- | --- | --- | --- | --- | --- | --- | --- | --- | --- |
| 1573 | 1.1.5.2 | **ESTUCADO EXTERIOR Y PRIMER** | 173d | 2026-04-20 A | 2026-12-22 |  | 12% | 153.04d | 2026-03-25 | 2026-12-15 | 184d | 88d |  |  |
| 1574 | 1.1.5.2.1 | EDIFICIO 3 | 8d | 2026-04-20 A | 2026-04-29 A | 1465 | 100% |  | 2026-03-25 | 2026-04-07 | 8d |  |  | start no earlier than 2026-04-20 |
| 1575 | 1.1.5.2.2 | EDIFICIO 2 | 8d | 2026-05-26 A | 2026-06-05 A | 1466 | 100% |  | 2026-04-07 | 2026-04-16 | 8d |  |  | start no earlier than 2026-05-26 |
| 1576 | 1.1.5.2.3 | EDIFICIO 1 | 8d | 2026-05-29 A | 2026-06-11 A | 1467 | 100% |  | 2026-04-16 | 2026-04-27 | 8d |  |  |  |
| 1577 | 1.1.5.2.4 | EDIFICIO 6 | 8d | 2026-07-01 | 2026-07-10 | 1468 |  |  | 2026-04-28 | 2026-05-08 | 8d | 203d | 0d | start no earlier than 2026-07-01 |
| 1578 | 1.1.5.2.5 | EDIFICIO 5 | 8d | 2026-07-01 | 2026-07-10 | 1469 |  |  | 2026-05-08 | 2026-05-19 | 8d | 203d | 0d | start no earlier than 2026-07-01 |
| 1579 | 1.1.5.2.6 | EDIFICIO 4 | 8d | 2026-07-15 | 2026-07-24 | 1470 |  |  | 2026-05-19 | 2026-05-28 | 8d | 193d | 0d |  |
| 1580 | 1.1.5.2.7 | EDIFICIO 9 | 8d | 2026-07-15 | 2026-07-24 | 1471 |  |  | 2026-05-28 | 2026-06-09 | 8d | 193d | 0d |  |
| 1581 | 1.1.5.2.8 | EDIFICIO8 | 8d | 2026-07-21 | 2026-07-30 | 1472 |  |  | 2026-06-09 | 2026-06-18 | 8d | 189d | 0d |  |
| 1582 | 1.1.5.2.9 | EDIFICIO 7 | 8d | 2026-07-21 | 2026-07-30 | 1473 |  |  | 2026-06-18 | 2026-06-29 | 8d | 189d | 0d |  |
| 1583 | 1.1.5.2.10 | EDIFICIO 12 | 8d | 2026-07-21 | 2026-07-30 | 1474 |  |  | 2026-06-29 | 2026-07-08 | 8d | 189d | 0d |  |
| 1584 | 1.1.5.2.11 | EDIFICIO 11 | 8d | 2026-07-21 | 2026-07-30 | 1475 |  |  | 2026-07-08 | 2026-07-17 | 8d | 189d | 0d |  |
| 1585 | 1.1.5.2.12 | EDIFICIO 10 | 8d | 2026-07-21 | 2026-07-30 | 1476 |  |  | 2026-07-17 | 2026-07-28 | 8d | 189d | 0d |  |
| 1586 | 1.1.5.2.13 | EDIFICIO 15 | 8d | 2026-08-11 | 2026-08-20 | 1477 |  |  | 2026-07-28 | 2026-08-06 | 8d | 174d | 0d |  |
| 1587 | 1.1.5.2.14 | EDIFICIO 14 | 8d | 2026-08-20 | 2026-08-31 | 1478 |  |  | 2026-08-06 | 2026-08-17 | 8d | 167d | 0d |  |
| 1588 | 1.1.5.2.15 | EDIFICIO 13 | 8d | 2026-08-31 | 2026-09-09 | 1479 |  |  | 2026-08-17 | 2026-08-26 | 8d | 160d | 0d |  |
| 1589 | 1.1.5.2.16 | EDIFICIO 18 | 8d | 2026-09-08 | 2026-09-17 | 1480 |  |  | 2026-08-26 | 2026-09-04 | 8d | 154d | 0d |  |
| 1590 | 1.1.5.2.17 | EDIFICIO 17 | 8d | 2026-09-17 | 2026-09-29 | 1481 |  |  | 2026-09-04 | 2026-09-15 | 8d | 147d | 0d |  |
| 1591 | 1.1.5.2.18 | EDIFICIO 16 | 8d | 2026-09-29 | 2026-10-08 | 1482 |  |  | 2026-09-15 | 2026-09-25 | 8d | 140d | 0d |  |
| 1592 | 1.1.5.2.19 | EDIFICIO 71 | 8d | 2026-10-07 | 2026-10-16 | 1483 |  |  | 2026-09-25 | 2026-10-06 | 8d | 134d | 0d |  |
| 1593 | 1.1.5.2.20 | EDIFICIO 70 | 8d | 2026-10-16 | 2026-10-27 | 1484 |  |  | 2026-10-06 | 2026-10-15 | 8d | 127d | 0d |  |
| 1594 | 1.1.5.2.21 | EDIFICIO 73 | 8d | 2026-10-27 | 2026-11-05 | 1485 |  |  | 2026-10-15 | 2026-10-26 | 8d | 120d | 0d |  |
| 1595 | 1.1.5.2.22 | EDIFICIO 72 | 8d | 2026-11-04 | 2026-11-16 | 1486 |  |  | 2026-10-26 | 2026-11-04 | 8d | 114d | 0d |  |
| 1596 | 1.1.5.2.23 | EDIFICIO 75 | 8d | 2026-11-16 | 2026-11-25 | 1487 |  |  | 2026-11-04 | 2026-11-16 | 8d | 107d | 0d |  |
| 1597 | 1.1.5.2.24 | EDIFICIO 74 | 8d | 2026-11-24 | 2026-12-03 | 1488 |  |  | 2026-11-16 | 2026-11-25 | 8d | 101d | 0d |  |
| 1598 | 1.1.5.2.25 | EDIFICIO 77 | 8d | 2026-12-02 | 2026-12-11 | 1489 |  |  | 2026-11-25 | 2026-12-04 | 8d | 95d | 0d |  |
| 1599 | 1.1.5.2.26 | EDIFICIO 76 | 8d | 2026-12-11 | 2026-12-22 | 1490 |  |  | 2026-12-04 | 2026-12-15 | 8d | 88d | 0d |  |

| ID | WBS | Task | Duration | Start | Finish | Predecessors | Complete | Remaining | Baseline start | Baseline finish | Baseline duration | Total slack | Free slack | Constraint |
| --- | --- | --- | --- | --- | --- | --- | --- | --- | --- | --- | --- | --- | --- | --- |
| 1600 | 1.1.6 | **REVESTIMIENTOS** | 185d | 2026-04-30 A | 2027-02-01 |  | 4% | 178.19d | 2026-04-08 | 2027-01-22 | 196d | 90d |  |  |
| 1601 | 1.1.6.1 | **CERAMICA EN BAÑOS** | 159d | 2026-05-29 A | 2027-01-20 |  | 4% | 152.88d | 2026-04-20 | 2027-01-13 | 182d | 0d |  |  |
| 1602 | 1.1.6.1.1 | EDIFICIO 3 | 6d | 2026-05-29 A | 2026-06-08 A | 1547 | 100% |  | 2026-04-20 | 2026-04-27 | 6d |  |  | start no earlier than 2026-05-29 |
| 1603 | 1.1.6.1.2 | EDIFICIO 2 | 6d | 2026-07-01 | 2026-07-08 | 1548 |  |  | 2026-04-29 | 2026-05-07 | 6d | 128d | 0d | start no earlier than 2026-07-01 |
| 1604 | 1.1.6.1.3 | EDIFICIO 1 | 6d | 2026-07-01 | 2026-07-08 | 1549 |  |  | 2026-05-11 | 2026-05-18 | 6d | 128d | 0d | start no earlier than 2026-07-01 |
| 1605 | 1.1.6.1.4 | EDIFICIO 6 | 6d | 2026-07-01 | 2026-07-08 | 1550 |  |  | 2026-05-21 | 2026-05-28 | 6d | 128d | 0d | start no earlier than 2026-07-01 |
| 1606 | 1.1.6.1.5 | EDIFICIO 5 | 6d | 2026-07-01 | 2026-07-08 | 1551 |  |  | 2026-06-01 | 2026-06-09 | 6d | 128d | 0d | start no earlier than 2026-07-01 |
| 1607 | 1.1.6.1.6 | EDIFICIO 4 | 6d | 2026-07-01 | 2026-07-08 | 1552 |  |  | 2026-06-11 | 2026-06-18 | 6d | 128d | 0d | start no earlier than 2026-07-01 |
| 1608 | 1.1.6.1.7 | EDIFICIO 9 | 6d | 2026-07-01 | 2026-07-08 | 1553 |  |  | 2026-06-22 | 2026-06-29 | 6d | 128d | 0d | start no earlier than 2026-07-01 |
| 1609 | 1.1.6.1.8 | EDIFICIO8 | 6d | 2026-07-01 | 2026-07-08 | 1554 |  |  | 2026-07-01 | 2026-07-08 | 6d | 128d | 0d | start no earlier than 2026-07-01 |
| 1610 | 1.1.6.1.9 | EDIFICIO 7 | 6d | 2026-07-01 | 2026-07-08 | 1555 |  |  | 2026-07-10 | 2026-07-17 | 6d | 128d | 0d | start no earlier than 2026-07-01 |
| 1611 | 1.1.6.1.10 | EDIFICIO 12 | 6d | 2026-07-08 | 2026-07-15 | 1556 |  |  | 2026-07-21 | 2026-07-28 | 6d | 123d | 0d |  |
| 1612 | 1.1.6.1.11 | EDIFICIO 11 | 6d | 2026-08-12 | 2026-08-19 | 1557 |  |  | 2026-07-30 | 2026-08-06 | 6d | 98d | 0d |  |
| 1613 | 1.1.6.1.12 | EDIFICIO 10 | 6d | 2026-08-12 | 2026-08-19 | 1558 |  |  | 2026-08-10 | 2026-08-17 | 6d | 98d | 0d |  |
| 1614 | 1.1.6.1.13 | EDIFICIO 15 | 6d | 2026-09-02 | 2026-09-09 | 1559 |  |  | 2026-08-19 | 2026-08-26 | 6d | 83d | 0d |  |
| 1615 | 1.1.6.1.14 | EDIFICIO 14 | 6d | 2026-09-11 | 2026-09-18 | 1560 |  |  | 2026-08-28 | 2026-09-04 | 6d | 76d | 0d |  |
| 1616 | 1.1.6.1.15 | EDIFICIO 13 | 6d | 2026-09-22 | 2026-09-30 | 1561 |  |  | 2026-09-08 | 2026-09-15 | 6d | 69d | 0d |  |
| 1617 | 1.1.6.1.16 | EDIFICIO 18 | 6d | 2026-10-01 | 2026-10-08 | 1562 |  |  | 2026-09-17 | 2026-09-25 | 6d | 63d | 0d |  |
| 1618 | 1.1.6.1.17 | EDIFICIO 17 | 6d | 2026-10-12 | 2026-10-19 | 1563 |  |  | 2026-09-29 | 2026-10-06 | 6d | 56d | 0d |  |
| 1619 | 1.1.6.1.18 | EDIFICIO 16 | 6d | 2026-10-21 | 2026-10-28 | 1564 |  |  | 2026-10-08 | 2026-10-15 | 6d | 49d | 0d |  |
| 1620 | 1.1.6.1.19 | EDIFICIO 71 | 6d | 2026-10-29 | 2026-11-05 | 1565 |  |  | 2026-10-19 | 2026-10-26 | 6d | 43d | 0d |  |
| 1621 | 1.1.6.1.20 | EDIFICIO 70 | 6d | 2026-11-10 | 2026-11-17 | 1566 |  |  | 2026-10-28 | 2026-11-04 | 6d | 36d | 0d |  |
| 1622 | 1.1.6.1.21 | EDIFICIO 73 | 6d | 2026-11-19 | 2026-11-26 | 1567 |  |  | 2026-11-06 | 2026-11-16 | 6d | 29d | 0d |  |
| 1623 | 1.1.6.1.22 | EDIFICIO 72 | 6d | 2026-11-27 | 2026-12-04 | 1568 |  |  | 2026-11-18 | 2026-11-25 | 6d | 23d | 0d |  |
| 1624 | 1.1.6.1.23 | EDIFICIO 75 | 6d | 2026-12-08 | 2026-12-15 | 1569 |  |  | 2026-11-27 | 2026-12-04 | 6d | 16d | 0d |  |
| 1625 | 1.1.6.1.24 | EDIFICIO 74 | 6d | 2026-12-16 | 2026-12-23 | 1570 |  |  | 2026-12-08 | 2026-12-15 | 6d | 10d | 0d |  |
| 1626 | 1.1.6.1.25 | EDIFICIO 77 | 6d | 2026-12-28 | 2027-01-11 | 1571 |  |  | 2026-12-17 | 2026-12-28 | 6d | 4d | 0d |  |
| 1627 | 1.1.6.1.26 | EDIFICIO 76 | 6d | 2027-01-13 | 2027-01-20 | 1572 |  |  | 2026-12-30 | 2027-01-13 | 6d | 0d |  |  |

| ID | WBS | Task | Duration | Start | Finish | Predecessors | Baseline start | Baseline finish | Baseline duration | Total slack | Free slack | Constraint |
| --- | --- | --- | --- | --- | --- | --- | --- | --- | --- | --- | --- | --- |
| 1628 | 1.1.6.2 | **REVESTIMIENTO EN ESCALERAS** | 137d | 2026-07-01 | 2027-01-20 |  | 2026-04-20 | 2027-01-13 | 182d | 89d |  |  |
| 1629 | 1.1.6.2.1 | EDIFICIO 3 | 6d | 2026-07-01 | 2026-07-08 | 1547 | 2026-04-20 | 2026-04-27 | 6d | 220d | 0d | start no earlier than 2026-07-01 |
| 1630 | 1.1.6.2.2 | EDIFICIO 2 | 6d | 2026-07-01 | 2026-07-08 | 1548 | 2026-04-29 | 2026-05-07 | 6d | 220d | 0d | start no earlier than 2026-07-01 |
| 1631 | 1.1.6.2.3 | EDIFICIO 1 | 6d | 2026-07-01 | 2026-07-08 | 1549 | 2026-05-11 | 2026-05-18 | 6d | 220d | 0d | start no earlier than 2026-07-01 |
| 1632 | 1.1.6.2.4 | EDIFICIO 6 | 6d | 2026-07-01 | 2026-07-08 | 1550 | 2026-05-21 | 2026-05-28 | 6d | 220d | 0d | start no earlier than 2026-07-01 |
| 1633 | 1.1.6.2.5 | EDIFICIO 5 | 6d | 2026-07-01 | 2026-07-08 | 1551 | 2026-06-01 | 2026-06-09 | 6d | 220d | 0d | start no earlier than 2026-07-01 |
| 1634 | 1.1.6.2.6 | EDIFICIO 4 | 6d | 2026-07-01 | 2026-07-08 | 1552 | 2026-06-11 | 2026-06-18 | 6d | 220d | 0d | start no earlier than 2026-07-01 |
| 1635 | 1.1.6.2.7 | EDIFICIO 9 | 6d | 2026-07-01 | 2026-07-08 | 1553 | 2026-06-22 | 2026-06-29 | 6d | 220d | 0d | start no earlier than 2026-07-01 |
| 1636 | 1.1.6.2.8 | EDIFICIO8 | 6d | 2026-07-01 | 2026-07-08 | 1554 | 2026-07-01 | 2026-07-08 | 6d | 220d | 0d | start no earlier than 2026-07-01 |
| 1637 | 1.1.6.2.9 | EDIFICIO 7 | 6d | 2026-07-01 | 2026-07-08 | 1555 | 2026-07-10 | 2026-07-17 | 6d | 220d | 0d | start no earlier than 2026-07-01 |
| 1638 | 1.1.6.2.10 | EDIFICIO 12 | 6d | 2026-07-08 | 2026-07-15 | 1556 | 2026-07-21 | 2026-07-28 | 6d | 215d | 0d |  |
| 1639 | 1.1.6.2.11 | EDIFICIO 11 | 6d | 2026-08-12 | 2026-08-19 | 1557 | 2026-07-30 | 2026-08-06 | 6d | 190d | 0d |  |
| 1640 | 1.1.6.2.12 | EDIFICIO 10 | 6d | 2026-08-12 | 2026-08-19 | 1558 | 2026-08-10 | 2026-08-17 | 6d | 190d | 0d |  |
| 1641 | 1.1.6.2.13 | EDIFICIO 15 | 6d | 2026-09-02 | 2026-09-09 | 1559 | 2026-08-19 | 2026-08-26 | 6d | 175d | 0d |  |
| 1642 | 1.1.6.2.14 | EDIFICIO 14 | 6d | 2026-09-11 | 2026-09-18 | 1560 | 2026-08-28 | 2026-09-04 | 6d | 168d | 0d |  |
| 1643 | 1.1.6.2.15 | EDIFICIO 13 | 6d | 2026-09-22 | 2026-09-30 | 1561 | 2026-09-08 | 2026-09-15 | 6d | 161d | 0d |  |
| 1644 | 1.1.6.2.16 | EDIFICIO 18 | 6d | 2026-10-01 | 2026-10-08 | 1562 | 2026-09-17 | 2026-09-25 | 6d | 155d | 0d |  |
| 1645 | 1.1.6.2.17 | EDIFICIO 17 | 6d | 2026-10-12 | 2026-10-19 | 1563 | 2026-09-29 | 2026-10-06 | 6d | 148d | 0d |  |
| 1646 | 1.1.6.2.18 | EDIFICIO 16 | 6d | 2026-10-21 | 2026-10-28 | 1564 | 2026-10-08 | 2026-10-15 | 6d | 141d | 0d |  |
| 1647 | 1.1.6.2.19 | EDIFICIO 71 | 6d | 2026-10-29 | 2026-11-05 | 1565 | 2026-10-19 | 2026-10-26 | 6d | 135d | 0d |  |
| 1648 | 1.1.6.2.20 | EDIFICIO 70 | 6d | 2026-11-10 | 2026-11-17 | 1566 | 2026-10-28 | 2026-11-04 | 6d | 128d | 0d |  |
| 1649 | 1.1.6.2.21 | EDIFICIO 73 | 6d | 2026-11-19 | 2026-11-26 | 1567 | 2026-11-06 | 2026-11-16 | 6d | 121d | 0d |  |
| 1650 | 1.1.6.2.22 | EDIFICIO 72 | 6d | 2026-11-27 | 2026-12-04 | 1568 | 2026-11-18 | 2026-11-25 | 6d | 115d | 0d |  |
| 1651 | 1.1.6.2.23 | EDIFICIO 75 | 6d | 2026-12-08 | 2026-12-15 | 1569 | 2026-11-27 | 2026-12-04 | 6d | 108d | 0d |  |
| 1652 | 1.1.6.2.24 | EDIFICIO 74 | 6d | 2026-12-16 | 2026-12-23 | 1570 | 2026-12-08 | 2026-12-15 | 6d | 102d | 0d |  |
| 1653 | 1.1.6.2.25 | EDIFICIO 77 | 6d | 2026-12-28 | 2027-01-11 | 1571 | 2026-12-17 | 2026-12-28 | 6d | 96d | 0d |  |
| 1654 | 1.1.6.2.26 | EDIFICIO 76 | 6d | 2027-01-13 | 2027-01-20 | 1572 | 2026-12-30 | 2027-01-13 | 6d | 89d | 0d |  |

| ID | WBS | Task | Duration | Start | Finish | Predecessors | Complete | Remaining | Baseline start | Baseline finish | Baseline duration | Total slack | Free slack | Constraint |
| --- | --- | --- | --- | --- | --- | --- | --- | --- | --- | --- | --- | --- | --- | --- |
| 1655 | 1.1.6.3 | **NIVELACION DE PISOS** | 150d | 2026-06-22 A | 2027-02-01 |  | 4% | 144.23d | 2026-04-28 | 2027-01-22 | 182d | 0d |  |  |
| 1656 | 1.1.6.3.1 | EDIFICIO 3 | 6d | 2026-06-22 A | 2026-06-29 A |  | 100% |  | 2026-04-28 | 2026-05-06 | 6d |  |  | start no earlier than 2026-06-22 |
| 1657 | 1.1.6.3.2 | EDIFICIO 2 | 6d | 2026-07-09 | 2026-07-16 | 1603 |  |  | 2026-05-08 | 2026-05-15 | 6d | 128d | 0d |  |
| 1658 | 1.1.6.3.3 | EDIFICIO 1 | 6d | 2026-07-09 | 2026-07-16 | 1604 |  |  | 2026-05-19 | 2026-05-26 | 6d | 128d | 0d |  |
| 1659 | 1.1.6.3.4 | EDIFICIO 6 | 6d | 2026-07-09 | 2026-07-16 | 1605 |  |  | 2026-05-29 | 2026-06-08 | 6d | 128d | 0d |  |
| 1660 | 1.1.6.3.5 | EDIFICIO 5 | 6d | 2026-07-09 | 2026-07-16 | 1606 |  |  | 2026-06-10 | 2026-06-17 | 6d | 128d | 0d |  |
| 1661 | 1.1.6.3.6 | EDIFICIO 4 | 6d | 2026-07-09 | 2026-07-16 | 1607 |  |  | 2026-06-19 | 2026-06-26 | 6d | 128d | 0d |  |
| 1662 | 1.1.6.3.7 | EDIFICIO 9 | 6d | 2026-07-09 | 2026-07-16 | 1608 |  |  | 2026-06-30 | 2026-07-07 | 6d | 128d | 0d |  |
| 1663 | 1.1.6.3.8 | EDIFICIO8 | 6d | 2026-07-09 | 2026-07-16 | 1609 |  |  | 2026-07-09 | 2026-07-16 | 6d | 128d | 0d |  |
| 1664 | 1.1.6.3.9 | EDIFICIO 7 | 6d | 2026-07-09 | 2026-07-16 | 1610 |  |  | 2026-07-20 | 2026-07-27 | 6d | 128d | 0d |  |
| 1665 | 1.1.6.3.10 | EDIFICIO 12 | 6d | 2026-07-16 | 2026-07-23 | 1611 |  |  | 2026-07-29 | 2026-08-05 | 6d | 123d | 0d |  |
| 1666 | 1.1.6.3.11 | EDIFICIO 11 | 6d | 2026-08-20 | 2026-08-27 | 1612 |  |  | 2026-08-07 | 2026-08-14 | 6d | 98d | 0d |  |
| 1667 | 1.1.6.3.12 | EDIFICIO 10 | 6d | 2026-08-20 | 2026-08-27 | 1613 |  |  | 2026-08-18 | 2026-08-25 | 6d | 98d | 0d |  |
| 1668 | 1.1.6.3.13 | EDIFICIO 15 | 6d | 2026-09-10 | 2026-09-17 | 1614 |  |  | 2026-08-27 | 2026-09-03 | 6d | 83d | 0d |  |
| 1669 | 1.1.6.3.14 | EDIFICIO 14 | 6d | 2026-09-21 | 2026-09-29 | 1615 |  |  | 2026-09-07 | 2026-09-14 | 6d | 76d | 0d |  |
| 1670 | 1.1.6.3.15 | EDIFICIO 13 | 6d | 2026-10-01 | 2026-10-08 | 1616 |  |  | 2026-09-16 | 2026-09-23 | 6d | 69d | 0d |  |
| 1671 | 1.1.6.3.16 | EDIFICIO 18 | 6d | 2026-10-09 | 2026-10-16 | 1617 |  |  | 2026-09-28 | 2026-10-05 | 6d | 63d | 0d |  |
| 1672 | 1.1.6.3.17 | EDIFICIO 17 | 6d | 2026-10-20 | 2026-10-27 | 1618 |  |  | 2026-10-07 | 2026-10-14 | 6d | 56d | 0d |  |
| 1673 | 1.1.6.3.18 | EDIFICIO 16 | 6d | 2026-10-29 | 2026-11-05 | 1619 |  |  | 2026-10-16 | 2026-10-23 | 6d | 49d | 0d |  |
| 1674 | 1.1.6.3.19 | EDIFICIO 71 | 6d | 2026-11-06 | 2026-11-16 | 1620 |  |  | 2026-10-27 | 2026-11-03 | 6d | 43d | 0d |  |
| 1675 | 1.1.6.3.20 | EDIFICIO 70 | 6d | 2026-11-18 | 2026-11-25 | 1621 |  |  | 2026-11-05 | 2026-11-13 | 6d | 36d | 0d |  |
| 1676 | 1.1.6.3.21 | EDIFICIO 73 | 6d | 2026-11-27 | 2026-12-04 | 1622 |  |  | 2026-11-17 | 2026-11-24 | 6d | 29d | 0d |  |
| 1677 | 1.1.6.3.22 | EDIFICIO 72 | 6d | 2026-12-07 | 2026-12-14 | 1623 |  |  | 2026-11-26 | 2026-12-03 | 6d | 23d | 0d |  |
| 1678 | 1.1.6.3.23 | EDIFICIO 75 | 6d | 2026-12-16 | 2026-12-23 | 1624 |  |  | 2026-12-07 | 2026-12-14 | 6d | 16d | 0d |  |
| 1679 | 1.1.6.3.24 | EDIFICIO 74 | 6d | 2026-12-28 | 2027-01-11 | 1625 |  |  | 2026-12-16 | 2026-12-23 | 6d | 10d | 0d |  |
| 1680 | 1.1.6.3.25 | EDIFICIO 77 | 6d | 2027-01-12 | 2027-01-19 | 1626 |  |  | 2026-12-29 | 2027-01-12 | 6d | 4d | 0d |  |
| 1681 | 1.1.6.3.26 | EDIFICIO 76 | 6d | 2027-01-22 | 2027-02-01 | 1627 |  |  | 2027-01-14 | 2027-01-22 | 6d | 0d |  |  |

| ID | WBS | Task | Duration | Start | Finish | Predecessors | Complete | Remaining | Baseline start | Baseline finish | Baseline duration | Total slack | Constraint |
| --- | --- | --- | --- | --- | --- | --- | --- | --- | --- | --- | --- | --- | --- |
| 1682 | 1.1.6.4 | **TABLILLA** | 170d | 2026-04-30 A | 2027-01-07 |  | 8% | 156.92d | 2026-04-08 | 2026-12-22 | 181d | 105d |  |
| 1683 | 1.1.6.4.1 | EDIFICIO 3 | 5d | 2026-04-30 A | 2026-05-07 A | 1574 | 100% |  | 2026-04-08 | 2026-04-14 | 5d |  |  |
| 1684 | 1.1.6.4.2 | EDIFICIO 2 | 5d | 2026-06-08 A | 2026-06-12 A | 1575 | 100% |  | 2026-04-17 | 2026-04-23 | 5d |  |  |
| 1685 | 1.1.6.4.3 | EDIFICIO 1 | 5d | 2026-06-29 | 2026-07-03 | 1576 |  |  | 2026-04-28 | 2026-05-05 | 5d | 230d | start no earlier than 2026-06-29 |
| 1686 | 1.1.6.4.4 | EDIFICIO 6 | 5d | 2026-07-13 | 2026-07-17 | 1577 |  |  | 2026-05-11 | 2026-05-15 | 5d | 220d |  |
| 1687 | 1.1.6.4.5 | EDIFICIO 5 | 5d | 2026-07-13 | 2026-07-17 | 1578 |  |  | 2026-05-20 | 2026-05-26 | 5d | 220d |  |
| 1688 | 1.1.6.4.6 | EDIFICIO 4 | 5d | 2026-07-27 | 2026-07-31 | 1579 |  |  | 2026-05-29 | 2026-06-05 | 5d | 210d |  |
| 1689 | 1.1.6.4.7 | EDIFICIO 9 | 5d | 2026-07-27 | 2026-07-31 | 1580 |  |  | 2026-06-10 | 2026-06-16 | 5d | 210d |  |
| 1690 | 1.1.6.4.8 | EDIFICIO8 | 5d | 2026-07-31 | 2026-08-06 | 1581 |  |  | 2026-06-19 | 2026-06-25 | 5d | 206d |  |
| 1691 | 1.1.6.4.9 | EDIFICIO 7 | 5d | 2026-07-31 | 2026-08-06 | 1582 |  |  | 2026-06-30 | 2026-07-06 | 5d | 206d |  |
| 1692 | 1.1.6.4.10 | EDIFICIO 12 | 5d | 2026-07-31 | 2026-08-06 | 1583 |  |  | 2026-07-09 | 2026-07-15 | 5d | 206d |  |
| 1693 | 1.1.6.4.11 | EDIFICIO 11 | 5d | 2026-07-31 | 2026-08-06 | 1584 |  |  | 2026-07-20 | 2026-07-24 | 5d | 206d |  |
| 1694 | 1.1.6.4.12 | EDIFICIO 10 | 5d | 2026-07-31 | 2026-08-06 | 1585 |  |  | 2026-07-29 | 2026-08-04 | 5d | 206d |  |
| 1695 | 1.1.6.4.13 | EDIFICIO 15 | 5d | 2026-08-21 | 2026-08-27 | 1586 |  |  | 2026-08-07 | 2026-08-13 | 5d | 191d |  |
| 1696 | 1.1.6.4.14 | EDIFICIO 14 | 5d | 2026-09-01 | 2026-09-07 | 1587 |  |  | 2026-08-18 | 2026-08-24 | 5d | 184d |  |
| 1697 | 1.1.6.4.15 | EDIFICIO 13 | 5d | 2026-09-10 | 2026-09-16 | 1588 |  |  | 2026-08-27 | 2026-09-02 | 5d | 177d |  |
| 1698 | 1.1.6.4.16 | EDIFICIO 18 | 5d | 2026-09-18 | 2026-09-25 | 1589 |  |  | 2026-09-07 | 2026-09-11 | 5d | 171d |  |
| 1699 | 1.1.6.4.17 | EDIFICIO 17 | 5d | 2026-09-30 | 2026-10-06 | 1590 |  |  | 2026-09-16 | 2026-09-22 | 5d | 164d |  |
| 1700 | 1.1.6.4.18 | EDIFICIO 16 | 5d | 2026-10-09 | 2026-10-15 | 1591 |  |  | 2026-09-28 | 2026-10-02 | 5d | 157d |  |
| 1701 | 1.1.6.4.19 | EDIFICIO 71 | 5d | 2026-10-19 | 2026-10-23 | 1592 |  |  | 2026-10-07 | 2026-10-13 | 5d | 151d |  |
| 1702 | 1.1.6.4.20 | EDIFICIO 70 | 5d | 2026-10-28 | 2026-11-03 | 1593 |  |  | 2026-10-16 | 2026-10-22 | 5d | 144d |  |
| 1703 | 1.1.6.4.21 | EDIFICIO 73 | 5d | 2026-11-06 | 2026-11-13 | 1594 |  |  | 2026-10-27 | 2026-11-02 | 5d | 137d |  |
| 1704 | 1.1.6.4.22 | EDIFICIO 72 | 5d | 2026-11-17 | 2026-11-23 | 1595 |  |  | 2026-11-05 | 2026-11-12 | 5d | 131d |  |
| 1705 | 1.1.6.4.23 | EDIFICIO 75 | 5d | 2026-11-26 | 2026-12-02 | 1596 |  |  | 2026-11-17 | 2026-11-23 | 5d | 124d |  |
| 1706 | 1.1.6.4.24 | EDIFICIO 74 | 5d | 2026-12-04 | 2026-12-10 | 1597 |  |  | 2026-11-26 | 2026-12-02 | 5d | 118d |  |
| 1707 | 1.1.6.4.25 | EDIFICIO 77 | 5d | 2026-12-14 | 2026-12-18 | 1598 |  |  | 2026-12-07 | 2026-12-11 | 5d | 112d |  |
| 1708 | 1.1.6.4.26 | EDIFICIO 76 | 5d | 2026-12-23 | 2027-01-07 | 1599 |  |  | 2026-12-16 | 2026-12-22 | 5d | 105d |  |

| ID | WBS | Task | Duration | Start | Finish | Predecessors | Baseline start | Baseline finish | Baseline duration | Total slack | Free slack | Constraint |
| --- | --- | --- | --- | --- | --- | --- | --- | --- | --- | --- | --- | --- |
| 1709 | 1.1.7 | **VIDRIO Y ALUMINIO** | 149d | 2026-07-01 | 2027-02-09 |  | 2026-05-05 | 2027-02-02 | 184d | 0d |  |  |
| 1710 | 1.1.7.1 | EDIFICIO 3 | 8d | 2026-07-01 | 2026-07-10 | 1656SS+4d | 2026-05-05 | 2026-05-14 | 8d | 138d | 0d | start no earlier than 2026-07-01 |
| 1711 | 1.1.7.2 | EDIFICIO 2 | 8d | 2026-07-15 | 2026-07-24 | 1657SS+4d | 2026-05-14 | 2026-05-25 | 8d | 128d | 0d |  |
| 1712 | 1.1.7.3 | EDIFICIO 1 | 8d | 2026-07-15 | 2026-07-24 | 1658SS+4d | 2026-05-25 | 2026-06-03 | 8d | 128d | 0d |  |
| 1713 | 1.1.7.4 | EDIFICIO 6 | 8d | 2026-07-15 | 2026-07-24 | 1659SS+4d | 2026-06-05 | 2026-06-16 | 8d | 128d | 0d |  |
| 1714 | 1.1.7.5 | EDIFICIO 5 | 8d | 2026-07-15 | 2026-07-24 | 1660SS+4d | 2026-06-16 | 2026-06-25 | 8d | 128d | 0d |  |
| 1715 | 1.1.7.6 | EDIFICIO 4 | 8d | 2026-07-15 | 2026-07-24 | 1661SS+4d | 2026-06-25 | 2026-07-06 | 8d | 128d | 0d |  |
| 1716 | 1.1.7.7 | EDIFICIO 9 | 8d | 2026-07-15 | 2026-07-24 | 1662SS+4d | 2026-07-06 | 2026-07-15 | 8d | 128d | 0d |  |
| 1717 | 1.1.7.8 | EDIFICIO8 | 8d | 2026-07-15 | 2026-07-24 | 1663SS+4d | 2026-07-15 | 2026-07-24 | 8d | 128d | 0d |  |
| 1718 | 1.1.7.9 | EDIFICIO 7 | 8d | 2026-07-15 | 2026-07-24 | 1664SS+4d | 2026-07-24 | 2026-08-04 | 8d | 128d | 0d |  |
| 1719 | 1.1.7.10 | EDIFICIO 12 | 8d | 2026-07-22 | 2026-07-31 | 1665SS+4d | 2026-08-04 | 2026-08-13 | 8d | 123d | 0d |  |
| 1720 | 1.1.7.11 | EDIFICIO 11 | 8d | 2026-08-26 | 2026-09-04 | 1666SS+4d | 2026-08-13 | 2026-08-24 | 8d | 98d | 0d |  |
| 1721 | 1.1.7.12 | EDIFICIO 10 | 8d | 2026-08-26 | 2026-09-04 | 1667SS+4d | 2026-08-24 | 2026-09-02 | 8d | 98d | 0d |  |
| 1722 | 1.1.7.13 | EDIFICIO 15 | 8d | 2026-09-16 | 2026-09-28 | 1668SS+4d | 2026-09-02 | 2026-09-11 | 8d | 83d | 0d |  |
| 1723 | 1.1.7.14 | EDIFICIO 14 | 8d | 2026-09-28 | 2026-10-07 | 1669SS+4d | 2026-09-11 | 2026-09-22 | 8d | 76d | 0d |  |
| 1724 | 1.1.7.15 | EDIFICIO 13 | 8d | 2026-10-07 | 2026-10-16 | 1670SS+4d | 2026-09-22 | 2026-10-02 | 8d | 69d | 0d |  |
| 1725 | 1.1.7.16 | EDIFICIO 18 | 8d | 2026-10-15 | 2026-10-26 | 1671SS+4d | 2026-10-02 | 2026-10-13 | 8d | 63d | 0d |  |
| 1726 | 1.1.7.17 | EDIFICIO 17 | 8d | 2026-10-26 | 2026-11-04 | 1672SS+4d | 2026-10-13 | 2026-10-22 | 8d | 56d | 0d |  |
| 1727 | 1.1.7.18 | EDIFICIO 16 | 8d | 2026-11-04 | 2026-11-16 | 1673SS+4d | 2026-10-22 | 2026-11-02 | 8d | 49d | 0d |  |
| 1728 | 1.1.7.19 | EDIFICIO 71 | 8d | 2026-11-13 | 2026-11-24 | 1674SS+4d | 2026-11-02 | 2026-11-12 | 8d | 43d | 0d |  |
| 1729 | 1.1.7.20 | EDIFICIO 70 | 8d | 2026-11-24 | 2026-12-03 | 1675SS+4d | 2026-11-12 | 2026-11-23 | 8d | 36d | 0d |  |
| 1730 | 1.1.7.21 | EDIFICIO 73 | 8d | 2026-12-03 | 2026-12-14 | 1676SS+4d | 2026-11-23 | 2026-12-02 | 8d | 29d | 0d |  |
| 1731 | 1.1.7.22 | EDIFICIO 72 | 8d | 2026-12-11 | 2026-12-22 | 1677SS+4d | 2026-12-02 | 2026-12-11 | 8d | 23d | 0d |  |
| 1732 | 1.1.7.23 | EDIFICIO 75 | 8d | 2026-12-22 | 2027-01-11 | 1678SS+4d | 2026-12-11 | 2026-12-22 | 8d | 16d | 0d |  |
| 1733 | 1.1.7.24 | EDIFICIO 74 | 8d | 2027-01-08 | 2027-01-19 | 1679SS+4d | 2026-12-22 | 2027-01-11 | 8d | 10d | 0d |  |
| 1734 | 1.1.7.25 | EDIFICIO 77 | 8d | 2027-01-18 | 2027-01-29 | 1680SS+4d | 2027-01-11 | 2027-01-20 | 8d | 4d | 0d |  |
| 1735 | 1.1.7.26 | EDIFICIO 76 | 8d | 2027-01-29 | 2027-02-09 | 1681SS+4d | 2027-01-20 | 2027-02-02 | 8d | 0d |  |  |

| ID | WBS | Task | Duration | Start | Finish | Predecessors | Baseline start | Baseline finish | Baseline duration | Total slack |
| --- | --- | --- | --- | --- | --- | --- | --- | --- | --- | --- |
| 1736 | 1.1.8 | **HERRERIA** | 144d | 2026-07-01 | 2027-02-02 |  | 2026-03-20 | 2027-01-25 | 208d | 89d |
| 1737 | 1.1.8.1 | **REJAS , BARANDAS Y PASAMANOS** | 138d | 2026-07-09 | 2027-02-02 |  | 2026-04-28 | 2027-01-25 | 183d | 89d |
| 1738 | 1.1.8.1.1 | EDIFICIO 3 | 7d | 2026-07-09 | 2026-07-17 | 1629 | 2026-04-28 | 2026-05-07 | 7d | 220d |
| 1739 | 1.1.8.1.2 | EDIFICIO 2 | 7d | 2026-07-09 | 2026-07-17 | 1630 | 2026-05-08 | 2026-05-18 | 7d | 220d |
| 1740 | 1.1.8.1.3 | EDIFICIO 1 | 7d | 2026-07-09 | 2026-07-17 | 1631 | 2026-05-19 | 2026-05-27 | 7d | 220d |
| 1741 | 1.1.8.1.4 | EDIFICIO 6 | 7d | 2026-07-09 | 2026-07-17 | 1632 | 2026-05-29 | 2026-06-09 | 7d | 220d |
| 1742 | 1.1.8.1.5 | EDIFICIO 5 | 7d | 2026-07-09 | 2026-07-17 | 1633 | 2026-06-10 | 2026-06-18 | 7d | 220d |
| 1743 | 1.1.8.1.6 | EDIFICIO 4 | 7d | 2026-07-09 | 2026-07-17 | 1634 | 2026-06-19 | 2026-06-29 | 7d | 220d |
| 1744 | 1.1.8.1.7 | EDIFICIO 9 | 7d | 2026-07-09 | 2026-07-17 | 1635 | 2026-06-30 | 2026-07-08 | 7d | 220d |
| 1745 | 1.1.8.1.8 | EDIFICIO8 | 7d | 2026-07-09 | 2026-07-17 | 1636 | 2026-07-09 | 2026-07-17 | 7d | 220d |
| 1746 | 1.1.8.1.9 | EDIFICIO 7 | 7d | 2026-07-09 | 2026-07-17 | 1637 | 2026-07-20 | 2026-07-28 | 7d | 220d |
| 1747 | 1.1.8.1.10 | EDIFICIO 12 | 7d | 2026-07-16 | 2026-07-24 | 1638 | 2026-07-29 | 2026-08-06 | 7d | 215d |
| 1748 | 1.1.8.1.11 | EDIFICIO 11 | 7d | 2026-08-20 | 2026-08-28 | 1639 | 2026-08-07 | 2026-08-17 | 7d | 190d |
| 1749 | 1.1.8.1.12 | EDIFICIO 10 | 7d | 2026-08-20 | 2026-08-28 | 1640 | 2026-08-18 | 2026-08-26 | 7d | 190d |
| 1750 | 1.1.8.1.13 | EDIFICIO 15 | 7d | 2026-09-10 | 2026-09-18 | 1641 | 2026-08-27 | 2026-09-04 | 7d | 175d |
| 1751 | 1.1.8.1.14 | EDIFICIO 14 | 7d | 2026-09-21 | 2026-09-30 | 1642 | 2026-09-07 | 2026-09-15 | 7d | 168d |
| 1752 | 1.1.8.1.15 | EDIFICIO 13 | 7d | 2026-10-01 | 2026-10-09 | 1643 | 2026-09-16 | 2026-09-25 | 7d | 161d |
| 1753 | 1.1.8.1.16 | EDIFICIO 18 | 7d | 2026-10-09 | 2026-10-19 | 1644 | 2026-09-28 | 2026-10-06 | 7d | 155d |
| 1754 | 1.1.8.1.17 | EDIFICIO 17 | 7d | 2026-10-20 | 2026-10-28 | 1645 | 2026-10-07 | 2026-10-15 | 7d | 148d |
| 1755 | 1.1.8.1.18 | EDIFICIO 16 | 7d | 2026-10-29 | 2026-11-06 | 1646 | 2026-10-16 | 2026-10-26 | 7d | 141d |
| 1756 | 1.1.8.1.19 | EDIFICIO 71 | 7d | 2026-11-06 | 2026-11-17 | 1647 | 2026-10-27 | 2026-11-04 | 7d | 135d |
| 1757 | 1.1.8.1.20 | EDIFICIO 70 | 7d | 2026-11-18 | 2026-11-26 | 1648 | 2026-11-05 | 2026-11-16 | 7d | 128d |
| 1758 | 1.1.8.1.21 | EDIFICIO 73 | 7d | 2026-11-27 | 2026-12-07 | 1649 | 2026-11-17 | 2026-11-25 | 7d | 121d |
| 1759 | 1.1.8.1.22 | EDIFICIO 72 | 7d | 2026-12-07 | 2026-12-15 | 1650 | 2026-11-26 | 2026-12-04 | 7d | 115d |
| 1760 | 1.1.8.1.23 | EDIFICIO 75 | 7d | 2026-12-16 | 2026-12-28 | 1651 | 2026-12-07 | 2026-12-15 | 7d | 108d |
| 1761 | 1.1.8.1.24 | EDIFICIO 74 | 7d | 2026-12-28 | 2027-01-12 | 1652 | 2026-12-16 | 2026-12-28 | 7d | 102d |
| 1762 | 1.1.8.1.25 | EDIFICIO 77 | 7d | 2027-01-12 | 2027-01-20 | 1653 | 2026-12-29 | 2027-01-13 | 7d | 96d |
| 1763 | 1.1.8.1.26 | EDIFICIO 76 | 7d | 2027-01-22 | 2027-02-02 | 1654 | 2027-01-14 | 2027-01-25 | 7d | 89d |

| ID | WBS | Task | Duration | Start | Finish | Predecessors | Baseline start | Baseline finish | Baseline duration | Total slack | Free slack | Constraint |
| --- | --- | --- | --- | --- | --- | --- | --- | --- | --- | --- | --- | --- |
| 1764 | 1.1.8.2 | **PERGOLAS** | 117d | 2026-07-01 | 2026-12-14 |  | 2026-03-20 | 2026-12-07 | 181d | 111d |  |  |
| 1765 | 1.1.8.2.1 | EDIFICIO 3 | 5d | 2026-07-01 | 2026-07-07 | 1519 | 2026-03-20 | 2026-03-26 | 5d | 223d | 0d | start no earlier than 2026-07-01 |
| 1766 | 1.1.8.2.2 | EDIFICIO 2 | 5d | 2026-07-01 | 2026-07-07 |  | 2026-03-31 | 2026-04-08 | 5d | 223d | 0d | start no earlier than 2026-07-01 |
| 1767 | 1.1.8.2.3 | EDIFICIO 1 | 5d | 2026-07-01 | 2026-07-07 | 1521 | 2026-04-13 | 2026-04-17 | 5d | 223d | 0d | start no earlier than 2026-07-01 |
| 1768 | 1.1.8.2.4 | EDIFICIO 6 | 5d | 2026-07-01 | 2026-07-07 | 1522 | 2026-04-23 | 2026-04-29 | 5d | 223d | 0d | start no earlier than 2026-07-01 |
| 1769 | 1.1.8.2.5 | EDIFICIO 5 | 5d | 2026-07-01 | 2026-07-07 | 1523 | 2026-05-05 | 2026-05-11 | 5d | 223d | 0d | start no earlier than 2026-07-01 |
| 1770 | 1.1.8.2.6 | EDIFICIO 4 | 5d | 2026-07-01 | 2026-07-07 | 1524 | 2026-05-14 | 2026-05-20 | 5d | 223d | 0d | start no earlier than 2026-07-01 |
| 1771 | 1.1.8.2.7 | EDIFICIO 9 | 5d | 2026-07-01 | 2026-07-07 | 1525 | 2026-05-25 | 2026-05-29 | 5d | 223d | 0d | start no earlier than 2026-07-01 |
| 1772 | 1.1.8.2.8 | EDIFICIO8 | 5d | 2026-07-16 | 2026-07-22 | 1526 | 2026-06-03 | 2026-06-10 | 5d | 212d | 0d |  |
| 1773 | 1.1.8.2.9 | EDIFICIO 7 | 5d | 2026-07-16 | 2026-07-22 | 1527 | 2026-06-15 | 2026-06-19 | 5d | 212d | 0d |  |
| 1774 | 1.1.8.2.10 | EDIFICIO 12 | 5d | 2026-07-16 | 2026-07-22 | 1528 | 2026-06-24 | 2026-06-30 | 5d | 212d | 0d |  |
| 1775 | 1.1.8.2.11 | EDIFICIO 11 | 5d | 2026-07-16 | 2026-07-22 | 1529 | 2026-07-03 | 2026-07-09 | 5d | 212d | 0d |  |
| 1776 | 1.1.8.2.12 | EDIFICIO 10 | 5d | 2026-07-16 | 2026-07-22 | 1530 | 2026-07-14 | 2026-07-20 | 5d | 212d | 0d |  |
| 1777 | 1.1.8.2.13 | EDIFICIO 15 | 5d | 2026-08-06 | 2026-08-12 | 1531 | 2026-07-23 | 2026-07-29 | 5d | 197d | 0d |  |
| 1778 | 1.1.8.2.14 | EDIFICIO 14 | 5d | 2026-08-17 | 2026-08-21 | 1532 | 2026-08-03 | 2026-08-07 | 5d | 190d | 0d |  |
| 1779 | 1.1.8.2.15 | EDIFICIO 13 | 5d | 2026-08-26 | 2026-09-01 | 1533 | 2026-08-12 | 2026-08-18 | 5d | 183d | 0d |  |
| 1780 | 1.1.8.2.16 | EDIFICIO 18 | 5d | 2026-09-03 | 2026-09-09 | 1534 | 2026-08-21 | 2026-08-27 | 5d | 177d | 0d |  |
| 1781 | 1.1.8.2.17 | EDIFICIO 17 | 5d | 2026-09-14 | 2026-09-18 | 1535 | 2026-09-01 | 2026-09-07 | 5d | 170d | 0d |  |
| 1782 | 1.1.8.2.18 | EDIFICIO 16 | 5d | 2026-09-23 | 2026-09-30 | 1536 | 2026-09-10 | 2026-09-16 | 5d | 163d | 0d |  |
| 1783 | 1.1.8.2.19 | EDIFICIO 71 | 5d | 2026-10-02 | 2026-10-08 | 1537 | 2026-09-21 | 2026-09-28 | 5d | 157d | 0d |  |
| 1784 | 1.1.8.2.20 | EDIFICIO 70 | 5d | 2026-10-13 | 2026-10-19 | 1538 | 2026-10-01 | 2026-10-07 | 5d | 150d | 0d |  |
| 1785 | 1.1.8.2.21 | EDIFICIO 73 | 5d | 2026-10-22 | 2026-10-28 | 1539 | 2026-10-12 | 2026-10-16 | 5d | 143d | 0d |  |
| 1786 | 1.1.8.2.22 | EDIFICIO 72 | 5d | 2026-10-30 | 2026-11-05 | 1540 | 2026-10-21 | 2026-10-27 | 5d | 137d | 0d |  |
| 1787 | 1.1.8.2.23 | EDIFICIO 75 | 5d | 2026-11-11 | 2026-11-17 | 1541 | 2026-10-30 | 2026-11-05 | 5d | 130d | 0d |  |
| 1788 | 1.1.8.2.24 | EDIFICIO 74 | 5d | 2026-11-19 | 2026-11-25 | 1542 | 2026-11-11 | 2026-11-17 | 5d | 124d | 0d |  |
| 1789 | 1.1.8.2.25 | EDIFICIO 77 | 5d | 2026-11-27 | 2026-12-03 | 1543 | 2026-11-20 | 2026-11-26 | 5d | 118d | 0d |  |
| 1790 | 1.1.8.2.26 | EDIFICIO 76 | 5d | 2026-12-08 | 2026-12-14 | 1544 | 2026-12-01 | 2026-12-07 | 5d | 111d | 0d |  |

| ID | WBS | Task | Duration | Start | Finish | Predecessors | Baseline start | Baseline finish | Baseline duration | Total slack |
| --- | --- | --- | --- | --- | --- | --- | --- | --- | --- | --- |
| 1791 | 1.1.9 | **IMPERMABILIZACION** | 117d | 2026-07-08 | 2026-12-21 |  | 2026-03-27 | 2026-12-14 | 181d | 111d |
| 1792 | 1.1.9.1 | EDIFICIO 3 | 5d | 2026-07-08 | 2026-07-14 | 1765 | 2026-03-27 | 2026-04-06 | 5d | 223d |
| 1793 | 1.1.9.2 | EDIFICIO 2 | 5d | 2026-07-08 | 2026-07-14 | 1766 | 2026-04-09 | 2026-04-15 | 5d | 223d |
| 1794 | 1.1.9.3 | EDIFICIO 1 | 5d | 2026-07-08 | 2026-07-14 | 1767 | 2026-04-20 | 2026-04-24 | 5d | 223d |
| 1795 | 1.1.9.4 | EDIFICIO 6 | 5d | 2026-07-08 | 2026-07-14 | 1768 | 2026-04-30 | 2026-05-07 | 5d | 223d |
| 1796 | 1.1.9.5 | EDIFICIO 5 | 5d | 2026-07-08 | 2026-07-14 | 1769 | 2026-05-12 | 2026-05-18 | 5d | 223d |
| 1797 | 1.1.9.6 | EDIFICIO 4 | 5d | 2026-07-08 | 2026-07-14 | 1770 | 2026-05-21 | 2026-05-27 | 5d | 223d |
| 1798 | 1.1.9.7 | EDIFICIO 9 | 5d | 2026-07-08 | 2026-07-14 | 1771 | 2026-06-01 | 2026-06-08 | 5d | 223d |
| 1799 | 1.1.9.8 | EDIFICIO8 | 5d | 2026-07-23 | 2026-07-29 | 1772 | 2026-06-11 | 2026-06-17 | 5d | 212d |
| 1800 | 1.1.9.9 | EDIFICIO 7 | 5d | 2026-07-23 | 2026-07-29 | 1773 | 2026-06-22 | 2026-06-26 | 5d | 212d |
| 1801 | 1.1.9.10 | EDIFICIO 12 | 5d | 2026-07-23 | 2026-07-29 | 1774 | 2026-07-01 | 2026-07-07 | 5d | 212d |
| 1802 | 1.1.9.11 | EDIFICIO 11 | 5d | 2026-07-23 | 2026-07-29 | 1775 | 2026-07-10 | 2026-07-16 | 5d | 212d |
| 1803 | 1.1.9.12 | EDIFICIO 10 | 5d | 2026-07-23 | 2026-07-29 | 1776 | 2026-07-21 | 2026-07-27 | 5d | 212d |
| 1804 | 1.1.9.13 | EDIFICIO 15 | 5d | 2026-08-13 | 2026-08-19 | 1777 | 2026-07-30 | 2026-08-05 | 5d | 197d |
| 1805 | 1.1.9.14 | EDIFICIO 14 | 5d | 2026-08-24 | 2026-08-28 | 1778 | 2026-08-10 | 2026-08-14 | 5d | 190d |
| 1806 | 1.1.9.15 | EDIFICIO 13 | 5d | 2026-09-02 | 2026-09-08 | 1779 | 2026-08-19 | 2026-08-25 | 5d | 183d |
| 1807 | 1.1.9.16 | EDIFICIO 18 | 5d | 2026-09-10 | 2026-09-16 | 1780 | 2026-08-28 | 2026-09-03 | 5d | 177d |
| 1808 | 1.1.9.17 | EDIFICIO 17 | 5d | 2026-09-21 | 2026-09-28 | 1781 | 2026-09-08 | 2026-09-14 | 5d | 170d |
| 1809 | 1.1.9.18 | EDIFICIO 16 | 5d | 2026-10-01 | 2026-10-07 | 1782 | 2026-09-17 | 2026-09-23 | 5d | 163d |
| 1810 | 1.1.9.19 | EDIFICIO 71 | 5d | 2026-10-09 | 2026-10-15 | 1783 | 2026-09-29 | 2026-10-05 | 5d | 157d |
| 1811 | 1.1.9.20 | EDIFICIO 70 | 5d | 2026-10-20 | 2026-10-26 | 1784 | 2026-10-08 | 2026-10-14 | 5d | 150d |
| 1812 | 1.1.9.21 | EDIFICIO 73 | 5d | 2026-10-29 | 2026-11-04 | 1785 | 2026-10-19 | 2026-10-23 | 5d | 143d |
| 1813 | 1.1.9.22 | EDIFICIO 72 | 5d | 2026-11-06 | 2026-11-13 | 1786 | 2026-10-28 | 2026-11-03 | 5d | 137d |
| 1814 | 1.1.9.23 | EDIFICIO 75 | 5d | 2026-11-18 | 2026-11-24 | 1787 | 2026-11-06 | 2026-11-13 | 5d | 130d |
| 1815 | 1.1.9.24 | EDIFICIO 74 | 5d | 2026-11-26 | 2026-12-02 | 1788 | 2026-11-18 | 2026-11-24 | 5d | 124d |
| 1816 | 1.1.9.25 | EDIFICIO 77 | 5d | 2026-12-04 | 2026-12-10 | 1789 | 2026-11-27 | 2026-12-03 | 5d | 118d |
| 1817 | 1.1.9.26 | EDIFICIO 76 | 5d | 2026-12-15 | 2026-12-21 | 1790 | 2026-12-08 | 2026-12-14 | 5d | 111d |

| ID | WBS | Task | Duration | Start | Finish | Predecessors | Complete | Remaining | Baseline start | Baseline finish | Baseline duration | Total slack | Constraint |
| --- | --- | --- | --- | --- | --- | --- | --- | --- | --- | --- | --- | --- | --- |
| 1818 | 1.1.10 | **INSTALACION DE GAS, SONDEO Y COLGANTES AGUA RESIDUAL** | 163d | 2026-04-20 A | 2026-12-08 |  | 23% | 125.38d | 2026-03-16 | 2026-12-01 | 181d | 120d |  |
| 1819 | 1.1.10.1 | EDIFICIO 3 | 5d | 2026-04-20 A | 2026-04-24 A | 1438SS+5d | 100% |  | 2026-03-16 | 2026-03-20 | 5d |  | start no earlier than 2026-04-20 |
| 1820 | 1.1.10.2 | EDIFICIO 2 | 5d | 2026-04-30 A | 2026-05-07 A | 1439SS+5d | 100% |  | 2026-03-25 | 2026-03-31 | 5d |  | start no earlier than 2026-04-30 |
| 1821 | 1.1.10.3 | EDIFICIO 1 | 5d | 2026-04-30 A | 2026-05-07 A | 1440SS+5d | 100% |  | 2026-04-07 | 2026-04-13 | 5d |  | start no earlier than 2026-04-30 |
| 1822 | 1.1.10.4 | EDIFICIO 6 | 5d | 2026-04-30 A | 2026-05-07 A | 1441SS+5d | 100% |  | 2026-04-17 | 2026-04-23 | 5d |  | start no earlier than 2026-04-30 |
| 1823 | 1.1.10.5 | EDIFICIO 5 | 5d | 2026-04-30 A | 2026-05-07 A | 1442SS+5d | 100% |  | 2026-04-28 | 2026-05-05 | 5d |  | start no earlier than 2026-04-30 |
| 1824 | 1.1.10.6 | EDIFICIO 4 | 5d | 2026-05-29 A | 2026-06-05 A | 1443SS+5d | 100% |  | 2026-05-08 | 2026-05-14 | 5d |  | start no earlier than 2026-05-29 |
| 1825 | 1.1.10.7 | EDIFICIO 9 | 5d | 2026-07-01 | 2026-07-07 | 1444SS+5d |  |  | 2026-05-19 | 2026-05-25 | 5d | 228d | start no earlier than 2026-07-01 |
| 1826 | 1.1.10.8 | EDIFICIO8 | 5d | 2026-07-01 | 2026-07-07 | 1445SS+5d |  |  | 2026-05-28 | 2026-06-03 | 5d | 228d | start no earlier than 2026-07-01 |
| 1827 | 1.1.10.9 | EDIFICIO 7 | 5d | 2026-07-01 | 2026-07-07 | 1446SS+5d |  |  | 2026-06-09 | 2026-06-15 | 5d | 228d | start no earlier than 2026-07-01 |
| 1828 | 1.1.10.10 | EDIFICIO 12 | 5d | 2026-07-01 | 2026-07-07 | 1447SS+5d |  |  | 2026-06-18 | 2026-06-24 | 5d | 228d | start no earlier than 2026-07-01 |
| 1829 | 1.1.10.11 | EDIFICIO 11 | 5d | 2026-07-10 | 2026-07-16 | 1448SS+5d |  |  | 2026-06-29 | 2026-07-03 | 5d | 221d |  |
| 1830 | 1.1.10.12 | EDIFICIO 10 | 5d | 2026-07-10 | 2026-07-16 | 1449SS+5d |  |  | 2026-07-08 | 2026-07-14 | 5d | 221d |  |
| 1831 | 1.1.10.13 | EDIFICIO 15 | 5d | 2026-07-31 | 2026-08-06 | 1450SS+5d |  |  | 2026-07-17 | 2026-07-23 | 5d | 206d |  |
| 1832 | 1.1.10.14 | EDIFICIO 14 | 5d | 2026-08-11 | 2026-08-17 | 1451SS+5d |  |  | 2026-07-28 | 2026-08-03 | 5d | 199d |  |
| 1833 | 1.1.10.15 | EDIFICIO 13 | 5d | 2026-08-20 | 2026-08-26 | 1452SS+5d |  |  | 2026-08-06 | 2026-08-12 | 5d | 192d |  |
| 1834 | 1.1.10.16 | EDIFICIO 18 | 5d | 2026-08-28 | 2026-09-03 | 1453SS+5d |  |  | 2026-08-17 | 2026-08-21 | 5d | 186d |  |
| 1835 | 1.1.10.17 | EDIFICIO 17 | 5d | 2026-09-08 | 2026-09-14 | 1454SS+5d |  |  | 2026-08-26 | 2026-09-01 | 5d | 179d |  |
| 1836 | 1.1.10.18 | EDIFICIO 16 | 5d | 2026-09-17 | 2026-09-23 | 1455SS+5d |  |  | 2026-09-04 | 2026-09-10 | 5d | 172d |  |
| 1837 | 1.1.10.19 | EDIFICIO 71 | 5d | 2026-09-28 | 2026-10-02 | 1456SS+5d |  |  | 2026-09-15 | 2026-09-21 | 5d | 166d |  |
| 1838 | 1.1.10.20 | EDIFICIO 70 | 5d | 2026-10-07 | 2026-10-13 | 1457SS+5d |  |  | 2026-09-25 | 2026-10-01 | 5d | 159d |  |
| 1839 | 1.1.10.21 | EDIFICIO 73 | 5d | 2026-10-16 | 2026-10-22 | 1458SS+5d |  |  | 2026-10-06 | 2026-10-12 | 5d | 152d |  |
| 1840 | 1.1.10.22 | EDIFICIO 72 | 5d | 2026-10-26 | 2026-10-30 | 1459SS+5d |  |  | 2026-10-15 | 2026-10-21 | 5d | 146d |  |
| 1841 | 1.1.10.23 | EDIFICIO 75 | 5d | 2026-11-04 | 2026-11-11 | 1460SS+5d |  |  | 2026-10-26 | 2026-10-30 | 5d | 139d |  |
| 1842 | 1.1.10.24 | EDIFICIO 74 | 5d | 2026-11-13 | 2026-11-19 | 1461SS+5d |  |  | 2026-11-04 | 2026-11-11 | 5d | 133d |  |
| 1843 | 1.1.10.25 | EDIFICIO 77 | 5d | 2026-11-23 | 2026-11-27 | 1462SS+5d |  |  | 2026-11-16 | 2026-11-20 | 5d | 127d |  |
| 1844 | 1.1.10.26 | EDIFICIO 76 | 5d | 2026-12-02 | 2026-12-08 | 1463SS+5d |  |  | 2026-11-25 | 2026-12-01 | 5d | 120d |  |

| ID | WBS | Task | Duration | Start | Finish | Predecessors | Baseline start | Baseline finish | Baseline duration | Total slack | Free slack |
| --- | --- | --- | --- | --- | --- | --- | --- | --- | --- | --- | --- |
| 1845 | 1.1.11 | **PINTURA** | 218d | 2026-07-13 | 2027-05-27 |  | 2026-05-15 | 2027-05-20 | 253d | 0d |  |
| 1846 | 1.1.11.1 | **PINTURA INTERNA** | 218d | 2026-07-13 | 2027-05-27 |  | 2026-05-15 | 2027-05-20 | 253d | 0d |  |
| 1847 | 1.1.11.1.1 | **PRIMERA MANO , LIJA Y REMASTICADO** | 153d | 2026-07-13 | 2027-02-25 |  | 2026-05-15 | 2027-02-18 | 188d | 0d |  |
| 1848 | 1.1.11.1.1.1 | EDIFICIO 3 | 12d | 2026-07-13 | 2026-07-28 | 1710 | 2026-05-15 | 2026-06-01 | 12d | 138d | 0d |
| 1849 | 1.1.11.1.1.2 | EDIFICIO 2 | 12d | 2026-07-27 | 2026-08-11 | 1711 | 2026-05-26 | 2026-06-11 | 12d | 128d | 0d |
| 1850 | 1.1.11.1.1.3 | EDIFICIO 1 | 12d | 2026-07-27 | 2026-08-11 | 1712 | 2026-06-05 | 2026-06-22 | 12d | 128d | 0d |
| 1851 | 1.1.11.1.1.4 | EDIFICIO 6 | 12d | 2026-07-27 | 2026-08-11 | 1713 | 2026-06-17 | 2026-07-02 | 12d | 128d | 0d |
| 1852 | 1.1.11.1.1.5 | EDIFICIO 5 | 12d | 2026-07-27 | 2026-08-11 | 1714 | 2026-06-26 | 2026-07-13 | 12d | 128d | 0d |
| 1853 | 1.1.11.1.1.6 | EDIFICIO 4 | 12d | 2026-07-27 | 2026-08-11 | 1715 | 2026-07-07 | 2026-07-22 | 12d | 128d | 0d |
| 1854 | 1.1.11.1.1.7 | EDIFICIO 9 | 12d | 2026-07-27 | 2026-08-11 | 1716 | 2026-07-16 | 2026-07-31 | 12d | 128d | 0d |
| 1855 | 1.1.11.1.1.8 | EDIFICIO8 | 12d | 2026-07-27 | 2026-08-11 | 1717 | 2026-07-27 | 2026-08-11 | 12d | 128d | 0d |
| 1856 | 1.1.11.1.1.9 | EDIFICIO 7 | 12d | 2026-07-27 | 2026-08-11 | 1718 | 2026-08-05 | 2026-08-20 | 12d | 128d | 0d |
| 1857 | 1.1.11.1.1.10 | EDIFICIO 12 | 12d | 2026-08-03 | 2026-08-18 | 1719 | 2026-08-14 | 2026-08-31 | 12d | 123d | 0d |
| 1858 | 1.1.11.1.1.11 | EDIFICIO 11 | 12d | 2026-09-07 | 2026-09-22 | 1720 | 2026-08-25 | 2026-09-09 | 12d | 98d | 0d |
| 1859 | 1.1.11.1.1.12 | EDIFICIO 10 | 12d | 2026-09-07 | 2026-09-22 | 1721 | 2026-09-03 | 2026-09-18 | 12d | 98d | 0d |
| 1860 | 1.1.11.1.1.13 | EDIFICIO 15 | 12d | 2026-09-29 | 2026-10-14 | 1722 | 2026-09-14 | 2026-09-30 | 12d | 83d | 0d |
| 1861 | 1.1.11.1.1.14 | EDIFICIO 14 | 12d | 2026-10-08 | 2026-10-23 | 1723 | 2026-09-23 | 2026-10-09 | 12d | 76d | 0d |
| 1862 | 1.1.11.1.1.15 | EDIFICIO 13 | 12d | 2026-10-19 | 2026-11-03 | 1724 | 2026-10-05 | 2026-10-20 | 12d | 69d | 0d |
| 1863 | 1.1.11.1.1.16 | EDIFICIO 18 | 12d | 2026-10-27 | 2026-11-12 | 1725 | 2026-10-14 | 2026-10-29 | 12d | 63d | 0d |
| 1864 | 1.1.11.1.1.17 | EDIFICIO 17 | 12d | 2026-11-05 | 2026-11-23 | 1726 | 2026-10-23 | 2026-11-10 | 12d | 56d | 0d |
| 1865 | 1.1.11.1.1.18 | EDIFICIO 16 | 12d | 2026-11-17 | 2026-12-02 | 1727 | 2026-11-03 | 2026-11-19 | 12d | 49d | 0d |
| 1866 | 1.1.11.1.1.19 | EDIFICIO 71 | 12d | 2026-11-25 | 2026-12-10 | 1728 | 2026-11-13 | 2026-11-30 | 12d | 43d | 0d |
| 1867 | 1.1.11.1.1.20 | EDIFICIO 70 | 12d | 2026-12-04 | 2026-12-21 | 1729 | 2026-11-24 | 2026-12-09 | 12d | 36d | 0d |
| 1868 | 1.1.11.1.1.21 | EDIFICIO 73 | 12d | 2026-12-15 | 2027-01-08 | 1730 | 2026-12-03 | 2026-12-18 | 12d | 29d | 0d |
| 1869 | 1.1.11.1.1.22 | EDIFICIO 72 | 12d | 2026-12-23 | 2027-01-18 | 1731 | 2026-12-14 | 2027-01-07 | 12d | 23d | 0d |
| 1870 | 1.1.11.1.1.23 | EDIFICIO 75 | 12d | 2027-01-12 | 2027-01-29 | 1732 | 2026-12-23 | 2027-01-18 | 12d | 16d | 0d |
| 1871 | 1.1.11.1.1.24 | EDIFICIO 74 | 12d | 2027-01-20 | 2027-02-08 | 1733 | 2027-01-12 | 2027-01-29 | 12d | 10d | 0d |
| 1872 | 1.1.11.1.1.25 | EDIFICIO 77 | 12d | 2027-02-01 | 2027-02-16 | 1734 | 2027-01-22 | 2027-02-09 | 12d | 4d | 0d |
| 1873 | 1.1.11.1.1.26 | EDIFICIO 76 | 12d | 2027-02-10 | 2027-02-25 | 1735 | 2027-02-03 | 2027-02-18 | 12d | 0d |  |

| ID | WBS | Task | Duration | Start | Finish | Predecessors | Baseline start | Baseline finish | Baseline duration | Total slack | Free slack |
| --- | --- | --- | --- | --- | --- | --- | --- | --- | --- | --- | --- |
| 1874 | 1.1.11.1.2 | **SEGUNDA MANO** | 153d | 2026-10-13 | 2027-05-27 |  | 2026-08-17 | 2027-05-20 | 188d | 0d |  |
| 1875 | 1.1.11.1.2.1 | EDIFICIO 3 | 12d | 2026-10-13 | 2026-10-28 | 2012 | 2026-08-17 | 2026-09-01 | 12d | 138d | 0d |
| 1876 | 1.1.11.1.2.2 | EDIFICIO 2 | 12d | 2026-10-27 | 2026-11-12 | 2013 | 2026-08-26 | 2026-09-10 | 12d | 128d | 0d |
| 1877 | 1.1.11.1.2.3 | EDIFICIO 1 | 12d | 2026-10-27 | 2026-11-12 | 2014 | 2026-09-04 | 2026-09-21 | 12d | 128d | 0d |
| 1878 | 1.1.11.1.2.4 | EDIFICIO 6 | 12d | 2026-10-27 | 2026-11-12 | 2015 | 2026-09-16 | 2026-10-02 | 12d | 128d | 0d |
| 1879 | 1.1.11.1.2.5 | EDIFICIO 5 | 12d | 2026-10-27 | 2026-11-12 | 2016 | 2026-09-28 | 2026-10-13 | 12d | 128d | 0d |
| 1880 | 1.1.11.1.2.6 | EDIFICIO 4 | 12d | 2026-10-27 | 2026-11-12 | 2017 | 2026-10-07 | 2026-10-22 | 12d | 128d | 0d |
| 1881 | 1.1.11.1.2.7 | EDIFICIO 9 | 12d | 2026-10-27 | 2026-11-12 | 2018 | 2026-10-16 | 2026-11-02 | 12d | 128d | 0d |
| 1882 | 1.1.11.1.2.8 | EDIFICIO8 | 12d | 2026-10-27 | 2026-11-12 | 2019 | 2026-10-27 | 2026-11-12 | 12d | 128d | 0d |
| 1883 | 1.1.11.1.2.9 | EDIFICIO 7 | 12d | 2026-10-27 | 2026-11-12 | 2020 | 2026-11-05 | 2026-11-23 | 12d | 128d | 0d |
| 1884 | 1.1.11.1.2.10 | EDIFICIO 12 | 12d | 2026-11-03 | 2026-11-19 | 2021 | 2026-11-17 | 2026-12-02 | 12d | 123d | 0d |
| 1885 | 1.1.11.1.2.11 | EDIFICIO 11 | 12d | 2026-12-09 | 2026-12-28 | 2022 | 2026-11-26 | 2026-12-11 | 12d | 98d | 0d |
| 1886 | 1.1.11.1.2.12 | EDIFICIO 10 | 12d | 2026-12-09 | 2026-12-28 | 2023 | 2026-12-07 | 2026-12-22 | 12d | 98d | 0d |
| 1887 | 1.1.11.1.2.13 | EDIFICIO 15 | 12d | 2027-01-08 | 2027-01-27 | 2024 | 2026-12-16 | 2027-01-11 | 12d | 83d | 0d |
| 1888 | 1.1.11.1.2.14 | EDIFICIO 14 | 12d | 2027-01-19 | 2027-02-05 | 2025 | 2026-12-29 | 2027-01-20 | 12d | 76d | 0d |
| 1889 | 1.1.11.1.2.15 | EDIFICIO 13 | 12d | 2027-02-01 | 2027-02-16 | 2026 | 2027-01-14 | 2027-02-02 | 12d | 69d | 0d |
| 1890 | 1.1.11.1.2.16 | EDIFICIO 18 | 12d | 2027-02-09 | 2027-02-24 | 2027 | 2027-01-27 | 2027-02-11 | 12d | 63d | 0d |
| 1891 | 1.1.11.1.2.17 | EDIFICIO 17 | 12d | 2027-02-18 | 2027-03-05 | 2028 | 2027-02-05 | 2027-02-22 | 12d | 56d | 0d |
| 1892 | 1.1.11.1.2.18 | EDIFICIO 16 | 12d | 2027-03-01 | 2027-03-16 | 2029 | 2027-02-16 | 2027-03-03 | 12d | 49d | 0d |
| 1893 | 1.1.11.1.2.19 | EDIFICIO 71 | 12d | 2027-03-09 | 2027-03-24 | 2030 | 2027-02-25 | 2027-03-12 | 12d | 43d | 0d |
| 1894 | 1.1.11.1.2.20 | EDIFICIO 70 | 12d | 2027-03-18 | 2027-04-02 | 2031 | 2027-03-08 | 2027-03-23 | 12d | 36d | 0d |
| 1895 | 1.1.11.1.2.21 | EDIFICIO 73 | 12d | 2027-03-29 | 2027-04-13 | 2032 | 2027-03-17 | 2027-04-01 | 12d | 29d | 0d |
| 1896 | 1.1.11.1.2.22 | EDIFICIO 72 | 12d | 2027-04-06 | 2027-04-21 | 2033 | 2027-03-26 | 2027-04-12 | 12d | 23d | 0d |
| 1897 | 1.1.11.1.2.23 | EDIFICIO 75 | 12d | 2027-04-15 | 2027-04-30 | 2034 | 2027-04-06 | 2027-04-21 | 12d | 16d | 0d |
| 1898 | 1.1.11.1.2.24 | EDIFICIO 74 | 12d | 2027-04-23 | 2027-05-10 | 2035 | 2027-04-15 | 2027-04-30 | 12d | 10d | 0d |
| 1899 | 1.1.11.1.2.25 | EDIFICIO 77 | 12d | 2027-05-03 | 2027-05-18 | 2036 | 2027-04-26 | 2027-05-11 | 12d | 4d | 0d |
| 1900 | 1.1.11.1.2.26 | EDIFICIO 76 | 12d | 2027-05-12 | 2027-05-27 | 2037 | 2027-05-05 | 2027-05-20 | 12d | 0d |  |

| ID | WBS | Task | Duration | Start | Finish | Predecessors | Baseline start | Baseline finish | Baseline duration | Total slack | Free slack |
| --- | --- | --- | --- | --- | --- | --- | --- | --- | --- | --- | --- |
| 1901 | 1.1.12 | **PISO DE VINYL** | 147d | 2026-09-09 | 2027-04-16 |  | 2026-07-15 | 2027-04-09 | 182d | 0d |  |
| 1902 | 1.1.12.1 | EDIFICIO 3 | 6d | 2026-09-09 | 2026-09-16 | 1848FS+30d | 2026-07-15 | 2026-07-22 | 6d | 138d | 0d |
| 1903 | 1.1.12.2 | EDIFICIO 2 | 6d | 2026-09-23 | 2026-10-01 | 1849FS+30d | 2026-07-24 | 2026-07-31 | 6d | 128d | 0d |
| 1904 | 1.1.12.3 | EDIFICIO 1 | 6d | 2026-09-23 | 2026-10-01 | 1850FS+30d | 2026-08-04 | 2026-08-11 | 6d | 128d | 0d |
| 1905 | 1.1.12.4 | EDIFICIO 6 | 6d | 2026-09-23 | 2026-10-01 | 1851FS+30d | 2026-08-14 | 2026-08-21 | 6d | 128d | 0d |
| 1906 | 1.1.12.5 | EDIFICIO 5 | 6d | 2026-09-23 | 2026-10-01 | 1852FS+30d | 2026-08-25 | 2026-09-01 | 6d | 128d | 0d |
| 1907 | 1.1.12.6 | EDIFICIO 4 | 6d | 2026-09-23 | 2026-10-01 | 1853FS+30d | 2026-09-03 | 2026-09-10 | 6d | 128d | 0d |
| 1908 | 1.1.12.7 | EDIFICIO 9 | 6d | 2026-09-23 | 2026-10-01 | 1854FS+30d | 2026-09-14 | 2026-09-21 | 6d | 128d | 0d |
| 1909 | 1.1.12.8 | EDIFICIO8 | 6d | 2026-09-23 | 2026-10-01 | 1855FS+30d | 2026-09-23 | 2026-10-01 | 6d | 128d | 0d |
| 1910 | 1.1.12.9 | EDIFICIO 7 | 6d | 2026-09-23 | 2026-10-01 | 1856FS+30d | 2026-10-05 | 2026-10-12 | 6d | 128d | 0d |
| 1911 | 1.1.12.10 | EDIFICIO 12 | 6d | 2026-10-01 | 2026-10-08 | 1857FS+30d | 2026-10-14 | 2026-10-21 | 6d | 123d | 0d |
| 1912 | 1.1.12.11 | EDIFICIO 11 | 6d | 2026-11-05 | 2026-11-13 | 1858FS+30d | 2026-10-23 | 2026-10-30 | 6d | 98d | 0d |
| 1913 | 1.1.12.12 | EDIFICIO 10 | 6d | 2026-11-05 | 2026-11-13 | 1859FS+30d | 2026-11-03 | 2026-11-11 | 6d | 98d | 0d |
| 1914 | 1.1.12.13 | EDIFICIO 15 | 6d | 2026-11-27 | 2026-12-04 | 1860FS+30d | 2026-11-13 | 2026-11-20 | 6d | 83d | 0d |
| 1915 | 1.1.12.14 | EDIFICIO 14 | 6d | 2026-12-08 | 2026-12-15 | 1861FS+30d | 2026-11-24 | 2026-12-01 | 6d | 76d | 0d |
| 1916 | 1.1.12.15 | EDIFICIO 13 | 6d | 2026-12-17 | 2026-12-28 | 1862FS+30d | 2026-12-03 | 2026-12-10 | 6d | 69d | 0d |
| 1917 | 1.1.12.16 | EDIFICIO 18 | 6d | 2026-12-29 | 2027-01-12 | 1863FS+30d | 2026-12-14 | 2026-12-21 | 6d | 63d | 0d |
| 1918 | 1.1.12.17 | EDIFICIO 17 | 6d | 2027-01-14 | 2027-01-22 | 1864FS+30d | 2026-12-23 | 2027-01-08 | 6d | 56d | 0d |
| 1919 | 1.1.12.18 | EDIFICIO 16 | 6d | 2027-01-27 | 2027-02-03 | 1865FS+30d | 2027-01-12 | 2027-01-19 | 6d | 49d | 0d |
| 1920 | 1.1.12.19 | EDIFICIO 71 | 6d | 2027-02-04 | 2027-02-11 | 1866FS+30d | 2027-01-22 | 2027-02-01 | 6d | 43d | 0d |
| 1921 | 1.1.12.20 | EDIFICIO 70 | 6d | 2027-02-15 | 2027-02-22 | 1867FS+30d | 2027-02-03 | 2027-02-10 | 6d | 36d | 0d |
| 1922 | 1.1.12.21 | EDIFICIO 73 | 6d | 2027-02-24 | 2027-03-03 | 1868FS+30d | 2027-02-12 | 2027-02-19 | 6d | 29d | 0d |
| 1923 | 1.1.12.22 | EDIFICIO 72 | 6d | 2027-03-04 | 2027-03-11 | 1869FS+30d | 2027-02-23 | 2027-03-02 | 6d | 23d | 0d |
| 1924 | 1.1.12.23 | EDIFICIO 75 | 6d | 2027-03-15 | 2027-03-22 | 1870FS+30d | 2027-03-04 | 2027-03-11 | 6d | 16d | 0d |
| 1925 | 1.1.12.24 | EDIFICIO 74 | 6d | 2027-03-23 | 2027-03-30 | 1871FS+30d | 2027-03-15 | 2027-03-22 | 6d | 10d | 0d |
| 1926 | 1.1.12.25 | EDIFICIO 77 | 6d | 2027-03-31 | 2027-04-07 | 1872FS+30d | 2027-03-24 | 2027-03-31 | 6d | 4d | 0d |
| 1927 | 1.1.12.26 | EDIFICIO 76 | 6d | 2027-04-09 | 2027-04-16 | 1873FS+30d | 2027-04-02 | 2027-04-09 | 6d | 0d |  |

| ID | WBS | Task | Duration | Start | Finish | Predecessors | Baseline start | Baseline finish | Baseline duration | Total slack | Free slack |
| --- | --- | --- | --- | --- | --- | --- | --- | --- | --- | --- | --- |
| 1928 | 1.1.13 | **CARPINTERIA** | 152d | 2026-09-17 | 2027-05-03 |  | 2026-07-23 | 2027-04-26 | 187d | 21d |  |
| 1929 | 1.1.13.1 | **PUERTAS Y CLOSET** | 151d | 2026-09-17 | 2027-04-30 |  | 2026-07-23 | 2027-04-23 | 186d | 0d |  |
| 1930 | 1.1.13.1.1 | EDIFICIO 3 | 10d | 2026-09-17 | 2026-10-01 | 1902 | 2026-07-23 | 2026-08-05 | 10d | 138d | 0d |
| 1931 | 1.1.13.1.2 | EDIFICIO 2 | 10d | 2026-10-02 | 2026-10-15 | 1903 | 2026-08-03 | 2026-08-14 | 10d | 128d | 0d |
| 1932 | 1.1.13.1.3 | EDIFICIO 1 | 10d | 2026-10-02 | 2026-10-15 | 1904 | 2026-08-12 | 2026-08-25 | 10d | 128d | 0d |
| 1933 | 1.1.13.1.4 | EDIFICIO 6 | 10d | 2026-10-02 | 2026-10-15 | 1905 | 2026-08-24 | 2026-09-04 | 10d | 128d | 0d |
| 1934 | 1.1.13.1.5 | EDIFICIO 5 | 10d | 2026-10-02 | 2026-10-15 | 1906 | 2026-09-02 | 2026-09-15 | 10d | 128d | 0d |
| 1935 | 1.1.13.1.6 | EDIFICIO 4 | 10d | 2026-10-02 | 2026-10-15 | 1907 | 2026-09-11 | 2026-09-25 | 10d | 128d | 0d |
| 1936 | 1.1.13.1.7 | EDIFICIO 9 | 10d | 2026-10-02 | 2026-10-15 | 1908 | 2026-09-22 | 2026-10-06 | 10d | 128d | 0d |
| 1937 | 1.1.13.1.8 | EDIFICIO8 | 10d | 2026-10-02 | 2026-10-15 | 1909 | 2026-10-02 | 2026-10-15 | 10d | 128d | 0d |
| 1938 | 1.1.13.1.9 | EDIFICIO 7 | 10d | 2026-10-02 | 2026-10-15 | 1910 | 2026-10-13 | 2026-10-26 | 10d | 128d | 0d |
| 1939 | 1.1.13.1.10 | EDIFICIO 12 | 10d | 2026-10-09 | 2026-10-22 | 1911 | 2026-10-22 | 2026-11-04 | 10d | 123d | 0d |
| 1940 | 1.1.13.1.11 | EDIFICIO 11 | 10d | 2026-11-16 | 2026-11-27 | 1912 | 2026-11-02 | 2026-11-16 | 10d | 98d | 0d |
| 1941 | 1.1.13.1.12 | EDIFICIO 10 | 10d | 2026-11-16 | 2026-11-27 | 1913 | 2026-11-12 | 2026-11-25 | 10d | 98d | 0d |
| 1942 | 1.1.13.1.13 | EDIFICIO 15 | 10d | 2026-12-07 | 2026-12-18 | 1914 | 2026-11-23 | 2026-12-04 | 10d | 83d | 0d |
| 1943 | 1.1.13.1.14 | EDIFICIO 14 | 10d | 2026-12-16 | 2027-01-07 | 1915 | 2026-12-02 | 2026-12-15 | 10d | 76d | 0d |
| 1944 | 1.1.13.1.15 | EDIFICIO 13 | 10d | 2026-12-29 | 2027-01-18 | 1916 | 2026-12-11 | 2026-12-28 | 10d | 69d | 0d |
| 1945 | 1.1.13.1.16 | EDIFICIO 18 | 10d | 2027-01-13 | 2027-01-28 | 1917 | 2026-12-22 | 2027-01-13 | 10d | 63d | 0d |
| 1946 | 1.1.13.1.17 | EDIFICIO 17 | 10d | 2027-01-25 | 2027-02-08 | 1918 | 2027-01-11 | 2027-01-25 | 10d | 56d | 0d |
| 1947 | 1.1.13.1.18 | EDIFICIO 16 | 10d | 2027-02-04 | 2027-02-17 | 1919 | 2027-01-20 | 2027-02-04 | 10d | 49d | 0d |
| 1948 | 1.1.13.1.19 | EDIFICIO 71 | 10d | 2027-02-12 | 2027-02-25 | 1920 | 2027-02-02 | 2027-02-15 | 10d | 43d | 0d |
| 1949 | 1.1.13.1.20 | EDIFICIO 70 | 10d | 2027-02-23 | 2027-03-08 | 1921 | 2027-02-11 | 2027-02-24 | 10d | 36d | 0d |
| 1950 | 1.1.13.1.21 | EDIFICIO 73 | 10d | 2027-03-04 | 2027-03-17 | 1922 | 2027-02-22 | 2027-03-05 | 10d | 29d | 0d |
| 1951 | 1.1.13.1.22 | EDIFICIO 72 | 10d | 2027-03-12 | 2027-03-25 | 1923 | 2027-03-03 | 2027-03-16 | 10d | 23d | 0d |
| 1952 | 1.1.13.1.23 | EDIFICIO 75 | 10d | 2027-03-23 | 2027-04-05 | 1924 | 2027-03-12 | 2027-03-25 | 10d | 16d | 0d |
| 1953 | 1.1.13.1.24 | EDIFICIO 74 | 10d | 2027-03-31 | 2027-04-13 | 1925 | 2027-03-23 | 2027-04-05 | 10d | 10d | 0d |
| 1954 | 1.1.13.1.25 | EDIFICIO 77 | 10d | 2027-04-08 | 2027-04-21 | 1926 | 2027-04-01 | 2027-04-14 | 10d | 4d | 0d |
| 1955 | 1.1.13.1.26 | EDIFICIO 76 | 10d | 2027-04-19 | 2027-04-30 | 1927 | 2027-04-12 | 2027-04-23 | 10d | 0d |  |

| ID | WBS | Task | Duration | Start | Finish | Predecessors | Baseline start | Baseline finish | Baseline duration | Total slack | Free slack |
| --- | --- | --- | --- | --- | --- | --- | --- | --- | --- | --- | --- |
| 1956 | 1.1.13.2 | **COCINA Y TOPE** | 150d | 2026-09-21 | 2027-05-03 |  | 2026-07-27 | 2027-04-26 | 185d | 21d |  |
| 1957 | 1.1.13.2.1 | EDIFICIO 3 | 9d | 2026-09-21 | 2026-10-02 | 1930SS+2d | 2026-07-27 | 2026-08-06 | 9d | 162d | 0d |
| 1958 | 1.1.13.2.2 | EDIFICIO 2 | 9d | 2026-10-06 | 2026-10-16 | 1931SS+2d | 2026-08-05 | 2026-08-17 | 9d | 152d | 0d |
| 1959 | 1.1.13.2.3 | EDIFICIO 1 | 9d | 2026-10-06 | 2026-10-16 | 1932SS+2d | 2026-08-14 | 2026-08-26 | 9d | 152d | 0d |
| 1960 | 1.1.13.2.4 | EDIFICIO 6 | 9d | 2026-10-06 | 2026-10-16 | 1933SS+2d | 2026-08-26 | 2026-09-07 | 9d | 152d | 0d |
| 1961 | 1.1.13.2.5 | EDIFICIO 5 | 9d | 2026-10-06 | 2026-10-16 | 1934SS+2d | 2026-09-04 | 2026-09-16 | 9d | 152d | 0d |
| 1962 | 1.1.13.2.6 | EDIFICIO 4 | 9d | 2026-10-06 | 2026-10-16 | 1935SS+2d | 2026-09-15 | 2026-09-28 | 9d | 152d | 0d |
| 1963 | 1.1.13.2.7 | EDIFICIO 9 | 9d | 2026-10-06 | 2026-10-16 | 1936SS+2d | 2026-09-25 | 2026-10-07 | 9d | 152d | 0d |
| 1964 | 1.1.13.2.8 | EDIFICIO8 | 9d | 2026-10-06 | 2026-10-16 | 1937SS+2d | 2026-10-06 | 2026-10-16 | 9d | 152d | 0d |
| 1965 | 1.1.13.2.9 | EDIFICIO 7 | 9d | 2026-10-06 | 2026-10-16 | 1938SS+2d | 2026-10-15 | 2026-10-27 | 9d | 152d | 0d |
| 1966 | 1.1.13.2.10 | EDIFICIO 12 | 9d | 2026-10-13 | 2026-10-23 | 1939SS+2d | 2026-10-26 | 2026-11-05 | 9d | 147d | 0d |
| 1967 | 1.1.13.2.11 | EDIFICIO 11 | 9d | 2026-11-18 | 2026-11-30 | 1940SS+2d | 2026-11-04 | 2026-11-17 | 9d | 122d | 0d |
| 1968 | 1.1.13.2.12 | EDIFICIO 10 | 9d | 2026-11-18 | 2026-11-30 | 1941SS+2d | 2026-11-16 | 2026-11-26 | 9d | 122d | 0d |
| 1969 | 1.1.13.2.13 | EDIFICIO 15 | 9d | 2026-12-09 | 2026-12-21 | 1942SS+2d | 2026-11-25 | 2026-12-07 | 9d | 107d | 0d |
| 1970 | 1.1.13.2.14 | EDIFICIO 14 | 9d | 2026-12-18 | 2027-01-08 | 1943SS+2d | 2026-12-04 | 2026-12-16 | 9d | 100d | 0d |
| 1971 | 1.1.13.2.15 | EDIFICIO 13 | 9d | 2027-01-07 | 2027-01-19 | 1944SS+2d | 2026-12-15 | 2026-12-29 | 9d | 93d | 0d |
| 1972 | 1.1.13.2.16 | EDIFICIO 18 | 9d | 2027-01-15 | 2027-01-29 | 1945SS+2d | 2026-12-28 | 2027-01-14 | 9d | 87d | 0d |
| 1973 | 1.1.13.2.17 | EDIFICIO 17 | 9d | 2027-01-28 | 2027-02-09 | 1946SS+2d | 2027-01-13 | 2027-01-27 | 9d | 80d | 0d |
| 1974 | 1.1.13.2.18 | EDIFICIO 16 | 9d | 2027-02-08 | 2027-02-18 | 1947SS+2d | 2027-01-25 | 2027-02-05 | 9d | 73d | 0d |
| 1975 | 1.1.13.2.19 | EDIFICIO 71 | 9d | 2027-02-16 | 2027-02-26 | 1948SS+2d | 2027-02-04 | 2027-02-16 | 9d | 67d | 0d |
| 1976 | 1.1.13.2.20 | EDIFICIO 70 | 9d | 2027-02-25 | 2027-03-09 | 1949SS+2d | 2027-02-15 | 2027-02-25 | 9d | 60d | 0d |
| 1977 | 1.1.13.2.21 | EDIFICIO 73 | 9d | 2027-03-08 | 2027-03-18 | 1950SS+2d | 2027-02-24 | 2027-03-08 | 9d | 53d | 0d |
| 1978 | 1.1.13.2.22 | EDIFICIO 72 | 9d | 2027-03-16 | 2027-03-26 | 1951SS+2d | 2027-03-05 | 2027-03-17 | 9d | 47d | 0d |
| 1979 | 1.1.13.2.23 | EDIFICIO 75 | 9d | 2027-03-25 | 2027-04-06 | 1952SS+2d | 2027-03-16 | 2027-03-26 | 9d | 40d | 0d |
| 1980 | 1.1.13.2.24 | EDIFICIO 74 | 9d | 2027-04-02 | 2027-04-14 | 1953SS+2d | 2027-03-25 | 2027-04-06 | 9d | 34d | 0d |
| 1981 | 1.1.13.2.25 | EDIFICIO 77 | 9d | 2027-04-12 | 2027-04-22 | 1954SS+2d | 2027-04-05 | 2027-04-15 | 9d | 28d | 0d |
| 1982 | 1.1.13.2.26 | EDIFICIO 76 | 9d | 2027-04-21 | 2027-05-03 | 1955SS+2d | 2027-04-14 | 2027-04-26 | 9d | 21d | 0d |

| ID | WBS | Task | Duration | Start | Finish | Predecessors | Baseline start | Baseline finish | Baseline duration | Total slack |
| --- | --- | --- | --- | --- | --- | --- | --- | --- | --- | --- |
| 1983 | 1.1.14 | **ZOCALO Y MASILLA** | 145d | 2026-10-05 | 2027-05-07 |  | 2026-08-07 | 2027-04-30 | 180d | 21d |
| 1984 | 1.1.14.1 | EDIFICIO 3 | 4d | 2026-10-05 | 2026-10-08 | 1957 | 2026-08-07 | 2026-08-12 | 4d | 157d |
| 1985 | 1.1.14.2 | EDIFICIO 2 | 4d | 2026-10-19 | 2026-10-22 | 1958 | 2026-08-18 | 2026-08-21 | 4d | 147d |
| 1986 | 1.1.14.3 | EDIFICIO 1 | 4d | 2026-10-19 | 2026-10-22 | 1959 | 2026-08-27 | 2026-09-01 | 4d | 147d |
| 1987 | 1.1.14.4 | EDIFICIO 6 | 4d | 2026-10-19 | 2026-10-22 | 1960 | 2026-09-08 | 2026-09-11 | 4d | 147d |
| 1988 | 1.1.14.5 | EDIFICIO 5 | 4d | 2026-10-19 | 2026-10-22 | 1961 | 2026-09-17 | 2026-09-22 | 4d | 147d |
| 1989 | 1.1.14.6 | EDIFICIO 4 | 4d | 2026-10-19 | 2026-10-22 | 1962 | 2026-09-29 | 2026-10-02 | 4d | 147d |
| 1990 | 1.1.14.7 | EDIFICIO 9 | 4d | 2026-10-19 | 2026-10-22 | 1963 | 2026-10-08 | 2026-10-13 | 4d | 147d |
| 1991 | 1.1.14.8 | EDIFICIO8 | 4d | 2026-10-19 | 2026-10-22 | 1964 | 2026-10-19 | 2026-10-22 | 4d | 147d |
| 1992 | 1.1.14.9 | EDIFICIO 7 | 4d | 2026-10-19 | 2026-10-22 | 1965 | 2026-10-28 | 2026-11-02 | 4d | 147d |
| 1993 | 1.1.14.10 | EDIFICIO 12 | 4d | 2026-10-26 | 2026-10-29 | 1966 | 2026-11-06 | 2026-11-12 | 4d | 127d |
| 1994 | 1.1.14.11 | EDIFICIO 11 | 4d | 2026-12-01 | 2026-12-04 | 1967 | 2026-11-18 | 2026-11-23 | 4d | 117d |
| 1995 | 1.1.14.12 | EDIFICIO 10 | 4d | 2026-12-01 | 2026-12-04 | 1968 | 2026-11-27 | 2026-12-02 | 4d | 117d |
| 1996 | 1.1.14.13 | EDIFICIO 15 | 4d | 2026-12-22 | 2026-12-29 | 1969 | 2026-12-08 | 2026-12-11 | 4d | 107d |
| 1997 | 1.1.14.14 | EDIFICIO 14 | 4d | 2027-01-11 | 2027-01-14 | 1970 | 2026-12-17 | 2026-12-22 | 4d | 100d |
| 1998 | 1.1.14.15 | EDIFICIO 13 | 4d | 2027-01-20 | 2027-01-27 | 1971 | 2026-12-30 | 2027-01-11 | 4d | 93d |
| 1999 | 1.1.14.16 | EDIFICIO 18 | 4d | 2027-02-01 | 2027-02-04 | 1972 | 2027-01-15 | 2027-01-20 | 4d | 87d |
| 2000 | 1.1.14.17 | EDIFICIO 17 | 4d | 2027-02-10 | 2027-02-15 | 1973 | 2027-01-28 | 2027-02-02 | 4d | 80d |
| 2001 | 1.1.14.18 | EDIFICIO 16 | 4d | 2027-02-19 | 2027-02-24 | 1974 | 2027-02-08 | 2027-02-11 | 4d | 73d |
| 2002 | 1.1.14.19 | EDIFICIO 71 | 4d | 2027-03-01 | 2027-03-04 | 1975 | 2027-02-17 | 2027-02-22 | 4d | 67d |
| 2003 | 1.1.14.20 | EDIFICIO 70 | 4d | 2027-03-10 | 2027-03-15 | 1976 | 2027-02-26 | 2027-03-03 | 4d | 60d |
| 2004 | 1.1.14.21 | EDIFICIO 73 | 4d | 2027-03-19 | 2027-03-24 | 1977 | 2027-03-09 | 2027-03-12 | 4d | 53d |
| 2005 | 1.1.14.22 | EDIFICIO 72 | 4d | 2027-03-29 | 2027-04-01 | 1978 | 2027-03-18 | 2027-03-23 | 4d | 47d |
| 2006 | 1.1.14.23 | EDIFICIO 75 | 4d | 2027-04-07 | 2027-04-12 | 1979 | 2027-03-29 | 2027-04-01 | 4d | 40d |
| 2007 | 1.1.14.24 | EDIFICIO 74 | 4d | 2027-04-15 | 2027-04-20 | 1980 | 2027-04-07 | 2027-04-12 | 4d | 34d |
| 2008 | 1.1.14.25 | EDIFICIO 77 | 4d | 2027-04-23 | 2027-04-28 | 1981 | 2027-04-16 | 2027-04-21 | 4d | 28d |
| 2009 | 1.1.14.26 | EDIFICIO 76 | 4d | 2027-05-04 | 2027-05-07 | 1982 | 2027-04-27 | 2027-04-30 | 4d | 21d |

| ID | WBS | Task | Duration | Start | Finish | Predecessors | Baseline start | Baseline finish | Baseline duration | Total slack | Free slack |
| --- | --- | --- | --- | --- | --- | --- | --- | --- | --- | --- | --- |
| 2010 | 1.1.15 | **INSTALACIONES ELECTRICAS** | 148d | 2026-10-02 | 2027-05-11 |  | 2026-08-06 | 2027-05-04 | 183d | 0d |  |
| 2011 | 1.1.15.1 | **CABLEADO Y PIEZAS ELECTRICAS** | 148d | 2026-10-02 | 2027-05-11 |  | 2026-08-06 | 2027-05-04 | 183d | 0d |  |
| 2012 | 1.1.15.1.1 | EDIFICIO 3 | 7d | 2026-10-02 | 2026-10-12 | 1930 | 2026-08-06 | 2026-08-14 | 7d | 138d | 0d |
| 2013 | 1.1.15.1.2 | EDIFICIO 2 | 7d | 2026-10-16 | 2026-10-26 | 1931 | 2026-08-17 | 2026-08-25 | 7d | 128d | 0d |
| 2014 | 1.1.15.1.3 | EDIFICIO 1 | 7d | 2026-10-16 | 2026-10-26 | 1932 | 2026-08-26 | 2026-09-03 | 7d | 128d | 0d |
| 2015 | 1.1.15.1.4 | EDIFICIO 6 | 7d | 2026-10-16 | 2026-10-26 | 1933 | 2026-09-07 | 2026-09-15 | 7d | 128d | 0d |
| 2016 | 1.1.15.1.5 | EDIFICIO 5 | 7d | 2026-10-16 | 2026-10-26 | 1934 | 2026-09-16 | 2026-09-25 | 7d | 128d | 0d |
| 2017 | 1.1.15.1.6 | EDIFICIO 4 | 7d | 2026-10-16 | 2026-10-26 | 1935 | 2026-09-28 | 2026-10-06 | 7d | 128d | 0d |
| 2018 | 1.1.15.1.7 | EDIFICIO 9 | 7d | 2026-10-16 | 2026-10-26 | 1936 | 2026-10-07 | 2026-10-15 | 7d | 128d | 0d |
| 2019 | 1.1.15.1.8 | EDIFICIO8 | 7d | 2026-10-16 | 2026-10-26 | 1937 | 2026-10-16 | 2026-10-26 | 7d | 128d | 0d |
| 2020 | 1.1.15.1.9 | EDIFICIO 7 | 7d | 2026-10-16 | 2026-10-26 | 1938 | 2026-10-27 | 2026-11-04 | 7d | 128d | 0d |
| 2021 | 1.1.15.1.10 | EDIFICIO 12 | 7d | 2026-10-23 | 2026-11-02 | 1939 | 2026-11-05 | 2026-11-16 | 7d | 123d | 0d |
| 2022 | 1.1.15.1.11 | EDIFICIO 11 | 7d | 2026-11-30 | 2026-12-08 | 1940 | 2026-11-17 | 2026-11-25 | 7d | 98d | 0d |
| 2023 | 1.1.15.1.12 | EDIFICIO 10 | 7d | 2026-11-30 | 2026-12-08 | 1941 | 2026-11-26 | 2026-12-04 | 7d | 98d | 0d |
| 2024 | 1.1.15.1.13 | EDIFICIO 15 | 7d | 2026-12-21 | 2027-01-07 | 1942 | 2026-12-07 | 2026-12-15 | 7d | 83d | 0d |
| 2025 | 1.1.15.1.14 | EDIFICIO 14 | 7d | 2027-01-08 | 2027-01-18 | 1943 | 2026-12-16 | 2026-12-28 | 7d | 76d | 0d |
| 2026 | 1.1.15.1.15 | EDIFICIO 13 | 7d | 2027-01-19 | 2027-01-29 | 1944 | 2026-12-29 | 2027-01-13 | 7d | 69d | 0d |
| 2027 | 1.1.15.1.16 | EDIFICIO 18 | 7d | 2027-01-29 | 2027-02-08 | 1945 | 2027-01-14 | 2027-01-25 | 7d | 63d | 0d |
| 2028 | 1.1.15.1.17 | EDIFICIO 17 | 7d | 2027-02-09 | 2027-02-17 | 1946 | 2027-01-27 | 2027-02-04 | 7d | 56d | 0d |
| 2029 | 1.1.15.1.18 | EDIFICIO 16 | 7d | 2027-02-18 | 2027-02-26 | 1947 | 2027-02-05 | 2027-02-15 | 7d | 49d | 0d |
| 2030 | 1.1.15.1.19 | EDIFICIO 71 | 7d | 2027-02-26 | 2027-03-08 | 1948 | 2027-02-16 | 2027-02-24 | 7d | 43d | 0d |
| 2031 | 1.1.15.1.20 | EDIFICIO 70 | 7d | 2027-03-09 | 2027-03-17 | 1949 | 2027-02-25 | 2027-03-05 | 7d | 36d | 0d |
| 2032 | 1.1.15.1.21 | EDIFICIO 73 | 7d | 2027-03-18 | 2027-03-26 | 1950 | 2027-03-08 | 2027-03-16 | 7d | 29d | 0d |
| 2033 | 1.1.15.1.22 | EDIFICIO 72 | 7d | 2027-03-26 | 2027-04-05 | 1951 | 2027-03-17 | 2027-03-25 | 7d | 23d | 0d |
| 2034 | 1.1.15.1.23 | EDIFICIO 75 | 7d | 2027-04-06 | 2027-04-14 | 1952 | 2027-03-26 | 2027-04-05 | 7d | 16d | 0d |
| 2035 | 1.1.15.1.24 | EDIFICIO 74 | 7d | 2027-04-14 | 2027-04-22 | 1953 | 2027-04-06 | 2027-04-14 | 7d | 10d | 0d |
| 2036 | 1.1.15.1.25 | EDIFICIO 77 | 7d | 2027-04-22 | 2027-04-30 | 1954 | 2027-04-15 | 2027-04-23 | 7d | 4d | 0d |
| 2037 | 1.1.15.1.26 | EDIFICIO 76 | 7d | 2027-05-03 | 2027-05-11 | 1955 | 2027-04-26 | 2027-05-04 | 7d | 0d |  |

| ID | WBS | Task | Duration | Start | Finish | Predecessors | Baseline start | Baseline finish | Baseline duration | Total slack | Free slack |
| --- | --- | --- | --- | --- | --- | --- | --- | --- | --- | --- | --- |
| 2038 | 1.1.16 | **INSTALACIONES SANITARIAS** | 146d | 2026-10-02 | 2027-05-07 |  | 2026-08-06 | 2027-04-30 | 181d | 17d |  |
| 2039 | 1.1.16.1 | **PIEZAS SANITARIAS, LAVADERO Y FREGADERO** | 146d | 2026-10-02 | 2027-05-07 |  | 2026-08-06 | 2027-04-30 | 181d | 17d |  |
| 2040 | 1.1.16.1.1 | EDIFICIO 3 | 5d | 2026-10-02 | 2026-10-08 | 1930 | 2026-08-06 | 2026-08-12 | 5d | 158d | 0d |
| 2041 | 1.1.16.1.2 | EDIFICIO 2 | 5d | 2026-10-16 | 2026-10-22 | 1931 | 2026-08-17 | 2026-08-21 | 5d | 148d | 0d |
| 2042 | 1.1.16.1.3 | EDIFICIO 1 | 5d | 2026-10-16 | 2026-10-22 | 1932 | 2026-08-26 | 2026-09-01 | 5d | 148d | 0d |
| 2043 | 1.1.16.1.4 | EDIFICIO 6 | 5d | 2026-10-16 | 2026-10-22 | 1933 | 2026-09-07 | 2026-09-11 | 5d | 148d | 0d |
| 2044 | 1.1.16.1.5 | EDIFICIO 5 | 5d | 2026-10-16 | 2026-10-22 | 1934 | 2026-09-16 | 2026-09-22 | 5d | 148d | 0d |
| 2045 | 1.1.16.1.6 | EDIFICIO 4 | 5d | 2026-10-16 | 2026-10-22 | 1935 | 2026-09-28 | 2026-10-02 | 5d | 148d | 0d |
| 2046 | 1.1.16.1.7 | EDIFICIO 9 | 5d | 2026-10-16 | 2026-10-22 | 1936 | 2026-10-07 | 2026-10-13 | 5d | 148d | 0d |
| 2047 | 1.1.16.1.8 | EDIFICIO8 | 5d | 2026-10-16 | 2026-10-22 | 1937 | 2026-10-16 | 2026-10-22 | 5d | 148d | 0d |
| 2048 | 1.1.16.1.9 | EDIFICIO 7 | 5d | 2026-10-16 | 2026-10-22 | 1938 | 2026-10-27 | 2026-11-02 | 5d | 148d | 0d |
| 2049 | 1.1.16.1.10 | EDIFICIO 12 | 5d | 2026-10-23 | 2026-10-29 | 1939 | 2026-11-05 | 2026-11-12 | 5d | 143d | 0d |
| 2050 | 1.1.16.1.11 | EDIFICIO 11 | 5d | 2026-11-30 | 2026-12-04 | 1940 | 2026-11-17 | 2026-11-23 | 5d | 118d | 0d |
| 2051 | 1.1.16.1.12 | EDIFICIO 10 | 5d | 2026-11-30 | 2026-12-04 | 1941 | 2026-11-26 | 2026-12-02 | 5d | 118d | 0d |
| 2052 | 1.1.16.1.13 | EDIFICIO 15 | 5d | 2026-12-21 | 2026-12-29 | 1942 | 2026-12-07 | 2026-12-11 | 5d | 103d | 0d |
| 2053 | 1.1.16.1.14 | EDIFICIO 14 | 5d | 2027-01-08 | 2027-01-14 | 1943 | 2026-12-16 | 2026-12-22 | 5d | 96d | 0d |
| 2054 | 1.1.16.1.15 | EDIFICIO 13 | 5d | 2027-01-19 | 2027-01-27 | 1944 | 2026-12-29 | 2027-01-11 | 5d | 89d | 0d |
| 2055 | 1.1.16.1.16 | EDIFICIO 18 | 5d | 2027-01-29 | 2027-02-04 | 1945 | 2027-01-14 | 2027-01-20 | 5d | 83d | 0d |
| 2056 | 1.1.16.1.17 | EDIFICIO 17 | 5d | 2027-02-09 | 2027-02-15 | 1946 | 2027-01-27 | 2027-02-02 | 5d | 76d | 0d |
| 2057 | 1.1.16.1.18 | EDIFICIO 16 | 5d | 2027-02-18 | 2027-02-24 | 1947 | 2027-02-05 | 2027-02-11 | 5d | 69d | 0d |
| 2058 | 1.1.16.1.19 | EDIFICIO 71 | 5d | 2027-02-26 | 2027-03-04 | 1948 | 2027-02-16 | 2027-02-22 | 5d | 63d | 0d |
| 2059 | 1.1.16.1.20 | EDIFICIO 70 | 5d | 2027-03-09 | 2027-03-15 | 1949 | 2027-02-25 | 2027-03-03 | 5d | 56d | 0d |
| 2060 | 1.1.16.1.21 | EDIFICIO 73 | 5d | 2027-03-18 | 2027-03-24 | 1950 | 2027-03-08 | 2027-03-12 | 5d | 49d | 0d |
| 2061 | 1.1.16.1.22 | EDIFICIO 72 | 5d | 2027-03-26 | 2027-04-01 | 1951 | 2027-03-17 | 2027-03-23 | 5d | 43d | 0d |
| 2062 | 1.1.16.1.23 | EDIFICIO 75 | 5d | 2027-04-06 | 2027-04-12 | 1952 | 2027-03-26 | 2027-04-01 | 5d | 36d | 0d |
| 2063 | 1.1.16.1.24 | EDIFICIO 74 | 5d | 2027-04-14 | 2027-04-20 | 1953 | 2027-04-06 | 2027-04-12 | 5d | 30d | 0d |
| 2064 | 1.1.16.1.25 | EDIFICIO 77 | 5d | 2027-04-22 | 2027-04-28 | 1954 | 2027-04-15 | 2027-04-21 | 5d | 24d | 0d |
| 2065 | 1.1.16.1.26 | EDIFICIO 76 | 5d | 2027-05-03 | 2027-05-07 | 1955 | 2027-04-26 | 2027-04-30 | 5d | 17d | 0d |

| ID | WBS | Task | Duration | Start | Finish | Predecessors | Baseline start | Baseline finish | Baseline duration | Total slack |
| --- | --- | --- | --- | --- | --- | --- | --- | --- | --- | --- |
| 2066 | 1.1.17 | **PLAFON EN TECHO** | 147d | 2026-10-02 | 2027-05-10 |  | 2026-08-06 | 2027-05-03 | 182d | 20d |
| 2067 | 1.1.17.1 | EDIFICIO 3 | 6d | 2026-10-02 | 2026-10-09 | 1930 | 2026-08-06 | 2026-08-13 | 6d | 161d |
| 2068 | 1.1.17.2 | EDIFICIO 2 | 6d | 2026-10-16 | 2026-10-23 | 1931 | 2026-08-17 | 2026-08-24 | 6d | 151d |
| 2069 | 1.1.17.3 | EDIFICIO 1 | 6d | 2026-10-16 | 2026-10-23 | 1932 | 2026-08-26 | 2026-09-02 | 6d | 151d |
| 2070 | 1.1.17.4 | EDIFICIO 6 | 6d | 2026-10-16 | 2026-10-23 | 1933 | 2026-09-07 | 2026-09-14 | 6d | 151d |
| 2071 | 1.1.17.5 | EDIFICIO 5 | 6d | 2026-10-16 | 2026-10-23 | 1934 | 2026-09-16 | 2026-09-23 | 6d | 151d |
| 2072 | 1.1.17.6 | EDIFICIO 4 | 6d | 2026-10-16 | 2026-10-23 | 1935 | 2026-09-28 | 2026-10-05 | 6d | 151d |
| 2073 | 1.1.17.7 | EDIFICIO 9 | 6d | 2026-10-16 | 2026-10-23 | 1936 | 2026-10-07 | 2026-10-14 | 6d | 151d |
| 2074 | 1.1.17.8 | EDIFICIO8 | 6d | 2026-10-16 | 2026-10-23 | 1937 | 2026-10-16 | 2026-10-23 | 6d | 151d |
| 2075 | 1.1.17.9 | EDIFICIO 7 | 6d | 2026-10-16 | 2026-10-23 | 1938 | 2026-10-27 | 2026-11-03 | 6d | 151d |
| 2076 | 1.1.17.10 | EDIFICIO 12 | 6d | 2026-10-23 | 2026-10-30 | 1939 | 2026-11-05 | 2026-11-13 | 6d | 146d |
| 2077 | 1.1.17.11 | EDIFICIO 11 | 6d | 2026-11-30 | 2026-12-07 | 1940 | 2026-11-17 | 2026-11-24 | 6d | 121d |
| 2078 | 1.1.17.12 | EDIFICIO 10 | 6d | 2026-11-30 | 2026-12-07 | 1941 | 2026-11-26 | 2026-12-03 | 6d | 121d |
| 2079 | 1.1.17.13 | EDIFICIO 15 | 6d | 2026-12-21 | 2026-12-30 | 1942 | 2026-12-07 | 2026-12-14 | 6d | 106d |
| 2080 | 1.1.17.14 | EDIFICIO 14 | 6d | 2027-01-08 | 2027-01-15 | 1943 | 2026-12-16 | 2026-12-23 | 6d | 99d |
| 2081 | 1.1.17.15 | EDIFICIO 13 | 6d | 2027-01-19 | 2027-01-28 | 1944 | 2026-12-29 | 2027-01-12 | 6d | 92d |
| 2082 | 1.1.17.16 | EDIFICIO 18 | 6d | 2027-01-29 | 2027-02-05 | 1945 | 2027-01-14 | 2027-01-22 | 6d | 86d |
| 2083 | 1.1.17.17 | EDIFICIO 17 | 6d | 2027-02-09 | 2027-02-16 | 1946 | 2027-01-27 | 2027-02-03 | 6d | 79d |
| 2084 | 1.1.17.18 | EDIFICIO 16 | 6d | 2027-02-18 | 2027-02-25 | 1947 | 2027-02-05 | 2027-02-12 | 6d | 72d |
| 2085 | 1.1.17.19 | EDIFICIO 71 | 6d | 2027-02-26 | 2027-03-05 | 1948 | 2027-02-16 | 2027-02-23 | 6d | 66d |
| 2086 | 1.1.17.20 | EDIFICIO 70 | 6d | 2027-03-09 | 2027-03-16 | 1949 | 2027-02-25 | 2027-03-04 | 6d | 59d |
| 2087 | 1.1.17.21 | EDIFICIO 73 | 6d | 2027-03-18 | 2027-03-25 | 1950 | 2027-03-08 | 2027-03-15 | 6d | 52d |
| 2088 | 1.1.17.22 | EDIFICIO 72 | 6d | 2027-03-26 | 2027-04-02 | 1951 | 2027-03-17 | 2027-03-24 | 6d | 46d |
| 2089 | 1.1.17.23 | EDIFICIO 75 | 6d | 2027-04-06 | 2027-04-13 | 1952 | 2027-03-26 | 2027-04-02 | 6d | 39d |
| 2090 | 1.1.17.24 | EDIFICIO 74 | 6d | 2027-04-14 | 2027-04-21 | 1953 | 2027-04-06 | 2027-04-13 | 6d | 33d |
| 2091 | 1.1.17.25 | EDIFICIO 77 | 6d | 2027-04-22 | 2027-04-29 | 1954 | 2027-04-15 | 2027-04-22 | 6d | 27d |
| 2092 | 1.1.17.26 | EDIFICIO 76 | 6d | 2027-05-03 | 2027-05-10 | 1955 | 2027-04-26 | 2027-05-03 | 6d | 20d |

| ID | WBS | Task | Duration | Start | Finish | Predecessors | Baseline start | Baseline finish | Baseline duration | Total slack |
| --- | --- | --- | --- | --- | --- | --- | --- | --- | --- | --- |
| 2093 | 1.1.18 | **MAMPARA BAÑOS** | 145d | 2026-10-09 | 2027-05-13 |  | 2026-08-13 | 2027-05-06 | 180d | 17d |
| 2094 | 1.1.18.1 | EDIFICIO 3 | 4d | 2026-10-09 | 2026-10-14 | 2040 | 2026-08-13 | 2026-08-18 | 4d | 158d |
| 2095 | 1.1.18.2 | EDIFICIO 2 | 4d | 2026-10-23 | 2026-10-28 | 2041 | 2026-08-24 | 2026-08-27 | 4d | 148d |
| 2096 | 1.1.18.3 | EDIFICIO 1 | 4d | 2026-10-23 | 2026-10-28 | 2042 | 2026-09-02 | 2026-09-07 | 4d | 148d |
| 2097 | 1.1.18.4 | EDIFICIO 6 | 4d | 2026-10-23 | 2026-10-28 | 2043 | 2026-09-14 | 2026-09-17 | 4d | 148d |
| 2098 | 1.1.18.5 | EDIFICIO 5 | 4d | 2026-10-23 | 2026-10-28 | 2044 | 2026-09-23 | 2026-09-29 | 4d | 148d |
| 2099 | 1.1.18.6 | EDIFICIO 4 | 4d | 2026-10-23 | 2026-10-28 | 2045 | 2026-10-05 | 2026-10-08 | 4d | 148d |
| 2100 | 1.1.18.7 | EDIFICIO 9 | 4d | 2026-10-23 | 2026-10-28 | 2046 | 2026-10-14 | 2026-10-19 | 4d | 148d |
| 2101 | 1.1.18.8 | EDIFICIO8 | 4d | 2026-10-23 | 2026-10-28 | 2047 | 2026-10-23 | 2026-10-28 | 4d | 148d |
| 2102 | 1.1.18.9 | EDIFICIO 7 | 4d | 2026-10-23 | 2026-10-28 | 2048 | 2026-11-03 | 2026-11-06 | 4d | 148d |
| 2103 | 1.1.18.10 | EDIFICIO 12 | 4d | 2026-10-30 | 2026-11-04 | 2049 | 2026-11-13 | 2026-11-18 | 4d | 143d |
| 2104 | 1.1.18.11 | EDIFICIO 11 | 4d | 2026-12-07 | 2026-12-10 | 2050 | 2026-11-24 | 2026-11-27 | 4d | 118d |
| 2105 | 1.1.18.12 | EDIFICIO 10 | 4d | 2026-12-07 | 2026-12-10 | 2051 | 2026-12-03 | 2026-12-08 | 4d | 118d |
| 2106 | 1.1.18.13 | EDIFICIO 15 | 4d | 2026-12-30 | 2027-01-11 | 2052 | 2026-12-14 | 2026-12-17 | 4d | 103d |
| 2107 | 1.1.18.14 | EDIFICIO 14 | 4d | 2027-01-15 | 2027-01-20 | 2053 | 2026-12-23 | 2026-12-30 | 4d | 96d |
| 2108 | 1.1.18.15 | EDIFICIO 13 | 4d | 2027-01-28 | 2027-02-02 | 2054 | 2027-01-12 | 2027-01-15 | 4d | 89d |
| 2109 | 1.1.18.16 | EDIFICIO 18 | 4d | 2027-02-05 | 2027-02-10 | 2055 | 2027-01-22 | 2027-01-28 | 4d | 83d |
| 2110 | 1.1.18.17 | EDIFICIO 17 | 4d | 2027-02-16 | 2027-02-19 | 2056 | 2027-02-03 | 2027-02-08 | 4d | 76d |
| 2111 | 1.1.18.18 | EDIFICIO 16 | 4d | 2027-02-25 | 2027-03-02 | 2057 | 2027-02-12 | 2027-02-17 | 4d | 69d |
| 2112 | 1.1.18.19 | EDIFICIO 71 | 4d | 2027-03-05 | 2027-03-10 | 2058 | 2027-02-23 | 2027-02-26 | 4d | 63d |
| 2113 | 1.1.18.20 | EDIFICIO 70 | 4d | 2027-03-16 | 2027-03-19 | 2059 | 2027-03-04 | 2027-03-09 | 4d | 56d |
| 2114 | 1.1.18.21 | EDIFICIO 73 | 4d | 2027-03-25 | 2027-03-30 | 2060 | 2027-03-15 | 2027-03-18 | 4d | 49d |
| 2115 | 1.1.18.22 | EDIFICIO 72 | 4d | 2027-04-02 | 2027-04-07 | 2061 | 2027-03-24 | 2027-03-29 | 4d | 43d |
| 2116 | 1.1.18.23 | EDIFICIO 75 | 4d | 2027-04-13 | 2027-04-16 | 2062 | 2027-04-02 | 2027-04-07 | 4d | 36d |
| 2117 | 1.1.18.24 | EDIFICIO 74 | 4d | 2027-04-21 | 2027-04-26 | 2063 | 2027-04-13 | 2027-04-16 | 4d | 30d |
| 2118 | 1.1.18.25 | EDIFICIO 77 | 4d | 2027-04-29 | 2027-05-04 | 2064 | 2027-04-22 | 2027-04-27 | 4d | 24d |
| 2119 | 1.1.18.26 | EDIFICIO 76 | 4d | 2027-05-10 | 2027-05-13 | 2065 | 2027-05-03 | 2027-05-06 | 4d | 17d |

| ID | WBS | Task | Duration | Start | Finish | Predecessors | Baseline start | Baseline finish | Baseline duration | Total slack | Free slack | Constraint |
| --- | --- | --- | --- | --- | --- | --- | --- | --- | --- | --- | --- | --- |
| 2120 | 1.1.19 | **TEXTURIZADO** | 130d | 2026-07-01 | 2027-01-11 |  | 2026-04-08 | 2026-12-28 | 183d | 88d |  |  |
| 2121 | 1.1.19.1 | EDIFICIO 3 | 7d | 2026-07-01 | 2026-07-09 | 1574 | 2026-04-08 | 2026-04-16 | 7d | 211d | 0d | start no earlier than 2026-07-01 |
| 2122 | 1.1.19.2 | EDIFICIO 2 | 7d | 2026-07-01 | 2026-07-09 | 1575 | 2026-04-17 | 2026-04-27 | 7d | 211d | 0d | start no earlier than 2026-07-01 |
| 2123 | 1.1.19.3 | EDIFICIO 1 | 7d | 2026-07-01 | 2026-07-09 | 1576 | 2026-04-28 | 2026-05-07 | 7d | 211d | 0d | start no earlier than 2026-07-01 |
| 2124 | 1.1.19.4 | EDIFICIO 6 | 7d | 2026-07-13 | 2026-07-21 | 1577 | 2026-05-11 | 2026-05-19 | 7d | 203d | 0d |  |
| 2125 | 1.1.19.5 | EDIFICIO 5 | 7d | 2026-07-13 | 2026-07-21 | 1578 | 2026-05-20 | 2026-05-28 | 7d | 203d | 0d |  |
| 2126 | 1.1.19.6 | EDIFICIO 4 | 7d | 2026-07-27 | 2026-08-04 | 1579 | 2026-05-29 | 2026-06-09 | 7d | 193d | 0d |  |
| 2127 | 1.1.19.7 | EDIFICIO 9 | 7d | 2026-07-27 | 2026-08-04 | 1580 | 2026-06-10 | 2026-06-18 | 7d | 193d | 0d |  |
| 2128 | 1.1.19.8 | EDIFICIO8 | 7d | 2026-07-31 | 2026-08-10 | 1581 | 2026-06-19 | 2026-06-29 | 7d | 189d | 0d |  |
| 2129 | 1.1.19.9 | EDIFICIO 7 | 7d | 2026-07-31 | 2026-08-10 | 1582 | 2026-06-30 | 2026-07-08 | 7d | 189d | 0d |  |
| 2130 | 1.1.19.10 | EDIFICIO 12 | 7d | 2026-07-31 | 2026-08-10 | 1583 | 2026-07-09 | 2026-07-17 | 7d | 189d | 0d |  |
| 2131 | 1.1.19.11 | EDIFICIO 11 | 7d | 2026-07-31 | 2026-08-10 | 1584 | 2026-07-20 | 2026-07-28 | 7d | 189d | 0d |  |
| 2132 | 1.1.19.12 | EDIFICIO 10 | 7d | 2026-07-31 | 2026-08-10 | 1585 | 2026-07-29 | 2026-08-06 | 7d | 189d | 0d |  |
| 2133 | 1.1.19.13 | EDIFICIO 15 | 7d | 2026-08-21 | 2026-08-31 | 1586 | 2026-08-07 | 2026-08-17 | 7d | 174d | 0d |  |
| 2134 | 1.1.19.14 | EDIFICIO 14 | 7d | 2026-09-01 | 2026-09-09 | 1587 | 2026-08-18 | 2026-08-26 | 7d | 167d | 0d |  |
| 2135 | 1.1.19.15 | EDIFICIO 13 | 7d | 2026-09-10 | 2026-09-18 | 1588 | 2026-08-27 | 2026-09-04 | 7d | 160d | 0d |  |
| 2136 | 1.1.19.16 | EDIFICIO 18 | 7d | 2026-09-18 | 2026-09-29 | 1589 | 2026-09-07 | 2026-09-15 | 7d | 154d | 0d |  |
| 2137 | 1.1.19.17 | EDIFICIO 17 | 7d | 2026-09-30 | 2026-10-08 | 1590 | 2026-09-16 | 2026-09-25 | 7d | 147d | 0d |  |
| 2138 | 1.1.19.18 | EDIFICIO 16 | 7d | 2026-10-09 | 2026-10-19 | 1591 | 2026-09-28 | 2026-10-06 | 7d | 140d | 0d |  |
| 2139 | 1.1.19.19 | EDIFICIO 71 | 7d | 2026-10-19 | 2026-10-27 | 1592 | 2026-10-07 | 2026-10-15 | 7d | 134d | 0d |  |
| 2140 | 1.1.19.20 | EDIFICIO 70 | 7d | 2026-10-28 | 2026-11-05 | 1593 | 2026-10-16 | 2026-10-26 | 7d | 127d | 0d |  |
| 2141 | 1.1.19.21 | EDIFICIO 73 | 7d | 2026-11-06 | 2026-11-17 | 1594 | 2026-10-27 | 2026-11-04 | 7d | 120d | 0d |  |
| 2142 | 1.1.19.22 | EDIFICIO 72 | 7d | 2026-11-17 | 2026-11-25 | 1595 | 2026-11-05 | 2026-11-16 | 7d | 114d | 0d |  |
| 2143 | 1.1.19.23 | EDIFICIO 75 | 7d | 2026-11-26 | 2026-12-04 | 1596 | 2026-11-17 | 2026-11-25 | 7d | 107d | 0d |  |
| 2144 | 1.1.19.24 | EDIFICIO 74 | 7d | 2026-12-04 | 2026-12-14 | 1597 | 2026-11-26 | 2026-12-04 | 7d | 101d | 0d |  |
| 2145 | 1.1.19.25 | EDIFICIO 77 | 7d | 2026-12-14 | 2026-12-22 | 1598 | 2026-12-07 | 2026-12-15 | 7d | 95d | 0d |  |
| 2146 | 1.1.19.26 | EDIFICIO 76 | 7d | 2026-12-23 | 2027-01-11 | 1599 | 2026-12-16 | 2026-12-28 | 7d | 88d | 0d |  |

| ID | WBS | Task | Duration | Start | Finish | Predecessors | Baseline start | Baseline finish | Baseline duration | Total slack |
| --- | --- | --- | --- | --- | --- | --- | --- | --- | --- | --- |
| 2147 | 1.1.20 | **PAREDES DE PATIOS Y OBRAS EXTERIORES** | 138d | 2026-07-10 | 2027-02-03 |  | 2026-04-17 | 2027-01-27 | 191d | 88d |
| 2148 | 1.1.20.1 | EDIFICIO 3 | 15d | 2026-07-10 | 2026-07-30 | 2121 | 2026-04-17 | 2026-05-08 | 15d | 211d |
| 2149 | 1.1.20.2 | EDIFICIO 2 | 15d | 2026-07-10 | 2026-07-30 | 2122 | 2026-04-28 | 2026-05-19 | 15d | 211d |
| 2150 | 1.1.20.3 | EDIFICIO 1 | 15d | 2026-07-10 | 2026-07-30 | 2123 | 2026-05-08 | 2026-05-28 | 15d | 211d |
| 2151 | 1.1.20.4 | EDIFICIO 6 | 15d | 2026-07-22 | 2026-08-11 | 2124 | 2026-05-20 | 2026-06-10 | 15d | 203d |
| 2152 | 1.1.20.5 | EDIFICIO 5 | 15d | 2026-07-22 | 2026-08-11 | 2125 | 2026-05-29 | 2026-06-19 | 15d | 203d |
| 2153 | 1.1.20.6 | EDIFICIO 4 | 15d | 2026-08-05 | 2026-08-25 | 2126 | 2026-06-10 | 2026-06-30 | 15d | 193d |
| 2154 | 1.1.20.7 | EDIFICIO 9 | 15d | 2026-08-05 | 2026-08-25 | 2127 | 2026-06-19 | 2026-07-09 | 15d | 193d |
| 2155 | 1.1.20.8 | EDIFICIO8 | 15d | 2026-08-11 | 2026-08-31 | 2128 | 2026-06-30 | 2026-07-20 | 15d | 189d |
| 2156 | 1.1.20.9 | EDIFICIO 7 | 15d | 2026-08-11 | 2026-08-31 | 2129 | 2026-07-09 | 2026-07-29 | 15d | 189d |
| 2157 | 1.1.20.10 | EDIFICIO 12 | 15d | 2026-08-11 | 2026-08-31 | 2130 | 2026-07-20 | 2026-08-07 | 15d | 189d |
| 2158 | 1.1.20.11 | EDIFICIO 11 | 15d | 2026-08-11 | 2026-08-31 | 2131 | 2026-07-29 | 2026-08-18 | 15d | 189d |
| 2159 | 1.1.20.12 | EDIFICIO 10 | 15d | 2026-08-11 | 2026-08-31 | 2132 | 2026-08-07 | 2026-08-27 | 15d | 189d |
| 2160 | 1.1.20.13 | EDIFICIO 15 | 15d | 2026-09-01 | 2026-09-21 | 2133 | 2026-08-18 | 2026-09-07 | 15d | 174d |
| 2161 | 1.1.20.14 | EDIFICIO 14 | 15d | 2026-09-10 | 2026-10-01 | 2134 | 2026-08-27 | 2026-09-16 | 15d | 167d |
| 2162 | 1.1.20.15 | EDIFICIO 13 | 15d | 2026-09-21 | 2026-10-12 | 2135 | 2026-09-07 | 2026-09-28 | 15d | 160d |
| 2163 | 1.1.20.16 | EDIFICIO 18 | 15d | 2026-09-30 | 2026-10-20 | 2136 | 2026-09-16 | 2026-10-07 | 15d | 154d |
| 2164 | 1.1.20.17 | EDIFICIO 17 | 15d | 2026-10-09 | 2026-10-29 | 2137 | 2026-09-28 | 2026-10-16 | 15d | 147d |
| 2165 | 1.1.20.18 | EDIFICIO 16 | 15d | 2026-10-20 | 2026-11-10 | 2138 | 2026-10-07 | 2026-10-27 | 15d | 140d |
| 2166 | 1.1.20.19 | EDIFICIO 71 | 15d | 2026-10-28 | 2026-11-18 | 2139 | 2026-10-16 | 2026-11-05 | 15d | 134d |
| 2167 | 1.1.20.20 | EDIFICIO 70 | 15d | 2026-11-06 | 2026-11-27 | 2140 | 2026-10-27 | 2026-11-17 | 15d | 127d |
| 2168 | 1.1.20.21 | EDIFICIO 73 | 15d | 2026-11-18 | 2026-12-08 | 2141 | 2026-11-05 | 2026-11-26 | 15d | 120d |
| 2169 | 1.1.20.22 | EDIFICIO 72 | 15d | 2026-11-26 | 2026-12-16 | 2142 | 2026-11-17 | 2026-12-07 | 15d | 114d |
| 2170 | 1.1.20.23 | EDIFICIO 75 | 15d | 2026-12-07 | 2026-12-29 | 2143 | 2026-11-26 | 2026-12-16 | 15d | 107d |
| 2171 | 1.1.20.24 | EDIFICIO 74 | 15d | 2026-12-15 | 2027-01-13 | 2144 | 2026-12-07 | 2026-12-29 | 15d | 101d |
| 2172 | 1.1.20.25 | EDIFICIO 77 | 15d | 2026-12-23 | 2027-01-22 | 2145 | 2026-12-16 | 2027-01-14 | 15d | 95d |
| 2173 | 1.1.20.26 | EDIFICIO 76 | 15d | 2027-01-12 | 2027-02-03 | 2146 | 2026-12-29 | 2027-01-27 | 15d | 88d |

| ID | WBS | Task | Duration | Start | Finish | Predecessors | Baseline start | Baseline finish | Baseline duration | Total slack |
| --- | --- | --- | --- | --- | --- | --- | --- | --- | --- | --- |
| 2174 | 1.1.21 | **PANEL SOLAR** | 146d | 2026-10-13 | 2027-05-18 |  | 2026-08-17 | 2027-05-11 | 181d | 14d |
| 2175 | 1.1.21.1 | EDIFICIO 3 | 5d | 2026-10-13 | 2026-10-19 | 2012 | 2026-08-17 | 2026-08-21 | 5d | 155d |
| 2176 | 1.1.21.2 | EDIFICIO 2 | 5d | 2026-10-27 | 2026-11-02 | 2013 | 2026-08-26 | 2026-09-01 | 5d | 145d |
| 2177 | 1.1.21.3 | EDIFICIO 1 | 5d | 2026-10-27 | 2026-11-02 | 2014 | 2026-09-04 | 2026-09-10 | 5d | 145d |
| 2178 | 1.1.21.4 | EDIFICIO 6 | 5d | 2026-10-27 | 2026-11-02 | 2015 | 2026-09-16 | 2026-09-22 | 5d | 145d |
| 2179 | 1.1.21.5 | EDIFICIO 5 | 5d | 2026-10-27 | 2026-11-02 | 2016 | 2026-09-28 | 2026-10-02 | 5d | 145d |
| 2180 | 1.1.21.6 | EDIFICIO 4 | 5d | 2026-10-27 | 2026-11-02 | 2017 | 2026-10-07 | 2026-10-13 | 5d | 145d |
| 2181 | 1.1.21.7 | EDIFICIO 9 | 5d | 2026-10-27 | 2026-11-02 | 2018 | 2026-10-16 | 2026-10-22 | 5d | 145d |
| 2182 | 1.1.21.8 | EDIFICIO8 | 5d | 2026-10-27 | 2026-11-02 | 2019 | 2026-10-27 | 2026-11-02 | 5d | 145d |
| 2183 | 1.1.21.9 | EDIFICIO 7 | 5d | 2026-10-27 | 2026-11-02 | 2020 | 2026-11-05 | 2026-11-12 | 5d | 145d |
| 2184 | 1.1.21.10 | EDIFICIO 12 | 5d | 2026-11-03 | 2026-11-10 | 2021 | 2026-11-17 | 2026-11-23 | 5d | 140d |
| 2185 | 1.1.21.11 | EDIFICIO 11 | 5d | 2026-12-09 | 2026-12-15 | 2022 | 2026-11-26 | 2026-12-02 | 5d | 115d |
| 2186 | 1.1.21.12 | EDIFICIO 10 | 5d | 2026-12-09 | 2026-12-15 | 2023 | 2026-12-07 | 2026-12-11 | 5d | 115d |
| 2187 | 1.1.21.13 | EDIFICIO 15 | 5d | 2027-01-08 | 2027-01-14 | 2024 | 2026-12-16 | 2026-12-22 | 5d | 100d |
| 2188 | 1.1.21.14 | EDIFICIO 14 | 5d | 2027-01-19 | 2027-01-27 | 2025 | 2026-12-29 | 2027-01-11 | 5d | 93d |
| 2189 | 1.1.21.15 | EDIFICIO 13 | 5d | 2027-02-01 | 2027-02-05 | 2026 | 2027-01-14 | 2027-01-20 | 5d | 86d |
| 2190 | 1.1.21.16 | EDIFICIO 18 | 5d | 2027-02-09 | 2027-02-15 | 2027 | 2027-01-27 | 2027-02-02 | 5d | 80d |
| 2191 | 1.1.21.17 | EDIFICIO 17 | 5d | 2027-02-18 | 2027-02-24 | 2028 | 2027-02-05 | 2027-02-11 | 5d | 73d |
| 2192 | 1.1.21.18 | EDIFICIO 16 | 5d | 2027-03-01 | 2027-03-05 | 2029 | 2027-02-16 | 2027-02-22 | 5d | 66d |
| 2193 | 1.1.21.19 | EDIFICIO 71 | 5d | 2027-03-09 | 2027-03-15 | 2030 | 2027-02-25 | 2027-03-03 | 5d | 60d |
| 2194 | 1.1.21.20 | EDIFICIO 70 | 5d | 2027-03-18 | 2027-03-24 | 2031 | 2027-03-08 | 2027-03-12 | 5d | 53d |
| 2195 | 1.1.21.21 | EDIFICIO 73 | 5d | 2027-03-29 | 2027-04-02 | 2032 | 2027-03-17 | 2027-03-23 | 5d | 46d |
| 2196 | 1.1.21.22 | EDIFICIO 72 | 5d | 2027-04-06 | 2027-04-12 | 2033 | 2027-03-26 | 2027-04-01 | 5d | 40d |
| 2197 | 1.1.21.23 | EDIFICIO 75 | 5d | 2027-04-15 | 2027-04-21 | 2034 | 2027-04-06 | 2027-04-12 | 5d | 33d |
| 2198 | 1.1.21.24 | EDIFICIO 74 | 5d | 2027-04-23 | 2027-04-29 | 2035 | 2027-04-15 | 2027-04-21 | 5d | 27d |
| 2199 | 1.1.21.25 | EDIFICIO 77 | 5d | 2027-05-03 | 2027-05-07 | 2036 | 2027-04-26 | 2027-04-30 | 5d | 21d |
| 2200 | 1.1.21.26 | EDIFICIO 76 | 5d | 2027-05-12 | 2027-05-18 | 2037 | 2027-05-05 | 2027-05-11 | 5d | 14d |

| ID | WBS | Task | Duration | Start | Finish | Predecessors | Baseline start | Baseline finish | Baseline duration | Total slack |
| --- | --- | --- | --- | --- | --- | --- | --- | --- | --- | --- |
| 2201 | 1.1.22 | **REMATES Y LIMPIEZA** | 148d | 2026-10-29 | 2027-06-07 |  | 2026-09-02 | 2027-05-31 | 183d | 0d |
| 2202 | 1.1.22.1 | EDIFICIO 3 | 10d | 2026-10-29 | 2026-11-12 | 1875 | 2026-09-02 | 2026-09-15 | 10d | 138d |
| 2203 | 1.1.22.2 | EDIFICIO 2 | 10d | 2026-11-13 | 2026-11-26 | 1876 | 2026-09-11 | 2026-09-25 | 10d | 128d |
| 2204 | 1.1.22.3 | EDIFICIO 1 | 10d | 2026-11-13 | 2026-11-26 | 1877 | 2026-09-22 | 2026-10-06 | 10d | 128d |
| 2205 | 1.1.22.4 | EDIFICIO 6 | 10d | 2026-11-13 | 2026-11-26 | 1878 | 2026-10-05 | 2026-10-16 | 10d | 128d |
| 2206 | 1.1.22.5 | EDIFICIO 5 | 10d | 2026-11-13 | 2026-11-26 | 1879 | 2026-10-14 | 2026-10-27 | 10d | 128d |
| 2207 | 1.1.22.6 | EDIFICIO 4 | 10d | 2026-11-13 | 2026-11-26 | 1880 | 2026-10-23 | 2026-11-05 | 10d | 128d |
| 2208 | 1.1.22.7 | EDIFICIO 9 | 10d | 2026-11-13 | 2026-11-26 | 1881 | 2026-11-03 | 2026-11-17 | 10d | 128d |
| 2209 | 1.1.22.8 | EDIFICIO8 | 10d | 2026-11-13 | 2026-11-26 | 1882 | 2026-11-13 | 2026-11-26 | 10d | 128d |
| 2210 | 1.1.22.9 | EDIFICIO 7 | 10d | 2026-11-13 | 2026-11-26 | 1883 | 2026-11-24 | 2026-12-07 | 10d | 128d |
| 2211 | 1.1.22.10 | EDIFICIO 12 | 10d | 2026-11-20 | 2026-12-03 | 1884 | 2026-12-03 | 2026-12-16 | 10d | 123d |
| 2212 | 1.1.22.11 | EDIFICIO 11 | 10d | 2026-12-29 | 2027-01-18 | 1885 | 2026-12-14 | 2026-12-29 | 10d | 98d |
| 2213 | 1.1.22.12 | EDIFICIO 10 | 10d | 2026-12-29 | 2027-01-18 | 1886 | 2026-12-23 | 2027-01-14 | 10d | 98d |
| 2214 | 1.1.22.13 | EDIFICIO 15 | 10d | 2027-01-28 | 2027-02-10 | 1887 | 2027-01-12 | 2027-01-27 | 10d | 83d |
| 2215 | 1.1.22.14 | EDIFICIO 14 | 10d | 2027-02-08 | 2027-02-19 | 1888 | 2027-01-22 | 2027-02-05 | 10d | 76d |
| 2216 | 1.1.22.15 | EDIFICIO 13 | 10d | 2027-02-17 | 2027-03-02 | 1889 | 2027-02-03 | 2027-02-16 | 10d | 69d |
| 2217 | 1.1.22.16 | EDIFICIO 18 | 10d | 2027-02-25 | 2027-03-10 | 1890 | 2027-02-12 | 2027-02-25 | 10d | 63d |
| 2218 | 1.1.22.17 | EDIFICIO 17 | 10d | 2027-03-08 | 2027-03-19 | 1891 | 2027-02-23 | 2027-03-08 | 10d | 56d |
| 2219 | 1.1.22.18 | EDIFICIO 16 | 10d | 2027-03-17 | 2027-03-30 | 1892 | 2027-03-04 | 2027-03-17 | 10d | 49d |
| 2220 | 1.1.22.19 | EDIFICIO 71 | 10d | 2027-03-25 | 2027-04-07 | 1893 | 2027-03-15 | 2027-03-26 | 10d | 43d |
| 2221 | 1.1.22.20 | EDIFICIO 70 | 10d | 2027-04-05 | 2027-04-16 | 1894 | 2027-03-24 | 2027-04-06 | 10d | 36d |
| 2222 | 1.1.22.21 | EDIFICIO 73 | 10d | 2027-04-14 | 2027-04-27 | 1895 | 2027-04-02 | 2027-04-15 | 10d | 29d |
| 2223 | 1.1.22.22 | EDIFICIO 72 | 10d | 2027-04-22 | 2027-05-05 | 1896 | 2027-04-13 | 2027-04-26 | 10d | 23d |
| 2224 | 1.1.22.23 | EDIFICIO 75 | 10d | 2027-05-03 | 2027-05-14 | 1897 | 2027-04-22 | 2027-05-05 | 10d | 16d |
| 2225 | 1.1.22.24 | EDIFICIO 74 | 10d | 2027-05-11 | 2027-05-24 | 1898 | 2027-05-03 | 2027-05-14 | 10d | 10d |
| 2226 | 1.1.22.25 | EDIFICIO 77 | 10d | 2027-05-19 | 2027-06-01 | 1899 | 2027-05-12 | 2027-05-25 | 10d | 4d |
| 2227 | 1.1.22.26 | EDIFICIO 76 | 7d | 2027-05-28 | 2027-06-07 | 1900 | 2027-05-21 | 2027-05-31 | 7d | 0d |
