# Araya 26 edificios

Schedule from MS Project, 2025-07-28 to 2027-05-03, A marks actual dates.

## Calendars

- Araya26: Mon-Fri 09:00-13:00, 15:00-19:00; Sat-Sun off. Exceptions (off unless hours are given): 2025-09-24 (FERIADO), 2025-11-03 (FERIADO), 2025-12-24 to 2025-12-25 (FERIADO), 2025-12-31 to 2026-01-02 (FERIADO), 2026-01-06 (FERIADO), 2026-01-21 (FERIADO), 2026-01-26 (FERIADO).

## Schedule

| ID | WBS | Task | Duration | Start | Finish | Predecessors | Complete | Remaining | Baseline start | Baseline finish | Baseline duration | Total slack | Free slack | Constraint |
| --- | --- | --- | --- | --- | --- | --- | --- | --- | --- | --- | --- | --- | --- | --- |
| 1 | 1 | **ARAYA-PTA CANA (URBANISMO)** | 451d | 2025-07-28 A | 2027-05-03 |  | 8% | 413.31d | 2025-07-28 | 2027-05-26 | 468d | 0d |  |  |
| 2 | 1.1 | **MOVIMIENTO DE TIERRA** | 324d | 2025-07-28 A | 2026-11-05 |  | 71% | 95.04d | 2025-07-28 | 2026-10-06 | 302d | 127d |  |  |
| 3 | 1.1.1 | DEFORESTACION | 20d | 2025-07-28 A | 2025-08-22 A |  | 100% |  | 2025-07-28 | 2025-08-22 | 20d |  |  | start no earlier than 2025-07-28 |
| 4 | 1.1.2 | REMOCION DE CAPA VEGETAL | 20d | 2025-08-25 A | 2025-09-19 A | 3SS+20d | 100% |  | 2025-08-25 | 2025-09-19 | 20d |  |  |  |
| 5 | 1.1.3 | BOTE DE MATERIAL | 20d | 2025-08-25 A | 2025-09-19 A | 3SS+20d | 100% |  | 2025-08-25 | 2025-09-19 | 20d |  |  |  |
| 6 | 1.1.4 | **TERRAZAS** | 207d | 2025-09-22 A | 2026-07-21 A |  | 100% |  | 2025-09-22 | 2026-07-21 | 207d |  |  |  |
| 7 | 1.1.4.1 | RELLENO NIVELACION Y COMPACTACION TERRAZAS 1,2,3 | 5d | 2025-09-22 A | 2025-09-29 A | 5 | 100% |  | 2025-09-22 | 2025-09-29 | 5d |  |  |  |
| 8 | 1.1.4.2 | RELLENO NIVELACION Y COMPACTACION TERRAZAS 4,5,6 | 5d | 2025-09-30 A | 2025-10-06 A | 7 | 100% |  | 2025-09-30 | 2025-10-06 | 5d |  |  |  |
| 9 | 1.1.4.3 | RELLENO NIVELACION Y COMPACTACION TERRAZAS 7,8,9 | 5d | 2025-10-07 A | 2025-10-13 A | 8 | 100% |  | 2025-10-07 | 2025-10-13 | 5d |  |  |  |
| 10 | 1.1.4.4 | RELLENO NIVELACION Y COMPACTACION TERRAZAS 10,11,12 | 5d | 2025-10-14 A | 2025-10-20 A | 9 | 100% |  | 2025-10-14 | 2025-10-20 | 5d |  |  |  |
| 11 | 1.1.4.5 | RELLENO NIVELACION Y COMPACTACION TERRAZAS 13,14,15 | 5d | 2025-10-21 A | 2025-10-27 A | 10 | 100% |  | 2025-10-21 | 2025-10-27 | 5d |  |  |  |
| 12 | 1.1.4.6 | RELLENO NIVELACION Y COMPACTACION TERRAZAS 16,17,18 | 5d | 2025-10-28 A | 2025-11-04 A | 11 | 100% |  | 2025-10-28 | 2025-11-04 | 5d |  |  |  |
| 13 | 1.1.4.7 | RELLENO NIVELACION Y COMPACTACION TERRAZAS 70,71 | 3d | 2026-07-06 A | 2026-07-08 A | 12 | 100% |  | 2026-07-06 | 2026-07-08 | 3d |  |  | start no earlier than 2026-07-06 |
| 14 | 1.1.4.8 | RELLENO NIVELACION Y COMPACTACION TERRAZAS 72,73 | 3d | 2026-07-09 A | 2026-07-13 A | 13 | 100% |  | 2026-07-09 | 2026-07-13 | 3d |  |  |  |
| 15 | 1.1.4.9 | RELLENO NIVELACION Y COMPACTACION TERRAZAS 74,75 | 3d | 2026-07-14 A | 2026-07-16 A | 14 | 100% |  | 2026-07-14 | 2026-07-16 | 3d |  |  |  |
| 16 | 1.1.4.10 | RELLENO NIVELACION Y COMPACTACION TERRAZAS 76,77 | 3d | 2026-07-17 A | 2026-07-21 A | 15 | 100% |  | 2026-07-17 | 2026-07-21 | 3d |  |  |  |
| 17 | 1.1.5 | **CALLES** | 48d | 2026-09-01 A | 2026-11-05 |  | 8% | 44d | 2026-07-31 | 2026-10-06 | 48d | 127d |  |  |
| 18 | 1.1.5.1 | AVENIDA 2 | 10d | 2026-09-01 | 2026-09-14 | 13 |  |  | 2026-07-31 | 2026-08-13 | 10d | 165d |  | start no earlier than 2026-09-01 |
| 19 | 1.1.5.2 | CALLE 1 | 4d | 2026-09-15 A | 2026-09-18 A | 18 | 100% |  | 2026-08-14 | 2026-08-19 | 4d |  |  |  |
| 20 | 1.1.5.3 | CALLE 3 | 4d | 2026-09-21 | 2026-09-24 | 19 |  |  | 2026-08-20 | 2026-08-25 | 4d | 15d | 0d |  |
| 21 | 1.1.5.4 | CALLE 5 | 4d | 2026-09-25 | 2026-09-30 | 20 |  |  | 2026-08-26 | 2026-08-31 | 4d | 15d | 0d |  |
| 22 | 1.1.5.5 | CALLE 7 | 4d | 2026-10-01 | 2026-10-06 | 21 |  |  | 2026-09-01 | 2026-09-04 | 4d | 15d | 0d |  |
| 23 | 1.1.5.6 | CALLE 2 | 7d | 2026-10-07 | 2026-10-15 | 22 |  |  | 2026-09-07 | 2026-09-15 | 7d | 15d | 0d |  |
| 24 | 1.1.5.7 | CALLE 4 | 4d | 2026-10-16 | 2026-10-21 | 23 |  |  | 2026-09-16 | 2026-09-21 | 4d | 15d | 0d |  |
| 25 | 1.1.5.8 | CALLE 6 | 4d | 2026-10-22 | 2026-10-27 | 24 |  |  | 2026-09-22 | 2026-09-25 | 4d | 15d | 0d |  |
| 26 | 1.1.5.9 | AVENIDA 10 | 7d | 2026-10-28 | 2026-11-05 | 25 |  |  | 2026-09-28 | 2026-10-06 | 7d | 15d | 0d |  |

| ID | WBS | Task | Duration | Start | Finish | Predecessors | Complete | Remaining | Baseline start | Baseline finish | Baseline duration | Total slack | Free slack |
| --- | --- | --- | --- | --- | --- | --- | --- | --- | --- | --- | --- | --- | --- |
| 27 | 1.2 | **HIDROSANITARIAS** | 108d | 2026-07-16 A | 2026-12-14 |  | 13% | 94.36d | 2026-07-16 | 2026-11-18 | 90d | 0d |  |
| 28 | 1.2.1 | **RESIDUAL** | 93d | 2026-07-16 A | 2026-11-23 |  | 15% | 79.14d | 2026-07-16 | 2026-10-22 | 71d | 15d |  |
| 29 | 1.2.1.1 | **AVENIDA 2** | 88d | 2026-07-23 | 2026-11-23 |  |  |  | 2026-07-23 | 2026-10-22 | 66d | 15d |  |
| 30 | 1.2.1.1.1 | LOGISTICA Y REPLANTEO TOPOGRAFICO R13-R12 | 1d | 2026-11-06 | 2026-11-06 | 26 |  |  | 2026-10-07 | 2026-10-07 | 1d | 15d | 0d |
| 31 | 1.2.1.1.2 | EXCAVACION R13-R12 | 3d | 2026-11-06 | 2026-11-10 | 30SS |  |  | 2026-10-07 | 2026-10-09 | 3d | 15d | 0d |
| 32 | 1.2.1.1.3 | MATERIAL BASE R13-R12 | 3d | 2026-11-06 | 2026-11-10 | 31SS |  |  | 2026-10-07 | 2026-10-09 | 3d | 15d | 0d |
| 33 | 1.2.1.1.4 | COLOCACION DE TUBERIA 8"R13-R12 | 1d | 2026-11-11 | 2026-11-11 | 32 |  |  | 2026-10-12 | 2026-10-12 | 1d | 15d | 0d |
| 34 | 1.2.1.1.5 | RELLENO Y COMPACTACION R13-R12 | 1d | 2026-11-11 | 2026-11-11 | 33SS |  |  | 2026-10-12 | 2026-10-12 | 1d | 15d | 0d |
| 35 | 1.2.1.1.6 | CONSTRUCCION DE REGISTRO R13 | 5d | 2026-07-23 | 2026-07-29 | 55 |  |  | 2026-07-23 | 2026-07-29 | 5d | 115d |  |
| 36 | 1.2.1.1.7 | LOGISTICA Y REPLANTEO TOPOGRAFICO R12-R10 | 1d | 2026-11-12 | 2026-11-12 | 34 |  |  | 2026-10-13 | 2026-10-13 | 1d | 15d | 0d |
| 37 | 1.2.1.1.8 | EXCAVACION R12-R10 | 3d | 2026-11-12 | 2026-11-16 | 36SS |  |  | 2026-10-13 | 2026-10-15 | 3d | 15d | 0d |
| 38 | 1.2.1.1.9 | MATERIAL BASE R12-R10 | 3d | 2026-11-12 | 2026-11-16 | 37SS |  |  | 2026-10-13 | 2026-10-15 | 3d | 15d | 0d |
| 39 | 1.2.1.1.10 | COLOCACION DE TUBERIA 8"R12-R10 | 1d | 2026-11-17 | 2026-11-17 | 38 |  |  | 2026-10-16 | 2026-10-16 | 1d | 15d | 0d |
| 40 | 1.2.1.1.11 | RELLENO Y COMPACTACION R12-R10 | 1d | 2026-11-17 | 2026-11-17 | 39SS |  |  | 2026-10-16 | 2026-10-16 | 1d | 15d | 0d |
| 41 | 1.2.1.1.12 | CONSTRUCCION DE REGISTRO R12 | 5d | 2026-07-29 | 2026-08-04 | 63 |  |  | 2026-07-29 | 2026-08-04 | 5d | 111d |  |
| 42 | 1.2.1.1.13 | LOGISTICA Y REPLANTEO TOPOGRAFICO R10-R8 | 1d | 2026-11-18 | 2026-11-18 | 40 |  |  | 2026-10-19 | 2026-10-19 | 1d | 15d | 0d |
| 43 | 1.2.1.1.14 | EXCAVACION R11-R18 | 3d | 2026-11-18 | 2026-11-20 | 42SS |  |  | 2026-10-19 | 2026-10-21 | 3d | 15d | 0d |
| 44 | 1.2.1.1.15 | MATERIAL BASE R10-R8 | 3d | 2026-11-18 | 2026-11-20 | 43SS |  |  | 2026-10-19 | 2026-10-21 | 3d | 15d | 0d |
| 45 | 1.2.1.1.16 | COLOCACION DE TUBERIA 8"R10-R8 | 1d | 2026-11-23 | 2026-11-23 | 44 |  |  | 2026-10-22 | 2026-10-22 | 1d | 15d | 0d |
| 46 | 1.2.1.1.17 | RELLENO Y COMPACTACION R10-R8 | 1d | 2026-11-23 | 2026-11-23 | 45SS |  |  | 2026-10-22 | 2026-10-22 | 1d | 15d |  |
| 47 | 1.2.1.1.18 | CONSTRUCCION DE REGISTRO R10 | 5d | 2026-08-06 | 2026-08-12 | 71 |  |  | 2026-08-06 | 2026-08-12 | 5d | 105d |  |
| 48 | 1.2.1.1.19 | CONSTRUCCION DE REGISTRO R8 | 5d | 2026-09-07 | 2026-09-11 | 79 |  |  | 2026-08-12 | 2026-08-18 | 5d | 26d | 0d |
| 49 | 1.2.1.2 | **CALLE 1** | 27d | 2026-07-16 A | 2026-08-21 A |  | 100% |  | 2026-07-16 | 2026-08-21 | 27d |  |  |
| 50 | 1.2.1.2.1 | LOGISTICA Y REPLANTEO TOPOGRAFICO R29-R13 | 1d | 2026-07-16 A | 2026-07-16 A | 46 | 100% |  | 2026-07-16 | 2026-07-16 | 1d |  |  |
| 51 | 1.2.1.2.2 | EXCAVACION R29-R13 | 3d | 2026-07-16 A | 2026-07-20 A | 50SS | 100% |  | 2026-07-16 | 2026-07-20 | 3d |  |  |
| 52 | 1.2.1.2.3 | MATERIAL BASE R29-R13 | 3d | 2026-07-16 A | 2026-07-20 A | 51SS | 100% |  | 2026-07-16 | 2026-07-20 | 3d |  |  |
| 53 | 1.2.1.2.4 | COLOCACION DE TUBERIA 10"R29-R13 | 1d | 2026-07-21 A | 2026-07-21 A | 52 | 100% |  | 2026-07-21 | 2026-07-21 | 1d |  |  |
| 54 | 1.2.1.2.5 | COLOCACION DE TUBERIA 6"R29-R13 | 1d | 2026-07-21 A | 2026-07-21 A | 53SS | 100% |  | 2026-07-21 | 2026-07-21 | 1d |  |  |
| 55 | 1.2.1.2.6 | RELLENO Y COMPACTACION R29-R13 | 1d | 2026-07-22 A | 2026-07-22 A | 54 | 100% |  | 2026-07-22 | 2026-07-22 | 1d |  |  |
| 56 | 1.2.1.2.7 | REGISTRO LIMPIEZA R29 | 5d | 2026-08-17 A | 2026-08-21 A | 48 | 100% |  | 2026-08-17 | 2026-08-21 | 5d |  |  |

| ID | WBS | Task | Duration | Start | Finish | Predecessors | Complete | Remaining | Baseline start | Baseline finish | Baseline duration | Total slack | Free slack | Constraint |
| --- | --- | --- | --- | --- | --- | --- | --- | --- | --- | --- | --- | --- | --- | --- |
| 57 | 1.2.1.3 | **CALLE 3** | 33d | 2026-07-23 A | 2026-09-07 |  | 62% | 12.69d | 2026-07-23 | 2026-08-28 | 27d | 40d |  |  |
| 58 | 1.2.1.3.1 | LOGISTICA Y REPLANTEO TOPOGRAFICO R12-R11 | 1d | 2026-07-23 A | 2026-07-23 A | 55 | 100% |  | 2026-07-23 | 2026-07-23 | 1d |  |  |  |
| 59 | 1.2.1.3.2 | EXCAVACION R12-R11 | 2d | 2026-07-23 A | 2026-07-24 A | 58SS | 100% |  | 2026-07-23 | 2026-07-24 | 2d |  |  |  |
| 60 | 1.2.1.3.3 | MATERIAL BASE R12-R11 | 2d | 2026-07-23 A | 2026-07-24 A | 59SS | 100% |  | 2026-07-23 | 2026-07-24 | 2d |  |  |  |
| 61 | 1.2.1.3.4 | COLOCACION DE TUBERIA 8"R12-R11 | 1d | 2026-07-27 A | 2026-07-27 A | 60 | 100% |  | 2026-07-27 | 2026-07-27 | 1d |  |  |  |
| 62 | 1.2.1.3.5 | COLOCACION DE TUBERIA 6"R12-R11 | 1d | 2026-07-27 A | 2026-07-27 A | 61SS | 100% |  | 2026-07-27 | 2026-07-27 | 1d |  |  |  |
| 63 | 1.2.1.3.6 | RELLENO Y COMPACTACION R12-R11 | 1d | 2026-07-28 A | 2026-07-28 A | 62 | 100% |  | 2026-07-28 | 2026-07-28 | 1d |  |  |  |
| 64 | 1.2.1.3.7 | REGISTRO LIMPIEZA R11 | 5d | 2026-09-01 | 2026-09-07 | 56 |  |  | 2026-08-24 | 2026-08-28 | 5d | 40d | 0d | start no earlier than 2026-09-01 |
| 65 | 1.2.1.4 | **CALLE 5** | 32d | 2026-07-31 A | 2026-09-14 |  | 62% | 12.31d | 2026-07-31 | 2026-09-04 | 26d | 40d |  |  |
| 66 | 1.2.1.4.1 | LOGISTICA Y REPLANTEO TOPOGRAFICO R9-R10 | 1d | 2026-07-31 A | 2026-07-31 A | 63 | 100% |  | 2026-07-31 | 2026-07-31 | 1d |  |  | start no earlier than 2026-07-31 |
| 67 | 1.2.1.4.2 | EXCAVACION R9-R10 | 2d | 2026-07-31 A | 2026-08-03 A | 66SS | 100% |  | 2026-07-31 | 2026-08-03 | 2d |  |  |  |
| 68 | 1.2.1.4.3 | MATERIAL BASE R9-R10 | 2d | 2026-07-31 A | 2026-08-03 A | 67SS | 100% |  | 2026-07-31 | 2026-08-03 | 2d |  |  |  |
| 69 | 1.2.1.4.4 | COLOCACION DE TUBERIA 10"R9-R10 | 1d | 2026-08-04 A | 2026-08-04 A | 68 | 100% |  | 2026-08-04 | 2026-08-04 | 1d |  |  |  |
| 70 | 1.2.1.4.5 | COLOCACION DE TUBERIA 6"R9-R10 | 1d | 2026-08-04 A | 2026-08-04 A | 69SS | 100% |  | 2026-08-04 | 2026-08-04 | 1d |  |  |  |
| 71 | 1.2.1.4.6 | RELLENO Y COMPACTACION R9-R10 | 1d | 2026-08-05 A | 2026-08-05 A | 70 | 100% |  | 2026-08-05 | 2026-08-05 | 1d |  |  |  |
| 72 | 1.2.1.4.7 | REGISTRO LIMPIEZA R9 | 5d | 2026-09-08 | 2026-09-14 | 64 |  |  | 2026-08-31 | 2026-09-04 | 5d | 40d | 0d |  |
| 73 | 1.2.1.5 | **CALLE 7** | 15d | 2026-09-01 | 2026-09-21 |  |  |  | 2026-08-06 | 2026-09-11 | 27d | 0d |  |  |
| 74 | 1.2.1.5.1 | LOGISTICA Y REPLANTEO TOPOGRAFICO R7-R8 | 1d | 2026-09-01 | 2026-09-01 | 71 |  |  | 2026-08-06 | 2026-08-06 | 1d | 0d |  | start no earlier than 2026-09-01 |
| 75 | 1.2.1.5.2 | EXCAVACION R7-R8 | 2d | 2026-09-01 | 2026-09-02 | 74SS |  |  | 2026-08-06 | 2026-08-07 | 2d | 0d |  |  |
| 76 | 1.2.1.5.3 | MATERIAL BASE R7-R8 | 2d | 2026-09-01 | 2026-09-02 | 75SS |  |  | 2026-08-06 | 2026-08-07 | 2d | 0d |  |  |
| 77 | 1.2.1.5.4 | COLOCACION DE TUBERIA 10"R7-R8 | 1d | 2026-09-03 | 2026-09-03 | 76 |  |  | 2026-08-10 | 2026-08-10 | 1d | 0d |  |  |
| 78 | 1.2.1.5.5 | COLOCACION DE TUBERIA 6"R7-R8 | 1d | 2026-09-03 | 2026-09-03 | 77SS |  |  | 2026-08-10 | 2026-08-10 | 1d | 0d |  |  |
| 79 | 1.2.1.5.6 | RELLENO Y COMPACTACION R7-R8 | 1d | 2026-09-04 | 2026-09-04 | 78 |  |  | 2026-08-11 | 2026-08-11 | 1d | 0d |  |  |
| 80 | 1.2.1.5.7 | REGISTRO LIMPIEZA R7 | 5d | 2026-09-15 | 2026-09-21 | 72 |  |  | 2026-09-07 | 2026-09-11 | 5d | 40d | 0d |  |

| ID | WBS | Task | Duration | Start | Finish | Predecessors | Baseline start | Baseline finish | Baseline duration | Total slack | Free slack |
| --- | --- | --- | --- | --- | --- | --- | --- | --- | --- | --- | --- |
| 81 | 1.2.1.6 | **AVENIDA 10-CALLE 2** | 36d | 2026-09-07 | 2026-10-26 |  | 2026-08-12 | 2026-10-09 | 43d | 0d |  |
| 82 | 1.2.1.6.1 | LOGISTICA Y REPLANTEO TOPOGRAFICO R29-R28 | 1d | 2026-09-07 | 2026-09-07 | 79 | 2026-08-12 | 2026-08-12 | 1d | 0d |  |
| 83 | 1.2.1.6.2 | EXCAVACION R29-R28 | 2d | 2026-09-07 | 2026-09-08 | 82SS | 2026-08-12 | 2026-08-13 | 2d | 0d |  |
| 84 | 1.2.1.6.3 | MATERIAL BASE R29-R28 | 2d | 2026-09-07 | 2026-09-08 | 83SS | 2026-08-12 | 2026-08-13 | 2d | 0d |  |
| 85 | 1.2.1.6.4 | COLOCACION DE TUBERIA 8"R29-R28 | 1d | 2026-09-09 | 2026-09-09 | 84 | 2026-08-14 | 2026-08-14 | 1d | 0d |  |
| 86 | 1.2.1.6.5 | RELLENO Y COMPACTACION R29-R28 | 1d | 2026-09-09 | 2026-09-09 | 85SS | 2026-08-14 | 2026-08-14 | 1d | 0d |  |
| 87 | 1.2.1.6.6 | REGISTRO LIMPIEZA R28 | 5d | 2026-09-22 | 2026-09-28 | 80 | 2026-09-14 | 2026-09-18 | 5d | 40d | 0d |
| 88 | 1.2.1.6.7 | LOGISTICA Y REPLANTEO TOPOGRAFICO R27-R28 | 1d | 2026-09-10 | 2026-09-10 | 86 | 2026-08-17 | 2026-08-17 | 1d | 0d |  |
| 89 | 1.2.1.6.8 | EXCAVACION R27-R28 | 2d | 2026-09-10 | 2026-09-11 | 88SS | 2026-08-17 | 2026-08-18 | 2d | 0d |  |
| 90 | 1.2.1.6.9 | MATERIAL BASE R27-R28 | 2d | 2026-09-10 | 2026-09-11 | 89SS | 2026-08-17 | 2026-08-18 | 2d | 0d |  |
| 91 | 1.2.1.6.10 | COLOCACION DE TUBERIA 8"R27-R28 | 1d | 2026-09-14 | 2026-09-14 | 90 | 2026-08-19 | 2026-08-19 | 1d | 0d |  |
| 92 | 1.2.1.6.11 | RELLENO Y COMPACTACION R27-R28 | 1d | 2026-09-14 | 2026-09-14 | 91SS | 2026-08-19 | 2026-08-19 | 1d | 0d |  |
| 93 | 1.2.1.6.12 | REGISTRO LIMPIEZA R27 | 5d | 2026-09-29 | 2026-10-05 | 87 | 2026-09-21 | 2026-09-25 | 5d | 40d | 0d |
| 94 | 1.2.1.6.13 | LOGISTICA Y REPLANTEO TOPOGRAFICO R26-R27 | 1d | 2026-09-15 | 2026-09-15 | 92 | 2026-08-20 | 2026-08-20 | 1d | 0d |  |
| 95 | 1.2.1.6.14 | EXCAVACION R26-R27 | 2d | 2026-09-15 | 2026-09-16 | 94SS | 2026-08-20 | 2026-08-21 | 2d | 0d |  |
| 96 | 1.2.1.6.15 | MATERIAL BASE R26-R27 | 2d | 2026-09-15 | 2026-09-16 | 95SS | 2026-08-20 | 2026-08-21 | 2d | 0d |  |
| 97 | 1.2.1.6.16 | COLOCACION DE TUBERIA 8"R26-R27 | 1d | 2026-09-17 | 2026-09-17 | 96 | 2026-08-24 | 2026-08-24 | 1d | 0d |  |
| 98 | 1.2.1.6.17 | RELLENO Y COMPACTACION R26-R27 | 1d | 2026-09-17 | 2026-09-17 | 97SS | 2026-08-24 | 2026-08-24 | 1d | 0d |  |
| 99 | 1.2.1.6.18 | REGISTRO LIMPIEZA R26 | 5d | 2026-10-06 | 2026-10-12 | 93 | 2026-09-28 | 2026-10-02 | 5d | 40d | 0d |
| 100 | 1.2.1.6.19 | LOGISTICA Y REPLANTEO TOPOGRAFICO R25-R26 | 1d | 2026-09-18 | 2026-09-18 | 98 | 2026-08-25 | 2026-08-25 | 1d | 0d |  |
| 101 | 1.2.1.6.20 | EXCAVACION R25-R26 | 2d | 2026-09-18 | 2026-09-21 | 100SS | 2026-08-25 | 2026-08-26 | 2d | 0d |  |
| 102 | 1.2.1.6.21 | MATERIAL BASE R25-R26 | 2d | 2026-09-18 | 2026-09-21 | 101SS | 2026-08-25 | 2026-08-26 | 2d | 0d |  |
| 103 | 1.2.1.6.22 | COLOCACION DE TUBERIA 8"R25-R26 | 1d | 2026-09-22 | 2026-09-22 | 102 | 2026-08-27 | 2026-08-27 | 1d | 0d |  |
| 104 | 1.2.1.6.23 | COLOCACION DE TUBERIA 6"R25-R26 | 1d | 2026-09-22 | 2026-09-22 | 103SS | 2026-08-27 | 2026-08-27 | 1d | 0d |  |
| 105 | 1.2.1.6.24 | RELLENO Y COMPACTACION R25-R26 | 1d | 2026-09-23 | 2026-09-23 | 104 | 2026-08-28 | 2026-08-28 | 1d | 0d |  |
| 106 | 1.2.1.6.25 | REGISTRO LIMPIEZA R25 | 5d | 2026-10-13 | 2026-10-19 | 99 | 2026-10-05 | 2026-10-09 | 5d | 40d |  |
| 107 | 1.2.1.6.26 | LOGISTICA Y REPLANTEO TOPOGRAFICO R24-R25 | 1d | 2026-09-24 | 2026-09-24 | 105 | 2026-08-31 | 2026-08-31 | 1d | 0d |  |
| 108 | 1.2.1.6.27 | EXCAVACION R24-R25 | 3d | 2026-09-24 | 2026-09-28 | 107SS | 2026-08-31 | 2026-09-02 | 3d | 0d |  |
| 109 | 1.2.1.6.28 | MATERIAL BASE R24-R25 | 3d | 2026-09-24 | 2026-09-28 | 108SS | 2026-08-31 | 2026-09-02 | 3d | 0d |  |
| 110 | 1.2.1.6.29 | COLOCACION DE TUBERIA 8"R24-R25 | 1d | 2026-09-29 | 2026-09-29 | 109 | 2026-09-03 | 2026-09-03 | 1d | 0d |  |
| 111 | 1.2.1.6.30 | RELLENO Y COMPACTACION R24-R25 | 1d | 2026-09-29 | 2026-09-29 | 110SS | 2026-09-03 | 2026-09-03 | 1d | 0d |  |
| 112 | 1.2.1.6.31 | REGISTRO LIMPIEZA R24 | 5d | 2026-10-20 | 2026-10-26 | 133 | 2026-09-24 | 2026-09-30 | 5d | 35d |  |
| 113 | 1.2.1.6.32 | LOGISTICA Y REPLANTEO TOPOGRAFICO R22-R24 | 1d | 2026-09-30 | 2026-09-30 | 111 | 2026-09-04 | 2026-09-04 | 1d | 0d |  |
| 114 | 1.2.1.6.33 | EXCAVACION R22-R24 | 3d | 2026-09-30 | 2026-10-02 | 113SS | 2026-09-04 | 2026-09-08 | 3d | 0d |  |
| 115 | 1.2.1.6.34 | MATERIAL BASE R22-R24 | 3d | 2026-09-30 | 2026-10-02 | 114SS | 2026-09-04 | 2026-09-08 | 3d | 0d |  |
| 116 | 1.2.1.6.35 | COLOCACION DE TUBERIA 8"R22-R24 | 1d | 2026-10-05 | 2026-10-05 | 115 | 2026-09-09 | 2026-09-09 | 1d | 0d |  |
| 117 | 1.2.1.6.36 | RELLENO Y COMPACTACION R22-R24 | 1d | 2026-10-05 | 2026-10-05 | 116SS | 2026-09-09 | 2026-09-09 | 1d | 0d |  |
| 118 | 1.2.1.6.37 | REGISTRO LIMPIEZA R22 | 5d | 2026-10-13 | 2026-10-19 | 125 | 2026-09-17 | 2026-09-23 | 5d | 0d |  |

| ID | WBS | Task | Duration | Start | Finish | Predecessors | Complete | Remaining | Baseline start | Baseline finish | Baseline duration | Total slack | Free slack |
| --- | --- | --- | --- | --- | --- | --- | --- | --- | --- | --- | --- | --- | --- |
| 119 | 1.2.1.7 | **CALLE 6** | 15d | 2026-10-06 | 2026-10-26 |  |  |  | 2026-09-10 | 2026-09-30 | 15d | 0d |  |
| 120 | 1.2.1.7.1 | LOGISTICA Y REPLANTEO TOPOGRAFICO R20-R22 | 1d | 2026-10-06 | 2026-10-06 | 117 |  |  | 2026-09-10 | 2026-09-10 | 1d | 0d |  |
| 121 | 1.2.1.7.2 | EXCAVACION R20-R22 | 3d | 2026-10-06 | 2026-10-08 | 120SS |  |  | 2026-09-10 | 2026-09-14 | 3d | 0d |  |
| 122 | 1.2.1.7.3 | MATERIAL BASE R20-R22 | 3d | 2026-10-06 | 2026-10-08 | 121SS |  |  | 2026-09-10 | 2026-09-14 | 3d | 0d |  |
| 123 | 1.2.1.7.4 | COLOCACION DE TUBERIA 8"R20-R22 | 1d | 2026-10-09 | 2026-10-09 | 122 |  |  | 2026-09-15 | 2026-09-15 | 1d | 0d |  |
| 124 | 1.2.1.7.5 | COLOCACION DE TUBERIA 6"R20-R22 | 1d | 2026-10-09 | 2026-10-09 | 123SS |  |  | 2026-09-15 | 2026-09-15 | 1d | 0d |  |
| 125 | 1.2.1.7.6 | RELLENO Y COMPACTACION R20-R22 | 1d | 2026-10-12 | 2026-10-12 | 124 |  |  | 2026-09-16 | 2026-09-16 | 1d | 0d |  |
| 126 | 1.2.1.7.7 | REGISTRO LIMPIEZA R20 | 5d | 2026-10-20 | 2026-10-26 | 118 |  |  | 2026-09-24 | 2026-09-30 | 5d | 8d | 0d |
| 127 | 1.2.1.8 | **CALLE 4** | 15d | 2026-10-13 | 2026-11-02 |  |  |  | 2026-09-17 | 2026-10-07 | 15d | 18d |  |
| 128 | 1.2.1.8.1 | LOGISTICA Y REPLANTEO TOPOGRAFICO R23-R24 | 1d | 2026-10-13 | 2026-10-13 | 125 |  |  | 2026-09-17 | 2026-09-17 | 1d | 35d | 0d |
| 129 | 1.2.1.8.2 | EXCAVACION R23-R24 | 3d | 2026-10-13 | 2026-10-15 | 128SS |  |  | 2026-09-17 | 2026-09-21 | 3d | 35d | 0d |
| 130 | 1.2.1.8.3 | MATERIAL BASE R23-R24 | 3d | 2026-10-13 | 2026-10-15 | 129SS |  |  | 2026-09-17 | 2026-09-21 | 3d | 35d | 0d |
| 131 | 1.2.1.8.4 | COLOCACION DE TUBERIA 8"R23-R24 | 1d | 2026-10-16 | 2026-10-16 | 130 |  |  | 2026-09-22 | 2026-09-22 | 1d | 35d | 0d |
| 132 | 1.2.1.8.5 | COLOCACION DE TUBERIA 6"R23-R24 | 1d | 2026-10-16 | 2026-10-16 | 131SS |  |  | 2026-09-22 | 2026-09-22 | 1d | 35d | 0d |
| 133 | 1.2.1.8.6 | RELLENO Y COMPACTACION R23-R24 | 1d | 2026-10-19 | 2026-10-19 | 132 |  |  | 2026-09-23 | 2026-09-23 | 1d | 35d | 0d |
| 134 | 1.2.1.8.7 | REGISTRO LIMPIEZA R23 | 5d | 2026-10-27 | 2026-11-02 | 126 |  |  | 2026-10-01 | 2026-10-07 | 5d | 8d | 0d |
| 135 | 1.2.2 | **PLUVIAL** | 81d | 2026-08-24 A | 2026-12-14 |  | 6% | 76.19d | 2026-08-19 | 2026-11-18 | 66d | 0d |  |
| 136 | 1.2.2.1 | CALLE 1 | 7d | 2026-08-24 A | 2026-09-01 A | 56 | 100% |  | 2026-08-24 | 2026-09-01 | 7d |  |  |
| 137 | 1.2.2.2 | CALLE 3 | 7d | 2026-09-08 | 2026-09-16 | 64 |  |  | 2026-08-31 | 2026-09-08 | 7d | 63d |  |
| 138 | 1.2.2.3 | CALLE 5 | 7d | 2026-09-15 | 2026-09-23 | 72 |  |  | 2026-09-07 | 2026-09-15 | 7d | 51d | 0d |
| 139 | 1.2.2.4 | CALLE 7 | 7d | 2026-09-22 | 2026-09-30 | 80 |  |  | 2026-09-14 | 2026-09-22 | 7d | 42d | 0d |
| 140 | 1.2.2.5 | AVENIDA 2 | 10d | 2026-09-14 | 2026-09-25 | 48 |  |  | 2026-08-19 | 2026-09-01 | 10d | 26d | 0d |
| 141 | 1.2.2.6 | CALLE 6 | 7d | 2026-10-27 | 2026-11-04 | 126 |  |  | 2026-10-01 | 2026-10-09 | 7d | 17d | 0d |
| 142 | 1.2.2.7 | CALLE 4 | 3d | 2026-11-03 | 2026-11-05 | 134 |  |  | 2026-10-08 | 2026-10-12 | 3d | 18d | 0d |
| 143 | 1.2.2.8 | AVENIDA 10 | 10d | 2026-10-20 | 2026-11-02 | 118 |  |  | 2026-09-24 | 2026-10-07 | 10d | 0d |  |
| 144 | 1.2.2.9 | AVENIDA PRINCIPAL | 5d | 2026-11-03 | 2026-11-09 | 143 |  |  | 2026-10-08 | 2026-10-14 | 5d | 0d |  |
| 145 | 1.2.2.10 | CONSTRUCCION FILTRANTE R16 | 5d | 2026-09-28 | 2026-10-02 | 140 |  |  | 2026-09-02 | 2026-09-08 | 5d | 26d | 0d |
| 146 | 1.2.2.11 | CONSTRUCCION FILTRANTE R15 | 5d | 2026-10-05 | 2026-10-09 | 145 |  |  | 2026-09-09 | 2026-09-15 | 5d | 26d | 0d |
| 147 | 1.2.2.12 | CONSTRUCCION FILTRANTE R9 | 5d | 2026-10-12 | 2026-10-16 | 146 |  |  | 2026-09-16 | 2026-09-22 | 5d | 26d | 0d |
| 148 | 1.2.2.13 | CONSTRUCCION FILTRANTE R7 | 5d | 2026-10-19 | 2026-10-23 | 147 |  |  | 2026-09-23 | 2026-09-29 | 5d | 26d | 0d |
| 149 | 1.2.2.14 | CONSTRUCCION FILTRANTE R13 | 5d | 2026-10-26 | 2026-10-30 | 148 |  |  | 2026-09-30 | 2026-10-06 | 5d | 26d | 0d |
| 150 | 1.2.2.15 | CONSTRUCCION FILTRANTE R14 | 5d | 2026-11-02 | 2026-11-06 | 149 |  |  | 2026-10-07 | 2026-10-13 | 5d | 26d |  |
| 151 | 1.2.2.16 | CONSTRUCCION FILTRANTE R8 | 5d | 2026-11-10 | 2026-11-16 | 144 |  |  | 2026-10-15 | 2026-10-21 | 5d | 0d |  |
| 152 | 1.2.2.17 | CONSTRUCCION FILTRANTE R10 | 5d | 2026-11-17 | 2026-11-23 | 151 |  |  | 2026-10-22 | 2026-10-28 | 5d | 0d |  |
| 153 | 1.2.2.18 | CONSTRUCCION FILTRANTE R20 | 5d | 2026-11-24 | 2026-11-30 | 152 |  |  | 2026-10-29 | 2026-11-04 | 5d | 0d |  |
| 154 | 1.2.2.19 | CONSTRUCCION FILTRANTE R21 | 5d | 2026-12-01 | 2026-12-07 | 153 |  |  | 2026-11-05 | 2026-11-11 | 5d | 0d |  |
| 155 | 1.2.2.20 | CONSTRUCCION FILTRANTE R22 | 5d | 2026-12-08 | 2026-12-14 | 154 |  |  | 2026-11-12 | 2026-11-18 | 5d | 0d |  |

| ID | WBS | Task | Duration | Start | Finish | Predecessors | Complete | Remaining | Baseline start | Baseline finish | Baseline duration | Total slack | Free slack | Constraint |
| --- | --- | --- | --- | --- | --- | --- | --- | --- | --- | --- | --- | --- | --- | --- |
| 156 | 1.2.3 | **AGUA POTABLE** | 69d | 2026-08-17 A | 2026-11-19 |  | 21% | 54.68d | 2026-09-02 | 2026-10-26 | 39d | 17d |  |  |
| 157 | 1.2.3.1 | CALLE 1 EDIFICOS 1,2,3 | 4d | 2026-08-17 A | 2026-08-20 A | 136 | 100% |  | 2026-09-02 | 2026-09-07 | 4d |  |  |  |
| 158 | 1.2.3.2 | CALLE 3 EDIFICIOS 4,5,6,7,8,9 | 7d | 2026-08-24 A | 2026-09-01 A | 137 | 100% |  | 2026-09-09 | 2026-09-17 | 7d |  |  |  |
| 159 | 1.2.3.3 | CALLE 5 EDIFICIOS 10,11,12,13,14,15 | 7d | 2026-09-24 | 2026-10-02 | 138 |  |  | 2026-09-16 | 2026-09-24 | 7d | 51d |  |  |
| 160 | 1.2.3.4 | CALLE 7 EDIFICIOS 16,17,18,19,20,21 | 7d | 2026-10-01 | 2026-10-09 | 139 |  |  | 2026-09-23 | 2026-10-01 | 7d | 42d | 0d |  |
| 161 | 1.2.3.5 | AREA CENTRAL ACOMETIDAS | 4d | 2026-10-12 | 2026-10-15 | 160 |  |  | 2026-10-02 | 2026-10-07 | 4d | 42d |  |  |
| 162 | 1.2.3.6 | CALLE 2 EDIFICIOS 76,77 | 4d | 2026-09-28 | 2026-10-01 | 140 |  |  | 2026-09-02 | 2026-09-07 | 4d | 52d |  |  |
| 163 | 1.2.3.7 | CALLE 4 EDIFICIOS 72,73,74,75 | 5d | 2026-11-06 | 2026-11-12 | 142 |  |  | 2026-10-13 | 2026-10-19 | 5d | 18d | 0d |  |
| 164 | 1.2.3.8 | AREA CENTRAL ACOMETIDAS | 4d | 2026-11-13 | 2026-11-18 | 163 |  |  | 2026-10-20 | 2026-10-23 | 4d | 18d |  |  |
| 165 | 1.2.3.9 | CALLE 6 EDIFICIOS 70,71,66,67,68,69 | 7d | 2026-11-05 | 2026-11-13 | 141 |  |  | 2026-10-12 | 2026-10-20 | 7d | 17d | 0d |  |
| 166 | 1.2.3.10 | CALLE 6 ACOMETIDA | 4d | 2026-11-16 | 2026-11-19 | 165 |  |  | 2026-10-21 | 2026-10-26 | 4d | 17d | 0d |  |
| 167 | 1.2.4 | **CONSTRUCCION DE REGISTROS Y TRAMPA DE GRASA** | 73d | 2026-08-24 A | 2026-12-02 |  | 12% | 64.58d | 2026-08-24 | 2026-11-06 | 55d | 8d |  |  |
| 168 | 1.2.4.1 | EDIFICIOS 1,2,3 | 12d | 2026-08-24 A | 2026-09-08 A | 56 | 100% |  | 2026-08-24 | 2026-09-08 | 12d |  |  |  |
| 169 | 1.2.4.2 | EDIFICOS 4,5,6 | 12d | 2026-09-08 | 2026-09-23 | 64 |  |  | 2026-08-31 | 2026-09-15 | 12d | 52d | 0d |  |
| 170 | 1.2.4.3 | EDIFICIOS 7,8,9 | 12d | 2026-09-16 | 2026-10-01 | 169SS+6d |  |  | 2026-09-08 | 2026-09-23 | 12d | 52d |  |  |
| 171 | 1.2.4.4 | EDIFICIOS 10,11,12 | 12d | 2026-09-15 | 2026-09-30 | 72 |  |  | 2026-09-07 | 2026-09-22 | 12d | 47d | 0d |  |
| 172 | 1.2.4.5 | EDIFICOS 13,14,15 | 12d | 2026-09-23 | 2026-10-08 | 171SS+6d |  |  | 2026-09-15 | 2026-09-30 | 12d | 47d |  |  |
| 173 | 1.2.4.6 | EDIFICIOS 16,17,18 | 12d | 2026-09-22 | 2026-10-07 | 80 |  |  | 2026-09-14 | 2026-09-29 | 12d | 48d |  |  |
| 174 | 1.2.4.7 | EDIFICIOS 70,71 | 8d | 2026-10-27 | 2026-11-05 | 126 |  |  | 2026-10-01 | 2026-10-12 | 8d | 27d |  |  |
| 175 | 1.2.4.8 | EDIFICIOS 72,73 | 8d | 2026-11-03 | 2026-11-12 | 134 |  |  | 2026-10-08 | 2026-10-19 | 8d | 8d | 0d |  |
| 176 | 1.2.4.9 | EDIFICIOS 74,75 | 8d | 2026-11-11 | 2026-11-20 | 175SS+6d |  |  | 2026-10-16 | 2026-10-27 | 8d | 8d | 0d |  |
| 177 | 1.2.4.10 | EDIFICIOS 76,77 | 8d | 2026-11-23 | 2026-12-02 | 176 |  |  | 2026-10-28 | 2026-11-06 | 8d | 8d |  |  |
| 178 | 1.3 | **ELECTRIFICACION** | 130d | 2026-08-10 A | 2027-02-05 |  | 8% | 119.11d | 2026-08-19 | 2027-03-19 | 153d | 61d |  |  |
| 179 | 1.3.1 | **MEDIA TENSION** | 62d | 2026-08-10 A | 2026-11-03 |  | 26% | 45.8d | 2026-08-19 | 2026-12-08 | 80d | 119d |  |  |
| 180 | 1.3.1.1 | **AVENIDA 2** | 41d | 2026-08-10 A | 2026-10-05 |  | 27% | 29.92d | 2026-08-19 | 2026-10-02 | 33d | 140d | 0d |  |
| 181 | 1.3.1.1.1 | LOGISTICA Y REPLANTEO TOPOGRAFICO | 2d | 2026-08-10 A | 2026-08-11 A |  | 100% |  | 2026-08-19 | 2026-08-20 | 2d |  |  | start no earlier than 2026-08-10 |
| 182 | 1.3.1.1.2 | EXCAVACION | 8d | 2026-08-12 A | 2026-08-21 A | 181 | 100% |  | 2026-08-21 | 2026-09-01 | 8d |  |  |  |
| 183 | 1.3.1.1.3 | COLOCACION DE MATERIAL BASE | 4d | 2026-09-01 | 2026-09-04 | 182SS+6d |  |  | 2026-08-31 | 2026-09-03 | 4d | 140d | 0d | start no earlier than 2026-09-01 |
| 184 | 1.3.1.1.4 | COLOCACION DE TUBERIA | 4d | 2026-09-03 | 2026-09-08 | 183SS+2d |  |  | 2026-09-02 | 2026-09-07 | 4d | 140d | 0d |  |
| 185 | 1.3.1.1.5 | RELLENO Y COMPACTACION | 4d | 2026-09-09 | 2026-09-14 | 184 |  |  | 2026-09-08 | 2026-09-11 | 4d | 140d | 0d |  |
| 186 | 1.3.1.1.6 | CONSTRUCCION DE REGISTROS | 15d | 2026-09-15 | 2026-10-05 | 185 |  |  | 2026-09-14 | 2026-10-02 | 15d | 140d |  |  |

| ID | WBS | Task | Duration | Start | Finish | Predecessors | Complete | Remaining | Baseline start | Baseline finish | Baseline duration | Total slack | Free slack | Constraint |
| --- | --- | --- | --- | --- | --- | --- | --- | --- | --- | --- | --- | --- | --- | --- |
| 187 | 1.3.1.2 | **AVENIDA 10- CALLE 2** | 57d | 2026-08-17 A | 2026-11-03 |  | 26% | 42.36d | 2026-09-24 | 2026-12-08 | 54d | 119d | 0d |  |
| 188 | 1.3.1.2.1 | LOGISTICA Y REPLANTEO TOPOGRAFICO | 4d | 2026-08-17 A | 2026-08-20 A |  | 100% |  | 2026-09-24 | 2026-09-29 | 4d |  |  | start no earlier than 2026-08-17 |
| 189 | 1.3.1.2.2 | EXCAVACION | 15d | 2026-08-21 A | 2026-09-10 A | 188 | 100% |  | 2026-09-30 | 2026-10-20 | 15d |  |  |  |
| 190 | 1.3.1.2.3 | COLOCACION DE MATERIAL BASE | 15d | 2026-09-01 | 2026-09-21 | 189SS+4d |  |  | 2026-10-06 | 2026-10-26 | 15d | 119d | 0d | start no earlier than 2026-09-01 |
| 191 | 1.3.1.2.4 | COLOCACION DE TUBERIA | 10d | 2026-09-09 | 2026-09-22 | 190SS+6d |  |  | 2026-10-14 | 2026-10-27 | 10d | 119d | 0d |  |
| 192 | 1.3.1.2.5 | RELLENO Y COMPACTACION | 10d | 2026-09-23 | 2026-10-06 | 191 |  |  | 2026-10-28 | 2026-11-10 | 10d | 119d | 0d |  |
| 193 | 1.3.1.2.6 | CONSTRUCCION DE REGISTROS | 20d | 2026-10-07 | 2026-11-03 | 192 |  |  | 2026-11-11 | 2026-12-08 | 20d | 119d |  |  |
| 194 | 1.3.2 | **ACOMETIDAS** | 115d | 2026-08-24 A | 2027-01-29 |  | 3% | 112.09d | 2026-10-05 | 2027-03-12 | 115d | 56d |  |  |
| 195 | 1.3.2.1 | **CALLE 1** | 25d | 2026-08-24 A | 2026-09-25 |  | 19% | 20.16d | 2026-10-05 | 2026-11-06 | 25d | 146d | 0d |  |
| 196 | 1.3.2.1.1 | LOGISTICA Y REPLANTEO TOPOGRAFICO | 1d | 2026-08-24 A | 2026-08-24 A |  | 100% |  | 2026-10-05 | 2026-10-05 | 1d |  |  | start no earlier than 2026-08-24 |
| 197 | 1.3.2.1.2 | EXCAVACION | 5d | 2026-08-25 A | 2026-08-31 A | 196 | 100% |  | 2026-10-06 | 2026-10-12 | 5d |  |  |  |
| 198 | 1.3.2.1.3 | COLOCACION DE MATERIAL BASE | 5d | 2026-08-27 | 2026-09-02 | 197SS+2d |  |  | 2026-10-08 | 2026-10-14 | 5d | 42d | 0d |  |
| 199 | 1.3.2.1.4 | COLOCACION DE TUBERIA | 5d | 2026-08-31 | 2026-09-04 | 198SS+2d |  |  | 2026-10-12 | 2026-10-16 | 5d | 42d | 0d |  |
| 200 | 1.3.2.1.5 | RELLENO Y COMPACTACION | 5d | 2026-09-07 | 2026-09-11 | 199 |  |  | 2026-10-19 | 2026-10-23 | 5d | 42d | 0d |  |
| 201 | 1.3.2.1.6 | CONSTRUCCION DE REGISTROS | 10d | 2026-09-14 | 2026-09-25 | 200 |  |  | 2026-10-26 | 2026-11-06 | 10d | 146d | 0d |  |
| 202 | 1.3.2.2 | **CALLE 3** | 27d | 2026-09-14 | 2026-10-20 |  |  |  | 2026-10-26 | 2026-12-01 | 27d | 42d | 0d |  |
| 203 | 1.3.2.2.1 | LOGISTICA Y REPLANTEO TOPOGRAFICO | 1d | 2026-09-14 | 2026-09-14 | 200 |  |  | 2026-10-26 | 2026-10-26 | 1d | 42d | 0d |  |
| 204 | 1.3.2.2.2 | EXCAVACION | 6d | 2026-09-15 | 2026-09-22 | 203 |  |  | 2026-10-27 | 2026-11-03 | 6d | 42d | 0d |  |
| 205 | 1.3.2.2.3 | COLOCACION DE MATERIAL BASE | 6d | 2026-09-17 | 2026-09-24 | 204SS+2d |  |  | 2026-10-29 | 2026-11-05 | 6d | 42d | 0d |  |
| 206 | 1.3.2.2.4 | COLOCACION DE TUBERIA | 6d | 2026-09-21 | 2026-09-28 | 205SS+2d |  |  | 2026-11-02 | 2026-11-09 | 6d | 42d | 0d |  |
| 207 | 1.3.2.2.5 | RELLENO Y COMPACTACION | 4d | 2026-09-29 | 2026-10-02 | 206 |  |  | 2026-11-10 | 2026-11-13 | 4d | 42d | 0d |  |
| 208 | 1.3.2.2.6 | CONSTRUCCION DE REGISTROS | 12d | 2026-10-05 | 2026-10-20 | 207 |  |  | 2026-11-16 | 2026-12-01 | 12d | 129d | 0d |  |
| 209 | 1.3.2.3 | **CALLE 5** | 27d | 2026-10-05 | 2026-11-10 |  |  |  | 2026-11-16 | 2026-12-22 | 27d | 42d | 0d |  |
| 210 | 1.3.2.3.1 | LOGISTICA Y REPLANTEO TOPOGRAFICO | 1d | 2026-10-05 | 2026-10-05 | 207 |  |  | 2026-11-16 | 2026-11-16 | 1d | 42d | 0d |  |
| 211 | 1.3.2.3.2 | EXCAVACION | 6d | 2026-10-06 | 2026-10-13 | 210 |  |  | 2026-11-17 | 2026-11-24 | 6d | 42d | 0d |  |
| 212 | 1.3.2.3.3 | COLOCACION DE MATERIAL BASE | 6d | 2026-10-08 | 2026-10-15 | 211SS+2d |  |  | 2026-11-19 | 2026-11-26 | 6d | 42d | 0d |  |
| 213 | 1.3.2.3.4 | COLOCACION DE TUBERIA | 6d | 2026-10-12 | 2026-10-19 | 212SS+2d |  |  | 2026-11-23 | 2026-11-30 | 6d | 42d | 0d |  |
| 214 | 1.3.2.3.5 | RELLENO Y COMPACTACION | 4d | 2026-10-20 | 2026-10-23 | 213 |  |  | 2026-12-01 | 2026-12-04 | 4d | 42d | 0d |  |
| 215 | 1.3.2.3.6 | CONSTRUCCION DE REGISTROS | 12d | 2026-10-26 | 2026-11-10 | 214 |  |  | 2026-12-07 | 2026-12-22 | 12d | 114d | 0d |  |

| ID | WBS | Task | Duration | Start | Finish | Predecessors | Baseline start | Baseline finish | Baseline duration | Total slack | Free slack |
| --- | --- | --- | --- | --- | --- | --- | --- | --- | --- | --- | --- |
| 216 | 1.3.2.4 | **CALLE 7** | 27d | 2026-10-26 | 2026-12-01 |  | 2026-12-07 | 2027-01-12 | 27d | 42d | 0d |
| 217 | 1.3.2.4.1 | LOGISTICA Y REPLANTEO TOPOGRAFICO | 1d | 2026-10-26 | 2026-10-26 | 214 | 2026-12-07 | 2026-12-07 | 1d | 42d | 0d |
| 218 | 1.3.2.4.2 | EXCAVACION | 6d | 2026-10-27 | 2026-11-03 | 217 | 2026-12-08 | 2026-12-15 | 6d | 42d | 0d |
| 219 | 1.3.2.4.3 | COLOCACION DE MATERIAL BASE | 6d | 2026-10-29 | 2026-11-05 | 218SS+2d | 2026-12-10 | 2026-12-17 | 6d | 42d | 0d |
| 220 | 1.3.2.4.4 | COLOCACION DE TUBERIA | 6d | 2026-11-02 | 2026-11-09 | 219SS+2d | 2026-12-14 | 2026-12-21 | 6d | 42d | 0d |
| 221 | 1.3.2.4.5 | RELLENO Y COMPACTACION | 4d | 2026-11-10 | 2026-11-13 | 220 | 2026-12-22 | 2026-12-25 | 4d | 42d | 0d |
| 222 | 1.3.2.4.6 | CONSTRUCCION DE REGISTROS | 12d | 2026-11-16 | 2026-12-01 | 221 | 2026-12-28 | 2027-01-12 | 12d | 42d | 0d |
| 223 | 1.3.2.5 | **CALLE 6** | 27d | 2026-11-16 | 2026-12-22 |  | 2026-12-28 | 2027-02-02 | 27d | 56d | 0d |
| 224 | 1.3.2.5.1 | LOGISTICA Y REPLANTEO TOPOGRAFICO | 1d | 2026-11-16 | 2026-11-16 | 221 | 2026-12-28 | 2026-12-28 | 1d | 56d | 0d |
| 225 | 1.3.2.5.2 | EXCAVACION | 6d | 2026-11-17 | 2026-11-24 | 224 | 2026-12-29 | 2027-01-05 | 6d | 56d | 0d |
| 226 | 1.3.2.5.3 | COLOCACION DE MATERIAL BASE | 6d | 2026-11-19 | 2026-11-26 | 225SS+2d | 2026-12-31 | 2027-01-07 | 6d | 56d | 0d |
| 227 | 1.3.2.5.4 | COLOCACION DE TUBERIA | 6d | 2026-11-23 | 2026-11-30 | 226SS+2d | 2027-01-04 | 2027-01-11 | 6d | 56d | 0d |
| 228 | 1.3.2.5.5 | RELLENO Y COMPACTACION | 4d | 2026-12-01 | 2026-12-04 | 227 | 2027-01-12 | 2027-01-15 | 4d | 56d | 0d |
| 229 | 1.3.2.5.6 | CONSTRUCCION DE REGISTROS | 12d | 2026-12-07 | 2026-12-22 | 228 | 2027-01-18 | 2027-02-02 | 12d | 84d | 0d |
| 230 | 1.3.2.6 | **CALLE 4** | 27d | 2026-12-07 | 2027-01-12 |  | 2027-01-18 | 2027-02-23 | 27d | 56d | 0d |
| 231 | 1.3.2.6.1 | LOGISTICA Y REPLANTEO TOPOGRAFICO | 1d | 2026-12-07 | 2026-12-07 | 228 | 2027-01-18 | 2027-01-18 | 1d | 56d | 0d |
| 232 | 1.3.2.6.2 | EXCAVACION | 6d | 2026-12-08 | 2026-12-15 | 231 | 2027-01-19 | 2027-01-26 | 6d | 56d | 0d |
| 233 | 1.3.2.6.3 | COLOCACION DE MATERIAL BASE | 6d | 2026-12-10 | 2026-12-17 | 232SS+2d | 2027-01-21 | 2027-01-28 | 6d | 56d | 0d |
| 234 | 1.3.2.6.4 | COLOCACION DE TUBERIA | 6d | 2026-12-14 | 2026-12-21 | 233SS+2d | 2027-01-25 | 2027-02-01 | 6d | 56d | 0d |
| 235 | 1.3.2.6.5 | RELLENO Y COMPACTACION | 4d | 2026-12-22 | 2026-12-25 | 234 | 2027-02-02 | 2027-02-05 | 4d | 56d | 0d |
| 236 | 1.3.2.6.6 | CONSTRUCCION DE REGISTROS | 12d | 2026-12-28 | 2027-01-12 | 235 | 2027-02-08 | 2027-02-23 | 12d | 69d | 0d |
| 237 | 1.3.2.7 | **CALLE 2** | 25d | 2026-12-28 | 2027-01-29 |  | 2027-02-08 | 2027-03-12 | 25d | 56d | 0d |
| 238 | 1.3.2.7.1 | LOGISTICA Y REPLANTEO TOPOGRAFICO | 1d | 2026-12-28 | 2026-12-28 | 235 | 2027-02-08 | 2027-02-08 | 1d | 56d | 0d |
| 239 | 1.3.2.7.2 | EXCAVACION | 5d | 2026-12-29 | 2027-01-04 | 238 | 2027-02-09 | 2027-02-15 | 5d | 56d | 0d |
| 240 | 1.3.2.7.3 | COLOCACION DE MATERIAL BASE | 5d | 2026-12-31 | 2027-01-06 | 239SS+2d | 2027-02-11 | 2027-02-17 | 5d | 56d | 0d |
| 241 | 1.3.2.7.4 | COLOCACION DE TUBERIA | 5d | 2027-01-04 | 2027-01-08 | 240SS+2d | 2027-02-15 | 2027-02-19 | 5d | 56d | 0d |
| 242 | 1.3.2.7.5 | RELLENO Y COMPACTACION | 5d | 2027-01-11 | 2027-01-15 | 241 | 2027-02-22 | 2027-02-26 | 5d | 56d | 0d |
| 243 | 1.3.2.7.6 | CONSTRUCCION DE REGISTROS | 10d | 2027-01-18 | 2027-01-29 | 242 | 2027-03-01 | 2027-03-12 | 10d | 56d | 0d |

| ID | WBS | Task | Duration | Start | Finish | Predecessors | Baseline start | Baseline finish | Baseline duration | Total slack | Free slack |
| --- | --- | --- | --- | --- | --- | --- | --- | --- | --- | --- | --- |
| 244 | 1.3.3 | **TRASNFORMADORES** | 95d | 2026-09-28 | 2027-02-05 |  | 2026-11-09 | 2027-03-19 | 95d | 61d |  |
| 245 | 1.3.3.1 | CALLE 1 | 5d | 2026-09-28 | 2026-10-02 | 201 | 2026-11-09 | 2026-11-13 | 5d | 151d |  |
| 246 | 1.3.3.2 | CALLE 3 | 5d | 2026-10-21 | 2026-10-27 | 208 | 2026-12-02 | 2026-12-08 | 5d | 134d |  |
| 247 | 1.3.3.3 | CALLE 5 | 5d | 2026-11-11 | 2026-11-17 | 215 | 2026-12-23 | 2026-12-29 | 5d | 119d |  |
| 248 | 1.3.3.4 | CALLE 7 | 5d | 2026-12-02 | 2026-12-08 | 222 | 2027-01-13 | 2027-01-19 | 5d | 104d |  |
| 249 | 1.3.3.5 | CALLE 6 | 5d | 2026-12-23 | 2026-12-29 | 229 | 2027-02-03 | 2027-02-09 | 5d | 89d |  |
| 250 | 1.3.3.6 | CALLE 4 | 5d | 2027-01-13 | 2027-01-19 | 236 | 2027-02-24 | 2027-03-02 | 5d | 74d |  |
| 251 | 1.3.3.7 | CALLE 2 | 5d | 2027-02-01 | 2027-02-05 | 243 | 2027-03-15 | 2027-03-19 | 5d | 61d |  |
| 252 | 1.3.4 | **ILUMINACION** | 95d | 2026-09-28 | 2027-02-05 |  | 2026-11-09 | 2027-03-19 | 95d | 61d |  |
| 253 | 1.3.4.1 | CALLE 1 | 5d | 2026-09-28 | 2026-10-02 | 201 | 2026-11-09 | 2026-11-13 | 5d | 151d |  |
| 254 | 1.3.4.2 | CALLE 3 | 5d | 2026-10-21 | 2026-10-27 | 208 | 2026-12-02 | 2026-12-08 | 5d | 134d |  |
| 255 | 1.3.4.3 | CALLE 5 | 5d | 2026-11-11 | 2026-11-17 | 215 | 2026-12-23 | 2026-12-29 | 5d | 119d |  |
| 256 | 1.3.4.4 | CALLE 7 | 5d | 2026-12-02 | 2026-12-08 | 222 | 2027-01-13 | 2027-01-19 | 5d | 104d |  |
| 257 | 1.3.4.5 | CALLE 6 | 5d | 2026-12-23 | 2026-12-29 | 229 | 2027-02-03 | 2027-02-09 | 5d | 89d |  |
| 258 | 1.3.4.6 | CALLE 4 | 5d | 2027-01-13 | 2027-01-19 | 236 | 2027-02-24 | 2027-03-02 | 5d | 74d |  |
| 259 | 1.3.4.7 | CALLE 2 | 5d | 2027-02-01 | 2027-02-05 | 243 | 2027-03-15 | 2027-03-19 | 5d | 61d |  |
| 260 | 1.4 | **SISTEMAS ESPECIALES** | 118d | 2026-09-22 | 2027-03-04 |  | 2026-09-14 | 2027-02-08 | 106d | 42d |  |
| 261 | 1.4.1 | PLANTA DE TRATAMIENTO | 90d | 2026-09-22 | 2027-01-25 | 80 | 2026-09-14 | 2027-01-15 | 90d | 70d |  |
| 262 | 1.4.2 | POZO DE AGUA | 15d | 2026-11-20 | 2026-12-10 | 166 | 2026-10-27 | 2026-11-16 | 15d | 42d | 0d |
| 263 | 1.4.3 | TANQUE SUBTERRANEO | 60d | 2026-12-11 | 2027-03-04 | 262 | 2026-11-17 | 2027-02-08 | 60d | 42d | 0d |
| 264 | 1.4.4 | TANQUE ELEVADO | 60d | 2026-12-11 | 2027-03-04 | 263SS | 2026-11-17 | 2027-02-08 | 60d | 42d |  |
| 265 | 1.5 | **INSTALACIONES DE GAS** | 100d | 2026-09-14 | 2027-01-29 |  | 2026-09-14 | 2027-03-12 | 130d | 66d | 0d |
| 266 | 1.5.1 | AVENIDA 2 | 10d | 2026-09-15 | 2026-09-28 | 185 | 2026-09-14 | 2026-09-25 | 10d | 155d |  |
| 267 | 1.5.2 | CALLE 1 | 10d | 2026-09-14 | 2026-09-25 | 200 | 2026-10-26 | 2026-11-06 | 10d | 156d |  |
| 268 | 1.5.3 | CALLE 3 | 10d | 2026-10-05 | 2026-10-16 | 207 | 2026-11-16 | 2026-11-27 | 10d | 141d |  |
| 269 | 1.5.4 | CALLE 5 | 10d | 2026-10-26 | 2026-11-06 | 214 | 2026-12-07 | 2026-12-18 | 10d | 126d |  |
| 270 | 1.5.5 | CALLE 7 | 10d | 2026-11-16 | 2026-11-27 | 221 | 2026-12-28 | 2027-01-08 | 10d | 111d |  |
| 271 | 1.5.6 | AVENIDA 10- CALLE 2 | 10d | 2026-10-07 | 2026-10-20 | 192 | 2026-11-11 | 2026-11-24 | 10d | 139d |  |
| 272 | 1.5.7 | CALLE 6 | 10d | 2026-12-07 | 2026-12-18 | 228 | 2027-01-18 | 2027-01-29 | 10d | 96d |  |
| 273 | 1.5.8 | CALLE 4 | 10d | 2026-12-28 | 2027-01-08 | 235 | 2027-02-08 | 2027-02-19 | 10d | 81d |  |
| 274 | 1.5.9 | AVENIDA PRINCIPAL | 10d | 2027-01-18 | 2027-01-29 | 242 | 2027-03-01 | 2027-03-12 | 10d | 66d |  |

| ID | WBS | Task | Duration | Start | Finish | Predecessors | Complete | Remaining | Baseline start | Baseline finish | Baseline duration | Total slack | Free slack | Constraint |
| --- | --- | --- | --- | --- | --- | --- | --- | --- | --- | --- | --- | --- | --- | --- |
| 275 | 1.6 | **VIALIDAD** | 124d | 2026-08-25 A | 2027-02-12 |  | 1% | 122.79d | 2026-10-05 | 2027-05-04 | 152d | 56d |  |  |
| 276 | 1.6.1 | **PAVICRETO** | 75d | 2026-08-28 A | 2026-12-10 |  | 5% | 71.14d | 2027-01-13 | 2027-04-16 | 68d | 82d |  |  |
| 277 | 1.6.1.1 | AVENIDA 2 | 7d | 2026-12-02 | 2026-12-10 | 222 |  |  | 2027-01-13 | 2027-01-21 | 7d | 42d | 0d |  |
| 278 | 1.6.1.2 | CALLE 1 | 7d | 2026-08-28 A | 2026-09-07 |  | 50% | 3.5d | 2027-01-22 | 2027-02-01 | 7d | 88d | 0d | start no earlier than 2026-08-28 |
| 279 | 1.6.1.3 | CALLE 3 | 7d | 2026-09-08 | 2026-09-16 | 278 |  |  | 2027-02-02 | 2027-02-10 | 7d | 88d | 0d |  |
| 280 | 1.6.1.4 | CALLE 5 | 7d | 2026-09-17 | 2026-09-25 | 279 |  |  | 2027-02-11 | 2027-02-19 | 7d | 88d | 0d |  |
| 281 | 1.6.1.5 | CALLE 7 | 7d | 2026-09-28 | 2026-10-06 | 280 |  |  | 2027-02-22 | 2027-03-02 | 7d | 88d | 0d |  |
| 282 | 1.6.1.6 | AVENIDA 10- CALLE 2 | 14d | 2026-10-07 | 2026-10-26 | 281 |  |  | 2027-03-03 | 2027-03-22 | 14d | 88d | 0d |  |
| 283 | 1.6.1.7 | CALLE 6 | 7d | 2026-10-27 | 2026-11-04 | 282 |  |  | 2027-03-23 | 2027-03-31 | 7d | 88d | 0d |  |
| 284 | 1.6.1.8 | CALLE 4 | 7d | 2026-11-05 | 2026-11-13 | 283 |  |  | 2027-04-01 | 2027-04-09 | 7d | 96d | 0d |  |
| 285 | 1.6.1.9 | AVENIDA PRINCIPAL | 5d | 2026-11-16 | 2026-11-20 | 284 |  |  | 2027-04-12 | 2027-04-16 | 5d | 96d | 0d |  |
| 286 | 1.6.2 | **CONTENES** | 73d | 2026-08-25 | 2026-12-03 |  |  |  | 2027-01-08 | 2027-04-09 | 66d | 107d |  |  |
| 287 | 1.6.2.1 | AVENIDA 2 | 5d | 2026-11-27 | 2026-12-03 | 277FS-10d |  |  | 2027-01-08 | 2027-01-14 | 5d | 107d |  |  |
| 288 | 1.6.2.2 | CALLE 1 | 5d | 2026-08-25 | 2026-08-31 | 278FS-10d |  |  | 2027-01-19 | 2027-01-25 | 5d | 175d |  |  |
| 289 | 1.6.2.3 | CALLE 3 | 5d | 2026-09-03 | 2026-09-09 | 279FS-10d |  |  | 2027-01-28 | 2027-02-03 | 5d | 168d |  |  |
| 290 | 1.6.2.4 | CALLE 5 | 5d | 2026-09-14 | 2026-09-18 | 280FS-10d |  |  | 2027-02-08 | 2027-02-12 | 5d | 161d |  |  |
| 291 | 1.6.2.5 | CALLE 7 | 5d | 2026-09-23 | 2026-09-29 | 281FS-10d |  |  | 2027-02-17 | 2027-02-23 | 5d | 154d |  |  |
| 292 | 1.6.2.6 | AVENIDA 10- CALLE 2 | 5d | 2026-10-13 | 2026-10-19 | 282FS-10d |  |  | 2027-03-09 | 2027-03-15 | 5d | 140d |  |  |
| 293 | 1.6.2.7 | CALLE 6 | 5d | 2026-10-22 | 2026-10-28 | 283FS-10d |  |  | 2027-03-18 | 2027-03-24 | 5d | 133d |  |  |
| 294 | 1.6.2.8 | CALLE 4 | 5d | 2026-11-02 | 2026-11-06 | 284FS-10d |  |  | 2027-03-29 | 2027-04-02 | 5d | 126d |  |  |
| 295 | 1.6.2.9 | AVENIDA PRINCIPAL | 5d | 2026-11-09 | 2026-11-13 | 285FS-10d |  |  | 2027-04-05 | 2027-04-09 | 5d | 121d |  |  |
| 296 | 1.6.3 | **ACERAS** | 100d | 2026-09-28 | 2027-02-12 |  |  |  | 2026-10-05 | 2027-03-26 | 125d | 56d |  |  |
| 297 | 1.6.3.1 | AVENIDA 2 | 10d | 2026-10-06 | 2026-10-19 | 180 |  |  | 2026-10-05 | 2026-10-16 | 10d | 140d |  |  |
| 298 | 1.6.3.2 | CALLE 1 | 10d | 2026-09-28 | 2026-10-09 | 195 |  |  | 2026-11-09 | 2026-11-20 | 10d | 146d |  |  |
| 299 | 1.6.3.3 | CALLE 3 | 10d | 2026-10-21 | 2026-11-03 | 202 |  |  | 2026-12-02 | 2026-12-15 | 10d | 129d |  |  |
| 300 | 1.6.3.4 | CALLE 5 | 10d | 2026-11-11 | 2026-11-24 | 209 |  |  | 2026-12-23 | 2027-01-05 | 10d | 114d |  |  |
| 301 | 1.6.3.5 | CALLE 7 | 10d | 2026-12-02 | 2026-12-15 | 216 |  |  | 2027-01-13 | 2027-01-26 | 10d | 99d |  |  |
| 302 | 1.6.3.6 | AVENIDA 10- CALLE 2 | 10d | 2026-11-04 | 2026-11-17 | 187 |  |  | 2026-12-09 | 2026-12-22 | 10d | 119d |  |  |
| 303 | 1.6.3.7 | CALLE 6 | 10d | 2026-12-23 | 2027-01-05 | 223 |  |  | 2027-02-03 | 2027-02-16 | 10d | 84d |  |  |
| 304 | 1.6.3.8 | CALLE 4 | 10d | 2027-01-13 | 2027-01-26 | 230 |  |  | 2027-02-24 | 2027-03-09 | 10d | 69d |  |  |
| 305 | 1.6.3.9 | AVENIDA PRINCIPAL | 10d | 2027-02-01 | 2027-02-12 | 237 |  |  | 2027-03-15 | 2027-03-26 | 10d | 56d |  |  |

| ID | WBS | Task | Duration | Start | Finish | Predecessors | Baseline start | Baseline finish | Baseline duration | Total slack | Free slack |
| --- | --- | --- | --- | --- | --- | --- | --- | --- | --- | --- | --- |
| 306 | 1.6.4 | **CARRILERAS** | 75d | 2026-09-08 | 2026-12-21 |  | 2027-01-22 | 2027-04-27 | 68d | 91d |  |
| 307 | 1.6.4.1 | AVENIDA 2 | 7d | 2026-12-11 | 2026-12-21 | 277 | 2027-01-22 | 2027-02-01 | 7d | 90d | 0d |
| 308 | 1.6.4.2 | CALLE 1 | 5d | 2026-09-08 | 2026-09-14 | 278 | 2027-02-02 | 2027-02-08 | 5d | 161d | 0d |
| 309 | 1.6.4.3 | CALLE 3 | 10d | 2026-09-17 | 2026-09-30 | 279 | 2027-02-11 | 2027-02-24 | 10d | 149d | 0d |
| 310 | 1.6.4.4 | CALLE 5 | 10d | 2026-09-28 | 2026-10-09 | 280 | 2027-02-22 | 2027-03-05 | 10d | 142d | 0d |
| 311 | 1.6.4.5 | CALLE 7 | 10d | 2026-10-07 | 2026-10-20 | 281 | 2027-03-03 | 2027-03-16 | 10d | 135d | 0d |
| 312 | 1.6.4.6 | AVENIDA 10- CALLE 2 | 7d | 2026-10-27 | 2026-11-04 | 282 | 2027-03-23 | 2027-03-31 | 7d | 118d | 0d |
| 313 | 1.6.4.7 | CALLE 6 | 10d | 2026-11-05 | 2026-11-18 | 283 | 2027-04-01 | 2027-04-14 | 10d | 114d | 0d |
| 314 | 1.6.4.8 | CALLE 4 | 10d | 2026-11-16 | 2026-11-27 | 284 | 2027-04-12 | 2027-04-23 | 10d | 107d | 0d |
| 315 | 1.6.4.9 | AVENIDA PRINCIPAL | 7d | 2026-11-23 | 2026-12-01 | 285 | 2027-04-19 | 2027-04-27 | 7d | 104d | 0d |
| 316 | 1.6.5 | **PARAGOMAS** | 75d | 2026-09-15 | 2026-12-28 |  | 2027-02-02 | 2027-05-03 | 65d | 90d |  |
| 317 | 1.6.5.1 | AVENIDA 2 | 5d | 2026-12-22 | 2026-12-28 | 307 | 2027-02-02 | 2027-02-08 | 5d | 90d |  |
| 318 | 1.6.5.2 | CALLE 1 | 4d | 2026-09-15 | 2026-09-18 | 308 | 2027-02-09 | 2027-02-12 | 4d | 161d |  |
| 319 | 1.6.5.3 | CALLE 3 | 4d | 2026-10-01 | 2026-10-06 | 309 | 2027-02-25 | 2027-03-02 | 4d | 149d |  |
| 320 | 1.6.5.4 | CALLE 5 | 4d | 2026-10-12 | 2026-10-15 | 310 | 2027-03-08 | 2027-03-11 | 4d | 142d |  |
| 321 | 1.6.5.5 | CALLE 7 | 4d | 2026-10-21 | 2026-10-26 | 311 | 2027-03-17 | 2027-03-22 | 4d | 135d |  |
| 322 | 1.6.5.6 | AVENIDA 10- CALLE 2 | 8d | 2026-11-05 | 2026-11-16 | 312 | 2027-04-01 | 2027-04-12 | 8d | 120d |  |
| 323 | 1.6.5.7 | CALLE 6 | 4d | 2026-11-19 | 2026-11-24 | 313 | 2027-04-15 | 2027-04-20 | 4d | 114d |  |
| 324 | 1.6.5.8 | CALLE 4 | 4d | 2026-11-30 | 2026-12-03 | 314 | 2027-04-26 | 2027-04-29 | 4d | 107d |  |
| 325 | 1.6.5.9 | AVENIDA PRINCIPAL | 4d | 2026-12-02 | 2026-12-07 | 315 | 2027-04-28 | 2027-05-03 | 4d | 105d |  |
| 326 | 1.6.6 | **SEÑALIZACION** | 75d | 2026-09-15 | 2026-12-28 |  | 2027-02-02 | 2027-05-04 | 66d | 90d |  |
| 327 | 1.6.6.1 | AVENIDA 2 | 5d | 2026-12-22 | 2026-12-28 | 307 | 2027-02-02 | 2027-02-08 | 5d | 90d |  |
| 328 | 1.6.6.2 | CALLE 1 | 3d | 2026-09-15 | 2026-09-17 | 308 | 2027-02-09 | 2027-02-11 | 3d | 162d |  |
| 329 | 1.6.6.3 | CALLE 3 | 3d | 2026-10-01 | 2026-10-05 | 309 | 2027-02-25 | 2027-03-01 | 3d | 150d |  |
| 330 | 1.6.6.4 | CALLE 5 | 3d | 2026-10-12 | 2026-10-14 | 310 | 2027-03-08 | 2027-03-10 | 3d | 143d |  |
| 331 | 1.6.6.5 | CALLE 7 | 3d | 2026-10-21 | 2026-10-23 | 311 | 2027-03-17 | 2027-03-19 | 3d | 136d |  |
| 332 | 1.6.6.6 | AVENIDA 10- CALLE 2 | 10d | 2026-11-05 | 2026-11-18 | 312 | 2027-04-01 | 2027-04-14 | 10d | 118d |  |
| 333 | 1.6.6.7 | CALLE 6 | 3d | 2026-11-19 | 2026-11-23 | 313 | 2027-04-15 | 2027-04-19 | 3d | 115d |  |
| 334 | 1.6.6.8 | CALLE 4 | 3d | 2026-11-30 | 2026-12-02 | 314 | 2027-04-26 | 2027-04-28 | 3d | 108d |  |
| 335 | 1.6.6.9 | AVENIDA PRINCIPAL | 5d | 2026-12-02 | 2026-12-08 | 315 | 2027-04-28 | 2027-05-04 | 5d | 104d |  |

| ID | WBS | Task | Duration | Start | Finish | Predecessors | Baseline start | Baseline finish | Baseline duration | Total slack | Free slack | Constraint |
| --- | --- | --- | --- | --- | --- | --- | --- | --- | --- | --- | --- | --- |
| 336 | 1.7 | **PAISAJISMO** | 128d | 2026-09-08 | 2027-03-04 |  | 2027-01-22 | 2027-05-26 | 89d | 42d |  |  |
| 337 | 1.7.1 | AVENIDA 2 | 20d | 2026-12-11 | 2027-01-07 | 277 | 2027-01-22 | 2027-02-18 | 20d | 82d |  |  |
| 338 | 1.7.2 | CALLE 1 | 15d | 2026-09-08 | 2026-09-28 | 278 | 2027-02-02 | 2027-02-22 | 15d | 155d |  |  |
| 339 | 1.7.3 | CALLE 3 | 15d | 2026-09-28 | 2026-10-16 | 280 | 2027-02-22 | 2027-03-12 | 15d | 141d |  |  |
| 340 | 1.7.4 | CALLE 5 | 15d | 2026-10-07 | 2026-10-27 | 281 | 2027-03-03 | 2027-03-23 | 15d | 134d |  |  |
| 341 | 1.7.5 | CALLE 7 | 15d | 2026-10-27 | 2026-11-16 | 282 | 2027-03-23 | 2027-04-12 | 15d | 120d |  |  |
| 342 | 1.7.6 | AVENIDA 10- CALLE 2 | 40d | 2026-11-05 | 2026-12-30 | 283 | 2027-04-01 | 2027-05-26 | 40d | 88d |  |  |
| 343 | 1.7.7 | CALLE 6 | 20d | 2026-11-16 | 2026-12-11 | 284 | 2027-04-12 | 2027-05-07 | 20d | 101d |  |  |
| 344 | 1.7.8 | CALLE 4 | 20d | 2026-11-23 | 2026-12-18 | 285 | 2027-04-19 | 2027-05-14 | 20d | 96d |  |  |
| 345 | 1.7.9 | AVENIDA PRINCIPAL | 60d | 2026-12-11 | 2027-03-04 | 277 | 2027-01-22 | 2027-04-15 | 60d | 42d |  |  |
| 346 | 1.8 | **ELEMENTOS URBANOS** | 165d | 2026-09-01 | 2027-04-19 |  | 2026-11-19 | 2027-04-29 | 116d | 10d |  |  |
| 347 | 1.8.1 | CONSTRUCCION DE PISCINA | 60d | 2026-09-01 | 2026-11-23 | 277 | 2027-01-22 | 2027-04-15 | 60d | 105d | 0d | start no earlier than 2026-09-01 |
| 348 | 1.8.2 | AREA SOCIAL | 60d | 2026-09-01 | 2026-11-23 | 347SS | 2027-01-22 | 2027-04-15 | 60d | 105d | 0d |  |
| 349 | 1.8.3 | PORTAL DE ENTRADA Y CASETA DE VIGILANCIA | 45d | 2026-12-15 | 2027-02-15 | 27 | 2026-11-19 | 2027-01-20 | 45d | 55d |  |  |
| 350 | 1.8.4 | PARQUE INFANTIL | 10d | 2026-11-24 | 2026-12-07 | 348 | 2027-04-16 | 2027-04-29 | 10d | 105d |  |  |
| 351 | 1.8.5 | CAMINERIAS AREA SOCIAL | 60d | 2026-12-11 | 2027-03-04 | 277 | 2027-01-22 | 2027-04-15 | 60d | 42d |  |  |
| 352 | 1.8.6 | CONSTRUCCION DE CUARTO BASURA | 30d | 2026-12-15 | 2027-01-25 | 27 | 2026-11-19 | 2026-12-30 | 30d | 10d | 0d |  |
| 353 | 1.8.7 | CONSTRUCCION DE CUARTO DE EMPLEADOS | 30d | 2027-01-26 | 2027-03-08 | 352 | 2026-12-31 | 2027-02-10 | 30d | 10d | 0d |  |
| 354 | 1.8.8 | CONSTRUCCION DE CUARTO TECNICO | 30d | 2027-03-09 | 2027-04-19 | 353 | 2027-02-11 | 2027-03-24 | 30d | 10d |  |  |
| 355 | 1.9 | **OBRAS EXTERIOES** | 126d | 2026-11-09 | 2027-05-03 |  | 2026-11-19 | 2027-04-07 | 100d | 0d |  |  |
| 356 | 1.9.1 | CONSTRUCCION AREAS DE GAS COMUN | 60d | 2026-11-09 | 2027-01-29 | 265FS-60d | 2026-12-21 | 2027-03-12 | 60d | 66d |  |  |
| 357 | 1.9.2 | CONSTRUCCION DE PARED PERIMETRAL | 70d | 2026-12-15 | 2027-03-22 | 27 | 2026-11-19 | 2027-02-24 | 70d | 0d |  |  |
| 358 | 1.9.3 | TRABAJOS EN CALLE LAS CAYENAS | 60d | 2027-02-09 | 2027-05-03 | 357FS-30d | 2027-01-14 | 2027-04-07 | 60d | 0d |  |  |
